# caGrid_1.0_duke_project_plan

Schedule from MS Project, 2005-10-26 to 2006-12-28, A marks actual dates.
Duke University

## Calendars

- Standard: Mon-Fri 08:00-12:00, 13:00-17:00; Sat-Sun off.

## Resources

| Resource |
| --- |
| Patrick |

## Schedule

| ID | WBS | Task | Duration | Start | Finish | Complete | Remaining | Total slack | Constraint |
| --- | --- | --- | --- | --- | --- | --- | --- | --- | --- |
| 1 | 1 | **caGrid Adopter** | 307d | 2005-10-26 A | 2006-12-28 | 16% | 256.51d | 0d |  |
| 2 | 1.1 | **caGrid Meetings** | 307d | 2005-10-26 A | 2006-12-28 | 17% | 254.97d | 0d |  |
| 3 | 1.1.1 | caGrid kickoff face-to-face | 2d | 2005-10-26 A | 2005-10-27 A | 100% |  |  | start no earlier than 2005-10-26 |
| 4 | 1.1.2 | caGrid face-to-face 1 | 2d | 2006-01-18 | 2006-01-19 |  |  | 245d | start no earlier than 2006-01-18 |
| 5 | 1.1.3 | **Developer tcon A** | 266d | 2005-12-01 A | 2006-12-07 | 15% | 225.08d | 15d |  |
| 6 | 1.1.3.1 | Developer tcon A 1 | 1d | 2005-12-01 A | 2005-12-01 A | 100% |  |  | start no earlier than 2005-12-01 |
| 7 | 1.1.3.2 | Developer tcon A 2 | 1d | 2006-01-05 A | 2006-01-05 A | 100% |  |  | start no earlier than 2006-01-05 |
| 8 | 1.1.3.3 | Developer tcon A 3 | 1d | 2006-02-02 | 2006-02-02 |  |  | 235d | start no earlier than 2006-02-02 |
| 9 | 1.1.3.4 | Developer tcon A 4 | 1d | 2006-03-02 | 2006-03-02 |  |  | 215d | start no earlier than 2006-03-02 |
| 10 | 1.1.3.5 | Developer tcon A 5 | 1d | 2006-04-06 | 2006-04-06 |  |  | 190d | start no earlier than 2006-04-06 |
| 11 | 1.1.3.6 | Developer tcon A 6 | 1d | 2006-05-04 | 2006-05-04 |  |  | 170d | start no earlier than 2006-05-04 |
| 12 | 1.1.3.7 | Developer tcon A 7 | 1d | 2006-06-01 | 2006-06-01 |  |  | 150d | start no earlier than 2006-06-01 |
| 13 | 1.1.3.8 | Developer tcon A 8 | 1d | 2006-07-06 | 2006-07-06 |  |  | 125d | start no earlier than 2006-07-06 |
| 14 | 1.1.3.9 | Developer tcon A 9 | 1d | 2006-08-03 | 2006-08-03 |  |  | 105d | start no earlier than 2006-08-03 |
| 15 | 1.1.3.10 | Developer tcon A 10 | 1d | 2006-09-07 | 2006-09-07 |  |  | 80d | start no earlier than 2006-09-07 |
| 16 | 1.1.3.11 | Developer tcon A 11 | 1d | 2006-10-05 | 2006-10-05 |  |  | 60d | start no earlier than 2006-10-05 |
| 17 | 1.1.3.12 | Developer tcon A 12 | 1d | 2006-11-02 | 2006-11-02 |  |  | 40d | start no earlier than 2006-11-02 |
| 18 | 1.1.3.13 | Developer tcon A 13 | 1d | 2006-12-07 | 2006-12-07 |  |  | 15d | start no earlier than 2006-12-07 |
| 19 | 1.1.4 | **Planning tcon A** | 286d | 2005-11-10 A | 2006-12-14 | 14% | 245.14d | 10d |  |
| 20 | 1.1.4.1 | Planning tcon A 1 | 1d | 2005-11-10 A | 2005-11-10 A | 100% |  |  | start no earlier than 2005-11-10 |
| 21 | 1.1.4.2 | Planning tcon A 2 | 1d | 2005-12-08 A | 2005-12-08 A | 100% |  |  | start no earlier than 2005-12-08 |
| 22 | 1.1.4.3 | Planning tcon A 3 | 1d | 2006-01-12 | 2006-01-12 |  |  | 250d | start no earlier than 2006-01-12 |
| 23 | 1.1.4.4 | Planning tcon A 4 | 1d | 2006-02-09 | 2006-02-09 |  |  | 230d | start no earlier than 2006-02-09 |
| 24 | 1.1.4.5 | Planning tcon A 5 | 1d | 2006-03-09 | 2006-03-09 |  |  | 210d | start no earlier than 2006-03-09 |
| 25 | 1.1.4.6 | Planning tcon A 6 | 1d | 2006-04-13 | 2006-04-13 |  |  | 185d | start no earlier than 2006-04-13 |
| 26 | 1.1.4.7 | Planning tcon A 7 | 1d | 2006-05-11 | 2006-05-11 |  |  | 165d | start no earlier than 2006-05-11 |
| 27 | 1.1.4.8 | Planning tcon A 8 | 1d | 2006-06-08 | 2006-06-08 |  |  | 145d | start no earlier than 2006-06-08 |
| 28 | 1.1.4.9 | Planning tcon A 9 | 1d | 2006-07-13 | 2006-07-13 |  |  | 120d | start no earlier than 2006-07-13 |
| 29 | 1.1.4.10 | Planning tcon A 10 | 1d | 2006-08-10 | 2006-08-10 |  |  | 100d | start no earlier than 2006-08-10 |
| 30 | 1.1.4.11 | Planning tcon A 11 | 1d | 2006-09-14 | 2006-09-14 |  |  | 75d | start no earlier than 2006-09-14 |
| 31 | 1.1.4.12 | Planning tcon A 12 | 1d | 2006-10-12 | 2006-10-12 |  |  | 55d | start no earlier than 2006-10-12 |
| 32 | 1.1.4.13 | Planning tcon A 13 | 1d | 2006-11-09 | 2006-11-09 |  |  | 35d | start no earlier than 2006-11-09 |
| 33 | 1.1.4.14 | Planning tcon A 14 | 1d | 2006-12-14 | 2006-12-14 |  |  | 10d | start no earlier than 2006-12-14 |

| ID | WBS | Task | Duration | Start | Finish | Complete | Remaining | Total slack | Constraint |
| --- | --- | --- | --- | --- | --- | --- | --- | --- | --- |
| 34 | 1.1.5 | **Developer tcon B** | 286d | 2005-11-17 A | 2006-12-21 | 14% | 245.14d | 5d |  |
| 35 | 1.1.5.1 | Developer tcon B 1 | 1d | 2005-11-17 A | 2005-11-17 A | 100% |  |  | start no earlier than 2005-11-17 |
| 36 | 1.1.5.2 | Developer tcon B 2 | 1d | 2005-12-15 A | 2005-12-15 A | 100% |  |  | start no earlier than 2005-12-15 |
| 37 | 1.1.5.3 | Developer tcon B 3 | 1d | 2006-01-19 | 2006-01-19 |  |  | 245d | start no earlier than 2006-01-19 |
| 38 | 1.1.5.4 | Developer tcon B 4 | 1d | 2006-02-16 | 2006-02-16 |  |  | 225d | start no earlier than 2006-02-16 |
| 39 | 1.1.5.5 | Developer tcon B 5 | 1d | 2006-03-16 | 2006-03-16 |  |  | 205d | start no earlier than 2006-03-16 |
| 40 | 1.1.5.6 | Developer tcon B 6 | 1d | 2006-04-20 | 2006-04-20 |  |  | 180d | start no earlier than 2006-04-20 |
| 41 | 1.1.5.7 | Developer tcon B 7 | 1d | 2006-05-18 | 2006-05-18 |  |  | 160d | start no earlier than 2006-05-18 |
| 42 | 1.1.5.8 | Developer tcon B 8 | 1d | 2006-06-15 | 2006-06-15 |  |  | 140d | start no earlier than 2006-06-15 |
| 43 | 1.1.5.9 | Developer tcon B 9 | 1d | 2006-07-20 | 2006-07-20 |  |  | 115d | start no earlier than 2006-07-20 |
| 44 | 1.1.5.10 | Developer tcon B 10 | 1d | 2006-08-17 | 2006-08-17 |  |  | 95d | start no earlier than 2006-08-17 |
| 45 | 1.1.5.11 | Developer tcon B 11 | 1d | 2006-09-21 | 2006-09-21 |  |  | 70d | start no earlier than 2006-09-21 |
| 46 | 1.1.5.12 | Developer tcon B 12 | 1d | 2006-10-19 | 2006-10-19 |  |  | 50d | start no earlier than 2006-10-19 |
| 47 | 1.1.5.13 | Developer tcon B 13 | 1d | 2006-11-16 | 2006-11-16 |  |  | 30d | start no earlier than 2006-11-16 |
| 48 | 1.1.5.14 | Developer tcon B 14 | 1d | 2006-12-21 | 2006-12-21 |  |  | 5d | start no earlier than 2006-12-21 |
| 49 | 1.1.6 | **Planning tcon B** | 286d | 2005-11-24 A | 2006-12-28 | 14% | 245.14d | 0d |  |
| 50 | 1.1.6.1 | Planning tcon B 1 | 1d | 2005-11-24 A | 2005-11-24 A | 100% |  |  | start no earlier than 2005-11-24 |
| 51 | 1.1.6.2 | Planning tcon B 2 | 1d | 2005-12-22 A | 2005-12-22 A | 100% |  |  | start no earlier than 2005-12-22 |
| 52 | 1.1.6.3 | Planning tcon B 3 | 1d | 2006-01-26 | 2006-01-26 |  |  | 240d | start no earlier than 2006-01-26 |
| 53 | 1.1.6.4 | Planning tcon B 4 | 1d | 2006-02-23 | 2006-02-23 |  |  | 220d | start no earlier than 2006-02-23 |
| 54 | 1.1.6.5 | Planning tcon B 5 | 1d | 2006-03-23 | 2006-03-23 |  |  | 200d | start no earlier than 2006-03-23 |
| 55 | 1.1.6.6 | Planning tcon B 6 | 1d | 2006-04-27 | 2006-04-27 |  |  | 175d | start no earlier than 2006-04-27 |
| 56 | 1.1.6.7 | Planning tcon B 7 | 1d | 2006-05-25 | 2006-05-25 |  |  | 155d | start no earlier than 2006-05-25 |
| 57 | 1.1.6.8 | Planning tcon B 8 | 1d | 2006-06-22 | 2006-06-22 |  |  | 135d | start no earlier than 2006-06-22 |
| 58 | 1.1.6.9 | Planning tcon B 9 | 1d | 2006-07-27 | 2006-07-27 |  |  | 110d | start no earlier than 2006-07-27 |
| 59 | 1.1.6.10 | Planning tcon B 10 | 1d | 2006-08-24 | 2006-08-24 |  |  | 90d | start no earlier than 2006-08-24 |
| 60 | 1.1.6.11 | Planning tcon B 11 | 1d | 2006-09-28 | 2006-09-28 |  |  | 65d | start no earlier than 2006-09-28 |
| 61 | 1.1.6.12 | Planning tcon B 12 | 1d | 2006-10-26 | 2006-10-26 |  |  | 45d | start no earlier than 2006-10-26 |
| 62 | 1.1.6.13 | Planning tcon B 13 | 1d | 2006-11-23 | 2006-11-23 |  |  | 25d | start no earlier than 2006-11-23 |
| 63 | 1.1.6.14 | Planning tcon B 14 | 1d | 2006-12-28 | 2006-12-28 |  |  | 0d | start no earlier than 2006-12-28 |

| ID | WBS | Task | Duration | Start | Finish | Predecessors | Complete | Remaining | Total slack | Free slack | Constraint |
| --- | --- | --- | --- | --- | --- | --- | --- | --- | --- | --- | --- |
| 64 | 1.2 | **caGrid Use Cases** | 74d | 2005-12-01 A | 2006-03-14 |  | 62% | 28.46d | 207d |  |  |
| 65 | 1.2.1 | Author caGrid use case solicitations | 35d | 2005-12-01 A | 2006-01-18 A |  | 100% |  |  |  | start no earlier than 2005-12-01 |
| 66 | 1.2.2 | Help author/review caGrid use cases | 20d | 2006-02-01 | 2006-02-28 | 65 |  |  | 212d | 0d | start no earlier than 2006-02-01 |
| 67 | 1.2.3 | Reference implementation recommendation document | 10d | 2006-03-01 A | 2006-03-14 | 66 | 50% | 5d | 207d |  | start no earlier than 2006-02-15 |
| 68 | 1.3 | **caGrid Testing** | 80d | 2006-02-06 | 2006-05-26 |  |  |  | 154d |  |  |
| 69 | 1.3.1 | Draft test plan for Duke caGrid testing | 10d | 2006-02-06 | 2006-02-17 |  |  |  | 199d | 0d | finish no earlier than 2006-02-17 |
| 70 | 1.3.2 | **Test initial iteration** | 5d | 2006-02-20 | 2006-02-24 | 69 |  |  | 199d | 0d |  |
| 71 | 1.3.2.1 | Develop test cases | 5d | 2006-02-20 | 2006-02-24 |  |  |  | 199d |  |  |
| 72 | 1.3.2.2 | Test Introduce | 5d | 2006-02-20 | 2006-02-24 |  |  |  | 199d |  | start no earlier than 2006-02-20 |
| 73 | 1.3.2.3 | Test identity management system | 5d | 2006-02-20 | 2006-02-24 |  |  |  | 199d |  |  |
| 74 | 1.3.3 | **Test second iteration** | 15d | 2006-02-27 | 2006-03-17 | 70 |  |  | 194d | 40d |  |
| 75 | 1.3.3.1 | Develop test cases | 5d | 2006-02-27 | 2006-03-03 |  |  |  | 199d | 0d |  |
| 76 | 1.3.3.2 | Test Introduce | 5d | 2006-03-06 | 2006-03-10 | 75 |  |  | 199d |  |  |
| 77 | 1.3.3.3 | Test GRAM service | 5d | 2006-03-06 | 2006-03-10 | 75 |  |  | 199d |  | start no earlier than 2006-03-06 |
| 78 | 1.3.3.4 | Test non-Java analytical service | 5d | 2006-03-06 | 2006-03-10 | 75 |  |  | 199d |  | start no earlier than 2006-03-06 |
| 79 | 1.3.3.5 | Test install/deploy process | 5d | 2006-03-06 | 2006-03-10 | 75 |  |  | 199d |  | start no earlier than 2006-03-06 |
| 80 | 1.3.3.6 | **Test security** | 5d | 2006-03-13 | 2006-03-17 |  |  |  | 194d |  |  |
| 81 | 1.3.3.6.1 | Test identity management system | 5d | 2006-03-13 | 2006-03-17 |  |  |  | 194d |  | start no earlier than 2006-03-13 |
| 82 | 1.3.3.6.2 | Test authorization system | 5d | 2006-03-13 | 2006-03-17 |  |  |  | 194d |  | start no earlier than 2006-03-13 |
| 83 | 1.3.3.6.3 | Test service credentials system | 5d | 2006-03-13 | 2006-03-17 |  |  |  | 194d |  | start no earlier than 2006-03-13 |
| 84 | 1.3.3.6.4 | Test trust management system | 5d | 2006-03-13 | 2006-03-17 |  |  |  | 194d |  | start no earlier than 2006-03-13 |
| 85 | 1.3.4 | **Test third iteration** | 10d | 2006-05-15 | 2006-05-26 | 74 |  |  | 154d |  |  |
| 86 | 1.3.4.1 | Develop test cases | 5d | 2006-05-15 | 2006-05-19 |  |  |  | 154d | 0d | start no earlier than 2006-05-15 |
| 87 | 1.3.4.2 | Test Introduce | 5d | 2006-05-22 | 2006-05-26 | 86 |  |  | 154d |  |  |
| 88 | 1.3.4.3 | Test graphical client for GME | 5d | 2006-05-22 | 2006-05-26 | 86 |  |  | 154d |  | start no earlier than 2006-05-22 |

| ID | WBS | Task | Duration | Start | Finish | Predecessors | Total slack | Free slack | Constraint |
| --- | --- | --- | --- | --- | --- | --- | --- | --- | --- |
| 89 | 1.3.5 | **Test management interface** | 10d | 2006-02-20 | 2006-03-03 | 69 | 214d |  |  |
| 90 | 1.3.5.1 | Develop test cases | 5d | 2006-02-20 | 2006-02-24 |  | 214d | 0d |  |
| 91 | 1.3.5.2 | Test interface | 5d | 2006-02-27 | 2006-03-03 | 90 | 214d |  |  |
| 92 | 1.4 | **caGrid Code Review** | 206d | 2006-02-23 | 2006-12-07 |  | 15d |  |  |
| 93 | 1.4.1 | Create source code review check list | 5d | 2006-02-23 | 2006-03-01 |  | 211d | 0d | start no earlier than 2006-02-23 |
| 94 | 1.4.2 | **caGrid source code review** | 201d | 2006-03-02 | 2006-12-07 | 93 | 15d |  |  |
| 95 | 1.4.2.1 | caGrid source code review 1 | 5d | 2006-03-02 | 2006-03-08 |  | 211d |  | start no earlier than 2006-03-01 |
| 96 | 1.4.2.2 | caGrid source code review 2 | 5d | 2006-04-03 | 2006-04-07 |  | 189d |  | start no earlier than 2006-04-01 |
| 97 | 1.4.2.3 | caGrid source code review 3 | 5d | 2006-05-01 | 2006-05-05 |  | 169d |  | start no earlier than 2006-05-01 |
| 98 | 1.4.2.4 | caGrid source code review 4 | 5d | 2006-06-01 | 2006-06-07 |  | 146d |  | start no earlier than 2006-06-01 |
| 99 | 1.4.2.5 | caGrid source code review 5 | 5d | 2006-07-03 | 2006-07-07 |  | 124d |  | start no earlier than 2006-07-01 |
| 100 | 1.4.2.6 | caGrid source code review 6 | 5d | 2006-08-01 | 2006-08-07 |  | 103d |  | start no earlier than 2006-08-01 |
| 101 | 1.4.2.7 | caGrid source code review 7 | 5d | 2006-09-01 | 2006-09-07 |  | 80d |  | start no earlier than 2006-09-01 |
| 102 | 1.4.2.8 | caGrid source code review 8 | 5d | 2006-10-02 | 2006-10-06 |  | 59d |  | start no earlier than 2006-10-01 |
| 103 | 1.4.2.9 | caGrid source code review 9 | 5d | 2006-11-01 | 2006-11-07 |  | 37d |  | start no earlier than 2006-11-01 |
| 104 | 1.4.2.10 | caGrid source code review 10 | 5d | 2006-12-01 | 2006-12-07 |  | 15d |  | start no earlier than 2006-12-01 |
| 105 | 1.5 | **Document Review** | 86d | 2006-03-01 | 2006-06-28 |  | 131d |  |  |
| 106 | 1.5.1 | Review caGrid system specification | 10d | 2006-03-01 | 2006-03-14 |  | 207d |  | start no earlier than 2006-03-01 |
| 107 | 1.5.2 | Review caGrid architecture for scalability | 20d | 2006-06-01 | 2006-06-28 |  | 131d |  | start no earlier than 2006-06-01 |
| 108 | 2 | **Workflow Adopter** | 274d | 2005-12-01 | 2006-12-19 |  | 7d |  |  |
| 109 | 2.1 | **Workflow Meetings** | 251d | 2006-01-03 | 2006-12-19 |  | 7d |  |  |
| 110 | 2.1.1 | **Workflow tcon 1** | 241d | 2006-01-03 | 2006-12-05 |  | 17d |  |  |
| 111 | 2.1.1.1 | Workflow meeting 1 1 | 1d | 2006-01-03 | 2006-01-03 |  | 257d |  | start no earlier than 2006-01-03 |
| 112 | 2.1.1.2 | Workflow meeting 1 2 | 1d | 2006-02-07 | 2006-02-07 |  | 232d |  | start no earlier than 2006-02-07 |
| 113 | 2.1.1.3 | Workflow meeting 1 3 | 1d | 2006-03-07 | 2006-03-07 |  | 212d |  | start no earlier than 2006-03-07 |
| 114 | 2.1.1.4 | Workflow meeting 1 4 | 1d | 2006-04-04 | 2006-04-04 |  | 192d |  | start no earlier than 2006-04-04 |
| 115 | 2.1.1.5 | Workflow meeting 1 5 | 1d | 2006-05-02 | 2006-05-02 |  | 172d |  | start no earlier than 2006-05-02 |
| 116 | 2.1.1.6 | Workflow meeting 1 6 | 1d | 2006-06-06 | 2006-06-06 |  | 147d |  | start no earlier than 2006-06-06 |
| 117 | 2.1.1.7 | Workflow meeting 1 7 | 1d | 2006-07-04 | 2006-07-04 |  | 127d |  | start no earlier than 2006-07-04 |
| 118 | 2.1.1.8 | Workflow meeting 1 8 | 1d | 2006-08-01 | 2006-08-01 |  | 107d |  | start no earlier than 2006-08-01 |
| 119 | 2.1.1.9 | Workflow meeting 1 9 | 1d | 2006-09-05 | 2006-09-05 |  | 82d |  | start no earlier than 2006-09-05 |
| 120 | 2.1.1.10 | Workflow meeting 1 10 | 1d | 2006-10-03 | 2006-10-03 |  | 62d |  | start no earlier than 2006-10-03 |
| 121 | 2.1.1.11 | Workflow meeting 1 11 | 1d | 2006-11-07 | 2006-11-07 |  | 37d |  | start no earlier than 2006-11-07 |
| 122 | 2.1.1.12 | Workflow meeting 1 12 | 1d | 2006-12-05 | 2006-12-05 |  | 17d |  | start no earlier than 2006-12-05 |

| ID | WBS | Task | Duration | Start | Finish | Predecessors | Total slack | Free slack | Constraint |
| --- | --- | --- | --- | --- | --- | --- | --- | --- | --- |
| 123 | 2.1.2 | **Workflow tcon 2** | 241d | 2006-01-17 | 2006-12-19 |  | 7d |  |  |
| 124 | 2.1.2.1 | Workflow tcon 2 1 | 1d | 2006-01-17 | 2006-01-17 |  | 247d |  | start no earlier than 2006-01-17 |
| 125 | 2.1.2.2 | Workflow tcon 2 2 | 1d | 2006-02-21 | 2006-02-21 |  | 222d |  | start no earlier than 2006-02-21 |
| 126 | 2.1.2.3 | Workflow tcon 2 3 | 1d | 2006-03-21 | 2006-03-21 |  | 202d |  | start no earlier than 2006-03-21 |
| 127 | 2.1.2.4 | Workflow tcon 2 4 | 1d | 2006-04-18 | 2006-04-18 |  | 182d |  | start no earlier than 2006-04-18 |
| 128 | 2.1.2.5 | Workflow tcon 2 5 | 1d | 2006-05-16 | 2006-05-16 |  | 162d |  | start no earlier than 2006-05-16 |
| 129 | 2.1.2.6 | Workflow tcon 2 6 | 1d | 2006-06-20 | 2006-06-20 |  | 137d |  | start no earlier than 2006-06-20 |
| 130 | 2.1.2.7 | Workflow tcon 2 7 | 1d | 2006-07-18 | 2006-07-18 |  | 117d |  | start no earlier than 2006-07-18 |
| 131 | 2.1.2.8 | Workflow tcon 2 8 | 1d | 2006-08-15 | 2006-08-15 |  | 97d |  | start no earlier than 2006-08-15 |
| 132 | 2.1.2.9 | Workflow tcon 2 9 | 1d | 2006-09-19 | 2006-09-19 |  | 72d |  | start no earlier than 2006-09-19 |
| 133 | 2.1.2.10 | Workflow tcon 2 10 | 1d | 2006-10-17 | 2006-10-17 |  | 52d |  | start no earlier than 2006-10-17 |
| 134 | 2.1.2.11 | Workflow tcon 2 11 | 1d | 2006-11-21 | 2006-11-21 |  | 27d |  | start no earlier than 2006-11-21 |
| 135 | 2.1.2.12 | Workflow tcon 2 12 | 1d | 2006-12-19 | 2006-12-19 |  | 7d |  | start no earlier than 2006-12-19 |
| 136 | 2.2 | **Workflow Use Cases** | 47d | 2005-12-01 | 2006-02-03 |  | 234d |  |  |
| 137 | 2.2.1 | Author workflow use case solicitations | 20d | 2005-12-01 | 2005-12-28 |  | 246d | 12d | start no earlier than 2005-12-01 |
| 138 | 2.2.2 | Author workflow use cases | 15d | 2006-01-16 | 2006-02-03 | 137 | 234d |  | start no earlier than 2006-01-14 |
| 139 | 2.3 | **Workflow Testing** | 65d | 2006-01-30 | 2006-04-28 |  | 174d |  |  |
| 140 | 2.3.1 | Draft test plan for Duke workflow testing | 10d | 2006-02-01 | 2006-02-14 |  | 222d | 3d | start no earlier than 2006-02-01 |
| 141 | 2.3.2 | **Test hello world release** | 5d | 2006-02-20 | 2006-02-24 | 140 | 219d |  |  |
| 142 | 2.3.2.1 | Install release from CVS | 2d | 2006-02-20 | 2006-02-21 |  | 219d | 0d | start no earlier than 2006-02-20 |
| 143 | 2.3.2.2 | Run hello world test | 3d | 2006-02-22 | 2006-02-24 | 142 | 219d |  | start no earlier than 2006-02-22 |
| 144 | 2.3.3 | **Test base test case release** | 25d | 2006-01-30 | 2006-03-03 |  | 214d |  |  |
| 145 | 2.3.3.1 | Review base test cases | 5d | 2006-01-30 | 2006-02-03 |  | 229d | 15d | start no earlier than 2006-01-30 |
| 146 | 2.3.3.2 | Install release from CVS | 2d | 2006-02-27 | 2006-02-28 | 145 | 214d | 0d | start no earlier than 2006-02-27 |
| 147 | 2.3.3.3 | Run ant unit tests | 3d | 2006-03-01 | 2006-03-03 | 146 | 214d |  |  |

| ID | WBS | Task | Duration | Start | Finish | Predecessors | Total slack | Free slack | Constraint |
| --- | --- | --- | --- | --- | --- | --- | --- | --- | --- |
| 148 | 2.3.4 | **Test basic science release** | 30d | 2006-02-13 | 2006-03-24 |  | 199d |  |  |
| 149 | 2.3.4.1 | Develop test cases | 10d | 2006-02-13 | 2006-02-24 |  | 199d | 0d | start no earlier than 2006-02-13 |
| 150 | 2.3.4.2 | Install grid services | 10d | 2006-02-27 | 2006-03-10 | 149 | 199d | 0d |  |
| 151 | 2.3.4.3 | Install release from CVS | 2d | 2006-03-13 | 2006-03-14 | 150 | 199d | 0d |  |
| 152 | 2.3.4.4 | Run tests | 8d | 2006-03-15 | 2006-03-24 | 151 | 199d |  |  |
| 153 | 2.3.5 | **Test complex science release** | 60d | 2006-02-06 | 2006-04-28 |  | 174d |  |  |
| 154 | 2.3.5.1 | Install grid services | 35d | 2006-02-06 | 2006-03-24 |  | 174d | 0d | start no earlier than 2006-02-06 |
| 155 | 2.3.5.2 | Develop test cases | 10d | 2006-03-27 | 2006-04-07 | 154 | 174d | 0d | start no earlier than 2006-03-27 |
| 156 | 2.3.5.3 | Install release from CVS | 2d | 2006-04-10 | 2006-04-11 | 155 | 174d | 0d |  |
| 157 | 2.3.5.4 | Run tests | 13d | 2006-04-12 | 2006-04-28 | 156 | 174d |  |  |
| 158 | 2.4 | **Workflow Document Review** | 162d | 2006-02-01 | 2006-09-14 |  | 75d |  |  |
| 159 | 2.4.1 | Review developer requirements and specifications document | 10d | 2006-02-01 | 2006-02-14 |  | 227d |  | start no earlier than 2006-02-01 |
| 160 | 2.4.2 | Review developer test approach document | 10d | 2006-02-01 | 2006-02-14 |  | 227d |  | start no earlier than 2006-02-01 |
| 161 | 2.4.3 | Review workflow end user documentation | 10d | 2006-09-01 | 2006-09-14 |  | 75d |  | start no earlier than 2006-09-01 |
| 162 | 2.5 | **Annual F2F** | 25d | 2006-01-23 | 2006-02-24 |  | 219d |  |  |
| 163 | 2.5.1 | Help Argonne install RProteomics | 1d | 2006-01-23 | 2006-01-23 |  | 243d |  | start no earlier than 2006-01-23 |
| 164 | 2.5.2 | Migrate RProteomics to caGrid 1.0 | 5d | 2006-02-06 | 2006-02-10 |  | 229d |  | start no earlier than 2006-02-06 |
| 165 | 2.5.3 | Select RProteomics dataset for workflow demo | 5d | 2006-02-06 | 2006-02-10 |  | 229d |  | start no earlier than 2006-02-06 |
| 166 | 2.5.4 | Create RProteomics use case for workflow demo | 5d | 2006-02-06 | 2006-02-10 |  | 229d |  | start no earlier than 2006-02-06 |
| 167 | 2.5.5 | Create program to demonstrate RProteomics workflow demo | 5d | 2006-02-06 | 2006-02-10 |  | 229d |  | start no earlier than 2006-02-06 |
| 168 | 2.5.6 | Help OSU wrap RProteomics into a data service | 5d | 2006-02-20 | 2006-02-24 |  | 219d |  | start no earlier than 2006-02-20 |
| 169 | 2.5.7 | Update program with data access for RProteomics demo | 5d | 2006-02-20 | 2006-02-24 |  | 219d |  | start no earlier than 2006-02-20 |
