# caGrid_Development1

Schedule from MS Project, 2006-04-17 to 2006-10-23.

## Calendars

- Standard: Mon-Fri 08:00-12:00, 13:00-17:00; Sat-Sun off.

## Schedule

| ID | WBS | Task | Duration | Start | Finish | Predecessors | Total slack | Free slack | Constraint | Text1 |
| --- | --- | --- | --- | --- | --- | --- | --- | --- | --- | --- |
| 1 | 1 | **caGrid 1.0 Development** | 136d? | 2006-04-17 | 2006-10-23 |  | 0d |  |  |  |
| 2 | 1.1 | **Software Development Prior to Beta Release** | 42d? | 2006-04-17 | 2006-06-13 |  | 34d | 0d |  |  |
| 3 | 1.1.1 | **Iteration I** | 22d? | 2006-04-17 | 2006-05-16 |  | 34d | 0d |  |  |
| 4 | 1.1.1.1 | **Data Services** | 15d | 2006-04-17 | 2006-05-05 |  | 41d |  |  | 6.4.4, 6.4.4.1 |
| 5 | 1.1.1.1.1 | **CQL** | 15d | 2006-04-17 | 2006-05-05 |  | 41d |  |  |  |
| 6 | 1.1.1.1.1.1 | Finalize CQL Schema | 5d | 2006-05-01 | 2006-05-05 |  | 41d | 7d | start no earlier than 2006-05-01 |  |
| 7 | 1.1.1.1.1.2 | Define Result Set Schema | 2d | 2006-04-17 | 2006-04-18 |  | 54d |  |  |  |
| 8 | 1.1.1.1.1.3 | Documentation / user’s guide for CQL | 2d | 2006-04-17 | 2006-04-18 |  | 54d |  |  |  |
| 9 | 1.1.1.1.2 | **Service Infrastructure** | 4d | 2006-04-17 | 2006-04-20 |  | 52d | 18d |  |  |
| 10 | 1.1.1.1.2.1 | Query interface definition | 1d | 2006-04-17 | 2006-04-17 |  | 55d |  |  |  |
| 11 | 1.1.1.1.2.2 | Pluggable query processor | 2d | 2006-04-17 | 2006-04-18 |  | 54d |  |  |  |
| 12 | 1.1.1.1.2.3 | Exposed data types in WSDL | 4d | 2006-04-17 | 2006-04-20 |  | 52d |  |  |  |
| 13 | 1.1.1.1.2.4 | Client side result set iterators | 3d | 2006-04-17 | 2006-04-19 |  | 53d |  |  |  |
| 14 | 1.1.1.1.2.5 | Automatic Serialization of SDK-generated types | 3d | 2006-04-17 | 2006-04-19 |  | 53d |  |  |  |
| 15 | 1.1.1.1.3 | Initial Design Document | 5d | 2006-04-17 | 2006-04-21 |  | 51d |  |  |  |
| 16 | 1.1.1.1.4 | **Service Creation:** | 5d | 2006-04-17 | 2006-04-21 |  | 51d |  |  |  |
| 17 | 1.1.1.1.4.1 | Backend for service creation | 5d | 2006-04-17 | 2006-04-21 |  | 51d |  |  |  |
| 18 | 1.1.1.1.4.2 | Backend for service modification | 5d | 2006-04-17 | 2006-04-21 |  | 51d |  |  |  |
| 19 | 1.1.1.2 | **Introduce** | 22d | 2006-04-17 | 2006-05-16 |  | 34d |  |  | 6.4.2, 6.4.2.1,6.4.2.2,6.4.3 |
| 20 | 1.1.1.2.1 | **Engine:** | 22d | 2006-04-17 | 2006-05-16 |  | 34d | 0d |  |  |
| 21 | 1.1.1.2.1.1 | **Creation:** | 3d | 2006-04-17 | 2006-04-19 |  | 53d |  |  |  |
| 22 | 1.1.1.2.1.1.1 | Enable support for applying plugins or service extensions/templates | 3d | 2006-04-17 | 2006-04-19 |  | 53d |  |  |  |
| 23 | 1.1.1.2.1.2 | **Modification:** | 22d | 2006-04-17 | 2006-05-16 |  | 34d |  |  |  |
| 24 | 1.1.1.2.1.2.1 | Move to complete code templating process using JET for all code generation/modification | 10d | 2006-04-17 | 2006-04-28 |  | 44d | 0d |  |  |
| 25 | 1.1.1.2.1.2.2 | Increase ease of handling reformatted code | 2d | 2006-05-01 | 2006-05-02 | 24 | 44d |  |  |  |
| 26 | 1.1.1.2.1.2.3 | Support for ignoring locally modified source code | 1d | 2006-05-01 | 2006-05-01 | 24 | 45d |  |  |  |
| 27 | 1.1.1.2.1.2.4 | Support for modifying method signature with out modifying method bodies | 1d | 2006-05-01 | 2006-05-01 | 24 | 45d |  |  |  |
| 28 | 1.1.1.2.1.2.5 | Create service test framework | 2d | 2006-04-17 | 2006-04-18 |  | 54d |  |  |  |
| 29 | 1.1.1.2.1.2.6 | Complete support for WSRF / multi- resources/services | 15d | 2006-04-17 | 2006-05-05 |  | 34d | 0d |  |  |
| 30 | 1.1.1.2.1.2.7 | Source code must now support N services | 5d | 2006-05-08 | 2006-05-12 | 29 | 36d |  |  |  |
| 31 | 1.1.1.2.1.2.8 | Will require N wsdl documents | 3d | 2006-05-08 | 2006-05-10 | 29 | 38d |  |  |  |
| 32 | 1.1.1.2.1.2.9 | Build process will support flattening stubbing and binding of N services | 2d | 2006-05-08 | 2006-05-09 | 29 | 39d |  |  |  |
| 33 | 1.1.1.2.1.2.10 | Enable service/porttype inheritance | 7d | 2006-05-08 | 2006-05-16 | 29 | 34d |  |  |  |
| 34 | 1.1.1.2.1.2.11 | Custom serialization support | 5d | 2006-04-17 | 2006-04-21 |  | 51d |  |  |  |

| ID | WBS | Task | Duration | Start | Finish | Predecessors | Total slack | Free slack |
| --- | --- | --- | --- | --- | --- | --- | --- | --- |
| 35 | 1.1.1.2.1.3 | **Deployment:** | 1d | 2006-04-17 | 2006-04-17 |  | 55d |  |
| 36 | 1.1.1.2.1.3.1 | Enable support for service configuration variables | 1d | 2006-04-17 | 2006-04-17 |  | 55d |  |
| 37 | 1.1.1.2.1.3.2 | Enable support for tomcat and globus container deployment | 1d | 2006-04-17 | 2006-04-17 |  | 55d |  |
| 38 | 1.1.1.2.1.4 | **Plugin/Extension:** | 12d | 2006-04-17 | 2006-05-02 |  | 44d | 10d |
| 39 | 1.1.1.2.1.4.1 | Creation of plugin framework | 5d | 2006-04-17 | 2006-04-21 |  | 44d | 0d |
| 40 | 1.1.1.2.1.4.2 | Enable use of plugin framework | 2d | 2006-04-24 | 2006-04-25 | 39 | 44d | 0d |
| 41 | 1.1.1.2.1.4.3 | Creation of GME discovery plugin | 2d | 2006-04-26 | 2006-04-27 | 40 | 47d |  |
| 42 | 1.1.1.2.1.4.4 | Creation of File discovery plugin | 1d | 2006-04-26 | 2006-04-26 | 40 | 48d |  |
| 43 | 1.1.1.2.1.4.5 | Creation of caDSR discovery plugin | 5d | 2006-04-26 | 2006-05-02 | 40 | 44d |  |
| 44 | 1.1.1.2.1.4.6 | Creation of Example service extension plugin | 1d | 2006-04-26 | 2006-04-26 | 40 | 48d |  |
| 45 | 1.1.1.3 | **Metadata** | 9d? | 2006-04-17 | 2006-04-27 |  | 47d |  |
| 46 | 1.1.1.3.1 | **Initial Analytical Metadata Model** | 4d? | 2006-04-17 | 2006-04-20 |  | 47d | 0d |
| 47 | 1.1.1.3.1.1 | UML Model | 2d | 2006-04-17 | 2006-04-18 |  | 47d | 0d |
| 48 | 1.1.1.3.1.2 | Generate XSD | 1d? | 2006-04-19 | 2006-04-19 | 47 | 47d | 0d |
| 49 | 1.1.1.3.1.3 | caDSR Review | 1d? | 2006-04-20 | 2006-04-20 | 48 | 47d |  |
| 50 | 1.1.1.3.2 | **Initial Common Metadata Model** | 4d? | 2006-04-17 | 2006-04-20 |  | 47d | 0d |
| 51 | 1.1.1.3.2.1 | UML Model | 2d | 2006-04-17 | 2006-04-18 |  | 47d | 0d |
| 52 | 1.1.1.3.2.2 | Generate XSD | 1d? | 2006-04-19 | 2006-04-19 | 51 | 47d | 0d |
| 53 | 1.1.1.3.2.3 | caDSR Review | 1d? | 2006-04-20 | 2006-04-20 | 52 | 47d |  |
| 54 | 1.1.1.3.3 | **Initial Data Service Metadata Model** | 4d? | 2006-04-17 | 2006-04-20 |  | 47d | 0d |
| 55 | 1.1.1.3.3.1 | UML Model | 2d | 2006-04-17 | 2006-04-18 |  | 47d | 0d |
| 56 | 1.1.1.3.3.2 | Generate XSD | 1d? | 2006-04-19 | 2006-04-19 | 55 | 47d | 0d |
| 57 | 1.1.1.3.3.3 | caDSR Review | 1d? | 2006-04-20 | 2006-04-20 | 56 | 47d |  |
| 58 | 1.1.1.3.4 | **Discovery Client** | 5d | 2006-04-21 | 2006-04-27 | 46, 50, 54 | 47d |  |
| 59 | 1.1.1.3.4.1 | Define API | 2d | 2006-04-21 | 2006-04-24 |  | 50d |  |
| 60 | 1.1.1.3.4.2 | Initial Implementation | 5d | 2006-04-21 | 2006-04-27 |  | 47d |  |

| ID | WBS | Task | Duration | Start | Finish | Predecessors | Total slack | Free slack |
| --- | --- | --- | --- | --- | --- | --- | --- | --- |
| 61 | 1.1.1.3.5 | **Index Service** | 1d | 2006-04-17 | 2006-04-17 |  | 55d |  |
| 62 | 1.1.1.3.5.1 | Deploy on caGrid Cluster | 1d | 2006-04-17 | 2006-04-17 |  | 55d |  |
| 63 | 1.1.1.3.6 | **caDSR to GME Mapping** | 2d? | 2006-04-17 | 2006-04-18 |  | 54d |  |
| 64 | 1.1.1.3.6.1 | Meet with working group to identify issues and requirements | 1d? | 2006-04-17 | 2006-04-17 |  | 55d |  |
| 65 | 1.1.1.3.6.2 | Initial design of solution | 2d | 2006-04-17 | 2006-04-18 |  | 54d |  |
| 66 | 1.1.1.3.7 | **caDSR Service** | 1d? | 2006-04-21 | 2006-04-21 |  | 51d |  |
| 67 | 1.1.1.3.7.1 | Migrate published metadata to new models | 1d? | 2006-04-21 | 2006-04-21 | 46, 50 | 51d |  |
| 68 | 1.1.1.4 | **Security** | 7d | 2006-04-17 | 2006-04-25 |  | 49d |  |
| 69 | 1.1.1.4.1 | **Dorian** | 5d | 2006-04-17 | 2006-04-21 |  | 51d |  |
| 70 | 1.1.1.4.1.1 | Standardize SAML Assertions with IMF WG | 5d | 2006-04-17 | 2006-04-21 |  | 51d | 37d |
| 71 | 1.1.1.4.1.2 | Add support for publishing CRLS to the GTS | 2d | 2006-04-17 | 2006-04-18 |  | 54d |  |
| 72 | 1.1.1.4.2 | **Grid Trust Service (GTS)** | 7d | 2006-04-17 | 2006-04-25 |  | 49d |  |
| 73 | 1.1.1.4.2.1 | Initial design | 2d | 2006-04-17 | 2006-04-18 |  | 49d | 0d |
| 74 | 1.1.1.4.2.2 | **Implementation** | 5d | 2006-04-19 | 2006-04-25 | 73 | 49d |  |
| 75 | 1.1.1.4.2.2.1 | management of trusted authorities | 4d | 2006-04-19 | 2006-04-24 |  | 50d |  |
| 76 | 1.1.1.4.2.2.2 | management of trust levels | 2d | 2006-04-19 | 2006-04-20 |  | 52d |  |
| 77 | 1.1.1.4.2.2.3 | management of GTS authorities | 5d | 2006-04-19 | 2006-04-25 |  | 49d |  |
| 78 | 1.1.1.4.2.2.4 | management of permissions | 2d | 2006-04-19 | 2006-04-20 |  | 52d |  |
| 79 | 1.1.1.4.2.2.5 | Add support for accepting CRLS from authorities | 2d | 2006-04-19 | 2006-04-20 |  | 52d |  |
| 80 | 1.1.1.4.2.3 | Standup GTS Testbed | 2d | 2006-04-17 | 2006-04-18 |  | 54d |  |
| 81 | 1.1.1.4.3 | **Sync GTS** | 5d | 2006-04-17 | 2006-04-21 |  | 51d |  |
| 82 | 1.1.1.4.3.1 | Initial design | 1d | 2006-04-17 | 2006-04-17 |  | 51d | 0d |
| 83 | 1.1.1.4.3.2 | **Implementation** | 4d | 2006-04-18 | 2006-04-21 | 82 | 51d |  |
| 84 | 1.1.1.4.3.2.1 | Synchronize globus directory with GTS | 3d | 2006-04-18 | 2006-04-20 |  | 51d | 0d |
| 85 | 1.1.1.4.3.2.2 | In-container deployment support | 1d | 2006-04-21 | 2006-04-21 | 84 | 51d |  |
| 86 | 1.1.1.4.3.2.3 | Commandline usage | 1d | 2006-04-21 | 2006-04-21 | 84 | 51d |  |
| 87 | 1.1.1.4.3.2.4 | API usage | 1d | 2006-04-21 | 2006-04-21 | 84 | 51d |  |
| 88 | 1.1.1.4.3.2.5 | Result caching | 1d | 2006-04-18 | 2006-04-18 |  | 54d |  |

| ID | WBS | Task | Duration | Start | Finish | Predecessors | Total slack | Free slack | Text1 |
| --- | --- | --- | --- | --- | --- | --- | --- | --- | --- |
| 89 | 1.1.1.4.4 | **Authorization** | 5d | 2006-04-17 | 2006-04-21 |  | 51d |  |  |
| 90 | 1.1.1.4.4.1 | Use case collection from working group | 5d | 2006-04-17 | 2006-04-21 |  | 51d |  |  |
| 91 | 1.1.1.4.4.2 | Initial design | 5d | 2006-04-17 | 2006-04-21 |  | 51d |  |  |
| 92 | 1.1.1.5 | **Infrastructure** | 2d | 2006-04-17 | 2006-04-18 |  | 54d |  |  |
| 93 | 1.1.1.5.1 | Install all core services insecurely on cluster | 2d | 2006-04-17 | 2006-04-18 |  | 54d |  |  |
| 94 | 1.1.1.5.2 | Install Security services securely on cluster | 2d | 2006-04-17 | 2006-04-18 |  | 54d |  |  |
| 95 | 1.1.2 | **Iteration II** | 20d? | 2006-05-17 | 2006-06-13 | 3 | 34d |  |  |
| 96 | 1.1.2.1 | **Data Services** | 10d | 2006-05-17 | 2006-05-30 |  | 44d |  | 6.4.4, 6.4.4.1 |
| 97 | 1.1.2.1.1 | Initial Federated query support migration | 10d | 2006-05-17 | 2006-05-30 |  | 44d |  |  |
| 98 | 1.1.2.1.2 | Implementation of CQL query processor for SDK data sources | 5d | 2006-05-17 | 2006-05-23 | 6 | 49d |  |  |
| 99 | 1.1.2.1.3 | Multiple resource / multiple service architecture to support server side result set iterators | 10d | 2006-05-17 | 2006-05-30 | 20 | 44d |  |  |
| 100 | 1.1.2.1.4 | **Introduce Extension:** | 3d | 2006-05-17 | 2006-05-19 | 38 | 51d |  |  |
| 101 | 1.1.2.1.4.1 | GUI selection / modification of exposed data types | 2d | 2006-05-17 | 2006-05-18 |  | 52d |  |  |
| 102 | 1.1.2.1.4.2 | GUI selection / modification of type serialization | 2d | 2006-05-17 | 2006-05-18 |  | 52d |  |  |
| 103 | 1.1.2.1.4.3 | GUI selection / modification of Query Processor class | 1d | 2006-05-17 | 2006-05-17 |  | 53d |  |  |
| 104 | 1.1.2.1.4.4 | Utilize caDSR to populate metadata | 3d | 2006-05-17 | 2006-05-19 |  | 51d |  |  |
| 105 | 1.1.2.1.5 | **Testing:** | 3d | 2006-05-17 | 2006-05-19 | 9 | 51d |  |  |
| 106 | 1.1.2.1.5.1 | Service Creation | 2d | 2006-05-17 | 2006-05-18 |  | 52d |  |  |
| 107 | 1.1.2.1.5.2 | Service Modification | 3d | 2006-05-17 | 2006-05-19 |  | 51d |  |  |
| 108 | 1.1.2.1.5.3 | Service Deployment | 3d | 2006-05-17 | 2006-05-19 |  | 51d |  |  |
| 109 | 1.1.2.1.5.4 | Service Invocation | 3d | 2006-05-17 | 2006-05-19 |  | 51d |  |  |
| 110 | 1.1.2.1.5.5 | Client side iterator | 1d | 2006-05-17 | 2006-05-17 |  | 53d |  |  |
| 111 | 1.1.2.1.5.6 | Service side iterator | 2d | 2006-05-17 | 2006-05-18 |  | 52d |  |  |
| 112 | 1.1.2.2 | **Introduce** | 20d | 2006-05-17 | 2006-06-13 |  | 34d |  | 6.4.2, 6.4.2.1,6.4.2.2,6.4.3 |
| 113 | 1.1.2.2.1 | **Graphical Workbench:** | 10d | 2006-05-17 | 2006-05-30 | 20 | 34d | 0d |  |
| 114 | 1.1.2.2.1.1 | **Creation:** | 2d | 2006-05-17 | 2006-05-18 |  | 42d |  |  |
| 115 | 1.1.2.2.1.1.1 | Plugin /service template selection | 1d | 2006-05-17 | 2006-05-17 |  | 43d |  |  |
| 116 | 1.1.2.2.1.1.2 | Plugin and service template reflection based execution | 2d | 2006-05-17 | 2006-05-18 |  | 42d |  |  |

| ID | WBS | Task | Duration | Start | Finish | Predecessors | Total slack | Free slack |
| --- | --- | --- | --- | --- | --- | --- | --- | --- |
| 117 | 1.1.2.2.1.2 | **Modification:** | 10d | 2006-05-17 | 2006-05-30 |  | 34d |  |
| 118 | 1.1.2.2.1.2.1 | Support plugin based types discovery and tools | 5d | 2006-05-17 | 2006-05-23 |  | 39d |  |
| 119 | 1.1.2.2.1.2.2 | Support WSRF with multi resource and multi service based grid services | 10d | 2006-05-17 | 2006-05-30 |  | 34d |  |
| 120 | 1.1.2.2.1.2.3 | Support service/porttype inheritance | 5d | 2006-05-17 | 2006-05-23 |  | 39d |  |
| 121 | 1.1.2.2.1.2.4 | Enable service and method security configuration | 10d | 2006-05-17 | 2006-05-30 |  | 34d |  |
| 122 | 1.1.2.2.1.3 | **Deployment:** | 5d | 2006-05-17 | 2006-05-23 |  | 39d |  |
| 123 | 1.1.2.2.1.3.1 | Support configuration of user defined service variables | 2d | 2006-05-17 | 2006-05-18 |  | 42d |  |
| 124 | 1.1.2.2.1.3.2 | Gui generator for populating service discovery metadata | 5d | 2006-05-17 | 2006-05-23 |  | 39d |  |
| 125 | 1.1.2.2.1.4 | **Plugin/Extension:** | 5d | 2006-05-17 | 2006-05-23 |  | 39d |  |
| 126 | 1.1.2.2.1.4.1 | **Enable use of plugin framework** | 3d | 2006-05-17 | 2006-05-19 |  | 41d |  |
| 127 | 1.1.2.2.1.4.1.1 | Discovery Tools | 2d | 2006-05-17 | 2006-05-18 |  | 42d |  |
| 128 | 1.1.2.2.1.4.1.2 | Service Templates | 3d | 2006-05-17 | 2006-05-19 |  | 41d |  |
| 129 | 1.1.2.2.1.4.2 | **Documentation** | 5d | 2006-05-17 | 2006-05-23 |  | 39d |  |
| 130 | 1.1.2.2.1.4.2.1 | In Application Help System | 5d | 2006-05-17 | 2006-05-23 |  | 39d |  |
| 131 | 1.1.2.2.2 | **Testing:** | 10d | 2006-05-31 | 2006-06-13 | 20, 113 | 34d |  |
| 132 | 1.1.2.2.2.1 | **Complete testing of all features** | 10d | 2006-05-31 | 2006-06-13 |  | 34d |  |
| 133 | 1.1.2.2.2.1.1 | **Automated Nightly regression on:** | 10d | 2006-05-31 | 2006-06-13 |  | 34d |  |
| 134 | 1.1.2.2.2.1.1.1 | Service creation | 1d | 2006-05-31 | 2006-05-31 |  | 38d | 4d |
| 135 | 1.1.2.2.2.1.1.2 | Service modification | 5d | 2006-05-31 | 2006-06-06 |  | 34d | 0d |
| 136 | 1.1.2.2.2.1.1.3 | Service deployment | 2d | 2006-05-31 | 2006-06-01 |  | 37d | 3d |
| 137 | 1.1.2.2.2.1.1.4 | Service Invocation | 5d | 2006-06-07 | 2006-06-13 | 134, 135, 136 | 34d |  |
| 138 | 1.1.2.2.2.1.1.5 | Service template extensions | 1d | 2006-05-31 | 2006-05-31 |  | 43d |  |
| 139 | 1.1.2.2.2.1.1.6 | Security configuration | 3d | 2006-05-31 | 2006-06-02 |  | 41d |  |
| 140 | 1.1.2.2.2.1.1.7 | Metadata configuration | 2d | 2006-05-31 | 2006-06-01 |  | 42d |  |
| 141 | 1.1.2.2.2.1.1.8 | WSRF multi resource testing | 5d | 2006-05-31 | 2006-06-06 |  | 39d |  |

| ID | WBS | Task | Duration | Start | Finish | Predecessors | Total slack | Free slack |
| --- | --- | --- | --- | --- | --- | --- | --- | --- |
| 142 | 1.1.2.2.2.2 | **Manual testing on** | 10d | 2006-05-31 | 2006-06-13 |  | 34d |  |
| 143 | 1.1.2.2.2.2.1 | Graphical components | 10d | 2006-05-31 | 2006-06-13 |  | 34d |  |
| 144 | 1.1.2.2.2.3 | **Documentation** | 5d | 2006-05-31 | 2006-06-06 |  | 39d |  |
| 145 | 1.1.2.2.2.3.1 | User's Manual | 5d | 2006-05-31 | 2006-06-06 |  | 39d |  |
| 146 | 1.1.2.2.2.3.2 | Architecture Guide | 5d | 2006-05-31 | 2006-06-06 |  | 39d |  |
| 147 | 1.1.2.2.2.3.3 | White paper | 5d | 2006-05-31 | 2006-06-06 |  | 39d |  |
| 148 | 1.1.2.3 | **Metadata** | 12d? | 2006-05-17 | 2006-06-01 |  | 42d |  |
| 149 | 1.1.2.3.1 | **Finalize Metadata Models** | 2d? | 2006-05-17 | 2006-05-18 |  | 42d | 0d |
| 150 | 1.1.2.3.1.1 | Incorporate Feedback | 1d? | 2006-05-17 | 2006-05-17 |  | 43d |  |
| 151 | 1.1.2.3.1.2 | Update UML Models | 2d | 2006-05-17 | 2006-05-18 |  | 42d |  |
| 152 | 1.1.2.3.1.3 | Regenerate and Publish XSDs | 2d | 2006-05-17 | 2006-05-18 |  | 42d |  |
| 153 | 1.1.2.3.2 | **Discovery Client** | 5d | 2006-05-19 | 2006-05-25 | 149 | 42d | 0d |
| 154 | 1.1.2.3.2.1 | Update for Finalized Metadata Models | 5d | 2006-05-19 | 2006-05-25 |  | 42d |  |
| 155 | 1.1.2.3.3 | **Index Service** | 5d? | 2006-05-17 | 2006-05-23 |  | 49d |  |
| 156 | 1.1.2.3.3.1 | Modify to support communication with secure services | 5d? | 2006-05-17 | 2006-05-23 |  | 49d |  |
| 157 | 1.1.2.3.4 | **caDSR Service** | 5d | 2006-05-19 | 2006-05-25 | 149 | 47d |  |
| 158 | 1.1.2.3.4.1 | Implement Service-side Metadata generation | 5d | 2006-05-19 | 2006-05-25 |  | 47d |  |
| 159 | 1.1.2.3.5 | **Discovery Portal** | 5d | 2006-05-26 | 2006-06-01 |  | 42d |  |
| 160 | 1.1.2.3.5.1 | Initial implementation of discovery portal | 5d | 2006-05-26 | 2006-06-01 | 153 | 42d |  |
| 161 | 1.1.2.4 | **Security** | 15d? | 2006-05-17 | 2006-06-06 |  | 39d |  |
| 162 | 1.1.2.4.1 | **Dorian** | 8d? | 2006-05-17 | 2006-05-26 |  | 46d |  |
| 163 | 1.1.2.4.1.1 | Move forward to latest Introduce release | 5d | 2006-05-17 | 2006-05-23 | 20 | 46d | 0d |
| 164 | 1.1.2.4.1.2 | Add metadata | 3d | 2006-05-24 | 2006-05-26 | 163 | 46d |  |
| 165 | 1.1.2.4.1.3 | Add support for index service registration | 1d? | 2006-05-24 | 2006-05-24 | 163 | 48d |  |

| ID | WBS | Task | Duration | Start | Finish | Predecessors | Total slack |
| --- | --- | --- | --- | --- | --- | --- | --- |
| 166 | 1.1.2.4.1.4 | **Documentation** | 5d | 2006-05-17 | 2006-05-23 |  | 49d |
| 167 | 1.1.2.4.1.4.1 | Draft Installation Manual | 2d | 2006-05-17 | 2006-05-18 |  | 52d |
| 168 | 1.1.2.4.1.4.2 | Draft Architecture Guide | 5d | 2006-05-17 | 2006-05-23 |  | 49d |
| 169 | 1.1.2.4.1.5 | **Testing** | 5d | 2006-05-17 | 2006-05-23 |  | 49d |
| 170 | 1.1.2.4.1.5.1 | unit testing | 5d | 2006-05-17 | 2006-05-23 |  | 49d |
| 171 | 1.1.2.4.1.5.2 | system testing | 5d | 2006-05-17 | 2006-05-23 |  | 49d |
| 172 | 1.1.2.4.2 | **Grid Trust Service (GTS)** | 5d? | 2006-05-17 | 2006-05-23 |  | 49d |
| 173 | 1.1.2.4.2.1 | Move forward to latest Introduce release | 2d | 2006-05-17 | 2006-05-18 | 20 | 52d |
| 174 | 1.1.2.4.2.2 | Add metadata | 3d | 2006-05-17 | 2006-05-19 |  | 51d |
| 175 | 1.1.2.4.2.3 | Add support for index service registration | 1d? | 2006-05-17 | 2006-05-17 |  | 53d |
| 176 | 1.1.2.4.2.4 | **Documentation** | 5d | 2006-05-17 | 2006-05-23 |  | 49d |
| 177 | 1.1.2.4.2.4.1 | Draft Installation Manual | 2d | 2006-05-17 | 2006-05-18 |  | 52d |
| 178 | 1.1.2.4.2.4.2 | Draft Architecture Guide | 5d | 2006-05-17 | 2006-05-23 |  | 49d |
| 179 | 1.1.2.4.2.5 | **Testing** | 5d | 2006-05-17 | 2006-05-23 |  | 49d |
| 180 | 1.1.2.4.2.5.1 | unit testing | 5d | 2006-05-17 | 2006-05-23 |  | 49d |
| 181 | 1.1.2.4.2.5.2 | system testing | 5d | 2006-05-17 | 2006-05-23 |  | 49d |
| 182 | 1.1.2.4.3 | **Sync GTS** | 2d | 2006-05-17 | 2006-05-18 |  | 52d |
| 183 | 1.1.2.4.3.1 | Move forward to latest Introduce release | 2d | 2006-05-17 | 2006-05-18 | 20 | 52d |
| 184 | 1.1.2.4.4 | **Authorization** | 15d? | 2006-05-17 | 2006-06-06 |  | 39d |
| 185 | 1.1.2.4.4.1 | Design document | 5d | 2006-05-17 | 2006-05-23 |  | 49d |
| 186 | 1.1.2.4.4.2 | Implementation | 15d? | 2006-05-17 | 2006-06-06 |  | 39d |
| 187 | 1.1.2.5 | **Infrastructure** | 2d | 2006-05-17 | 2006-05-18 |  | 52d |
| 188 | 1.1.2.5.1 | Develop functional test plan | 2d | 2006-05-17 | 2006-05-18 |  | 52d |
| 189 | 1.1.2.5.2 | Install "staging" services on cluster | 1d | 2006-05-17 | 2006-05-17 |  | 53d |

| ID | WBS | Task | Duration | Start | Finish | Predecessors | Total slack | Free slack | Constraint | Text1 |
| --- | --- | --- | --- | --- | --- | --- | --- | --- | --- | --- |
| 190 | 1.2 | **Software Development Prior to API Freeze** | 30d? | 2006-06-14 | 2006-07-25 | 2 | 34d | 0d |  |  |
| 191 | 1.2.1 | **Iteration I** | 15d? | 2006-06-14 | 2006-07-04 |  | 34d | 0d |  |  |
| 192 | 1.2.1.1 | **Data Services** | 5d | 2006-06-14 | 2006-06-20 |  | 44d |  |  | 6.4.4, 6.4.4.1 |
| 193 | 1.2.1.1.1 | asdf | 5d | 2006-06-14 | 2006-06-20 |  | 44d |  | start no earlier than 2006-05-01 |  |
| 194 | 1.2.1.2 | **Introduce** | 15d | 2006-06-14 | 2006-07-04 |  | 34d |  |  | 6.4.2, 6.4.2.1,6.4.2.2,6.4.3 |
| 195 | 1.2.1.2.1 | asdf | 15d | 2006-06-14 | 2006-07-04 |  | 34d |  | start no earlier than 2006-05-01 |  |
| 196 | 1.2.1.3 | **Metadata** | 1d? | 2006-06-14 | 2006-06-14 |  | 48d |  |  |  |
| 197 | 1.2.1.3.1 | asdf | 1d? | 2006-06-14 | 2006-06-14 |  | 48d |  |  |  |
| 198 | 1.2.1.4 | **Security** | 3d? | 2006-06-14 | 2006-06-16 |  | 46d |  |  |  |
| 199 | 1.2.1.4.1 | **Dorian** | 3d | 2006-06-14 | 2006-06-16 |  | 46d |  |  |  |
| 200 | 1.2.1.4.1.1 | Enable Dorian to support the SAML Assertions standardized by the IMF working group | 3d | 2006-06-14 | 2006-06-16 | 70 | 46d |  |  |  |
| 201 | 1.2.1.4.1.2 | Add tracking/logging/auditing mechanism | 3d | 2006-06-14 | 2006-06-16 |  | 46d |  |  |  |
| 202 | 1.2.1.4.1.3 | Add user notification mechanism | 3d | 2006-06-14 | 2006-06-16 |  | 46d |  |  |  |
| 203 | 1.2.1.4.2 | **Grid Trust Service (GTS)** | 3d | 2006-06-14 | 2006-06-16 |  | 46d |  |  |  |
| 204 | 1.2.1.4.2.1 | Add tracking/logging/auditing mechanism | 3d | 2006-06-14 | 2006-06-16 |  | 46d |  |  |  |
| 205 | 1.2.1.4.2.2 | Add user notification mechanism | 3d | 2006-06-14 | 2006-06-16 |  | 46d |  |  |  |
| 206 | 1.2.1.4.2.3 | Add Configuration Support through grid service interface. | 1d | 2006-06-14 | 2006-06-14 |  | 48d |  |  |  |
| 207 | 1.2.1.4.3 | **Sync GTS** | 1d? | 2006-06-14 | 2006-06-14 |  | 48d |  |  |  |
| 208 | 1.2.1.4.3.1 | asdf | 1d? | 2006-06-14 | 2006-06-14 |  | 48d |  |  |  |
| 209 | 1.2.1.4.4 | **Authorization** | 1d? | 2006-06-14 | 2006-06-14 |  | 48d |  |  |  |
| 210 | 1.2.1.4.4.1 | asdf | 1d? | 2006-06-14 | 2006-06-14 |  | 48d |  |  |  |
| 211 | 1.2.1.4.5 | asdf | 1d? | 2006-06-14 | 2006-06-14 |  | 48d |  |  |  |
| 212 | 1.2.1.5 | **Infrastructure** | 1d? | 2006-06-14 | 2006-06-14 |  | 48d |  |  |  |
| 213 | 1.2.1.5.1 | asdf | 1d? | 2006-06-14 | 2006-06-14 |  | 48d |  |  |  |

| ID | WBS | Task | Duration | Start | Finish | Predecessors | Total slack | Constraint | Text1 |
| --- | --- | --- | --- | --- | --- | --- | --- | --- | --- |
| 214 | 1.2.2 | **Iteration II** | 15d? | 2006-07-05 | 2006-07-25 | 191 | 34d |  |  |
| 215 | 1.2.2.1 | **Data Services** | 5d | 2006-07-05 | 2006-07-11 |  | 44d |  | 6.4.4, 6.4.4.1 |
| 216 | 1.2.2.1.1 | asdf | 5d | 2006-07-05 | 2006-07-11 |  | 44d | start no earlier than 2006-05-01 |  |
| 217 | 1.2.2.2 | **Introduce** | 15d | 2006-07-05 | 2006-07-25 |  | 34d |  | 6.4.2, 6.4.2.1,6.4.2.2,6.4.3 |
| 218 | 1.2.2.2.1 | asdf | 15d | 2006-07-05 | 2006-07-25 |  | 34d | start no earlier than 2006-05-01 |  |
| 219 | 1.2.2.3 | **Metadata** | 1d? | 2006-07-05 | 2006-07-05 |  | 48d |  |  |
| 220 | 1.2.2.3.1 | asdf | 1d? | 2006-07-05 | 2006-07-05 |  | 48d |  |  |
| 221 | 1.2.2.4 | **Security** | 5d? | 2006-07-05 | 2006-07-11 |  | 44d |  |  |
| 222 | 1.2.2.4.1 | **Dorian** | 3d | 2006-07-05 | 2006-07-07 |  | 46d |  |  |
| 223 | 1.2.2.4.1.1 | Integrate with installer | 3d | 2006-07-05 | 2006-07-07 |  | 46d |  |  |
| 224 | 1.2.2.4.2 | **Grid Trust Service (GTS)** | 3d? | 2006-07-05 | 2006-07-07 |  | 46d |  |  |
| 225 | 1.2.2.4.2.1 | Integrate with installer | 3d | 2006-07-05 | 2006-07-07 |  | 46d |  |  |
| 226 | 1.2.2.4.2.2 | asdf | 1d? | 2006-07-05 | 2006-07-05 |  | 48d |  |  |
| 227 | 1.2.2.4.3 | **Sync GTS** | 5d? | 2006-07-05 | 2006-07-11 |  | 44d |  |  |
| 228 | 1.2.2.4.3.1 | Integrate with installer | 3d | 2006-07-05 | 2006-07-07 |  | 46d |  |  |
| 229 | 1.2.2.4.3.2 | Add support for querying sync cache | 5d | 2006-07-05 | 2006-07-11 |  | 44d |  |  |
| 230 | 1.2.2.4.3.3 | Add Configuration Support through grid service interface. | 1d? | 2006-07-05 | 2006-07-05 |  | 48d |  |  |
| 231 | 1.2.2.4.4 | **Authorization** | 1d? | 2006-07-05 | 2006-07-05 |  | 48d |  |  |
| 232 | 1.2.2.4.4.1 | asdf | 1d? | 2006-07-05 | 2006-07-05 |  | 48d |  |  |
| 233 | 1.2.2.4.5 | Investigate Delegation to support workflow | 1d? | 2006-07-05 | 2006-07-05 |  | 48d |  |  |
| 234 | 1.2.2.4.6 | Investigate secure workflow support | 1d? | 2006-07-05 | 2006-07-05 |  | 48d |  |  |
| 235 | 1.2.2.4.7 | Investigate service certificate provisioning | 1d? | 2006-07-05 | 2006-07-05 |  | 48d |  |  |
| 236 | 1.2.2.5 | **Infrastructure** | 1d? | 2006-07-05 | 2006-07-05 |  | 48d |  |  |
| 237 | 1.2.2.5.1 | asdf | 1d? | 2006-07-05 | 2006-07-05 |  | 48d |  |  |

| ID | WBS | Task | Duration | Start | Finish | Predecessors | Total slack | Free slack | Constraint | Text1 |
| --- | --- | --- | --- | --- | --- | --- | --- | --- | --- | --- |
| 238 | 1.3 | **Software Development Prior to 1.0 Release** | 30d? | 2006-07-26 | 2006-09-05 | 190 | 34d |  |  |  |
| 239 | 1.3.1 | **Iteration I** | 15d? | 2006-07-26 | 2006-08-15 |  | 34d | 0d |  |  |
| 240 | 1.3.1.1 | **Data Services** | 5d | 2006-07-26 | 2006-08-01 |  | 44d |  |  | 6.4.4, 6.4.4.1 |
| 241 | 1.3.1.1.1 | asdf | 5d | 2006-07-26 | 2006-08-01 |  | 44d |  | start no earlier than 2006-05-01 |  |
| 242 | 1.3.1.2 | **Introduce** | 15d | 2006-07-26 | 2006-08-15 |  | 34d |  |  | 6.4.2, 6.4.2.1,6.4.2.2,6.4.3 |
| 243 | 1.3.1.2.1 | asdf | 15d | 2006-07-26 | 2006-08-15 |  | 34d |  | start no earlier than 2006-05-01 |  |
| 244 | 1.3.1.3 | **Metadata** | 1d? | 2006-07-26 | 2006-07-26 |  | 48d |  |  |  |
| 245 | 1.3.1.3.1 | asdf | 1d? | 2006-07-26 | 2006-07-26 |  | 48d |  |  |  |
| 246 | 1.3.1.4 | **Security** | 5d? | 2006-07-26 | 2006-08-01 |  | 44d |  |  |  |
| 247 | 1.3.1.4.1 | **Dorian** | 5d | 2006-07-26 | 2006-08-01 |  | 44d |  |  |  |
| 248 | 1.3.1.4.1.1 | **Documentation** | 5d | 2006-07-26 | 2006-08-01 |  | 44d |  |  |  |
| 249 | 1.3.1.4.1.1.1 | Installation Manual | 2d | 2006-07-26 | 2006-07-27 |  | 47d |  |  |  |
| 250 | 1.3.1.4.1.1.2 | Architecture Guide | 5d | 2006-07-26 | 2006-08-01 |  | 44d |  |  |  |
| 251 | 1.3.1.4.1.1.3 | Administrative Guide | 5d | 2006-07-26 | 2006-08-01 |  | 44d |  |  |  |
| 252 | 1.3.1.4.2 | **Grid Trust Service (GTS)** | 5d | 2006-07-26 | 2006-08-01 |  | 44d |  |  |  |
| 253 | 1.3.1.4.2.1 | **Documentation** | 5d | 2006-07-26 | 2006-08-01 |  | 44d |  |  |  |
| 254 | 1.3.1.4.2.1.1 | Installation Manual | 2d | 2006-07-26 | 2006-07-27 |  | 47d |  |  |  |
| 255 | 1.3.1.4.2.1.2 | Architecture Guide | 5d | 2006-07-26 | 2006-08-01 |  | 44d |  |  |  |
| 256 | 1.3.1.4.2.1.3 | Administrative Guide | 5d | 2006-07-26 | 2006-08-01 |  | 44d |  |  |  |
| 257 | 1.3.1.4.3 | **Sync GTS** | 1d? | 2006-07-26 | 2006-07-26 |  | 48d |  |  |  |
| 258 | 1.3.1.4.3.1 | asdf | 1d? | 2006-07-26 | 2006-07-26 |  | 48d |  |  |  |
| 259 | 1.3.1.4.4 | **Authorization** | 1d? | 2006-07-26 | 2006-07-26 |  | 48d |  |  |  |
| 260 | 1.3.1.4.4.1 | asdf | 1d? | 2006-07-26 | 2006-07-26 |  | 48d |  |  |  |
| 261 | 1.3.1.4.5 | asdf | 1d? | 2006-07-26 | 2006-07-26 |  | 48d |  |  |  |
| 262 | 1.3.1.4.6 | asdf | 1d? | 2006-07-26 | 2006-07-26 |  | 48d |  |  |  |

| ID | WBS | Task | Type | Duration | Start | Finish | Predecessors | Total slack | Constraint | Text1 |
| --- | --- | --- | --- | --- | --- | --- | --- | --- | --- | --- |
| 263 | 1.3.1.5 | **Infrastructure** |  | 1d? | 2006-07-26 | 2006-07-26 |  | 48d |  |  |
| 264 | 1.3.1.5.1 | asdf |  | 1d? | 2006-07-26 | 2006-07-26 |  | 48d |  |  |
| 265 | 1.3.2 | **Iteration II** |  | 15d? | 2006-08-16 | 2006-09-05 | 239 | 34d |  |  |
| 266 | 1.3.2.1 | **Data Services** |  | 5d | 2006-08-16 | 2006-08-22 |  | 44d |  | 6.4.4, 6.4.4.1 |
| 267 | 1.3.2.1.1 | asdf |  | 5d | 2006-08-16 | 2006-08-22 |  | 44d | start no earlier than 2006-05-01 |  |
| 268 | 1.3.2.2 | **Introduce** |  | 15d | 2006-08-16 | 2006-09-05 |  | 34d |  | 6.4.2, 6.4.2.1,6.4.2.2,6.4.3 |
| 269 | 1.3.2.2.1 | asdf |  | 15d | 2006-08-16 | 2006-09-05 |  | 34d | start no earlier than 2006-05-01 |  |
| 270 | 1.3.2.3 | **Metadata** |  | 1d? | 2006-08-16 | 2006-08-16 |  | 48d |  |  |
| 271 | 1.3.2.3.1 | asdf |  | 1d? | 2006-08-16 | 2006-08-16 |  | 48d |  |  |
| 272 | 1.3.2.4 | **Security** |  | 1d? | 2006-08-16 | 2006-08-16 |  | 48d |  |  |
| 273 | 1.3.2.4.1 | asdf |  | 1d? | 2006-08-16 | 2006-08-16 |  | 48d |  |  |
| 274 | 1.3.2.5 | **Infrastructure** |  | 1d? | 2006-08-16 | 2006-08-16 |  | 48d |  |  |
| 275 | 1.3.2.5.1 | asdf |  | 1d? | 2006-08-16 | 2006-08-16 |  | 48d |  |  |
| 276 | 1.4 | caGrid Developer's Face to Face (Columbus, OH) |  | 2d | 2006-05-22 | 2006-05-23 |  | 109d | finish no earlier than 2006-05-23 |  |
| 277 | 1.5 | caGrid 1.0 Beta Freeze | milestone | 0d | 2006-06-30 | 2006-06-30 |  | 0d | must finish on 2006-06-30 |  |
| 278 | 1.6 | caGrid 1.0 Beta | milestone | 0d | 2006-07-13 | 2006-07-13 | 277 | 0d | must finish on 2006-07-13 |  |
| 279 | 1.7 | caGrid 1.0 Feature Freeze | milestone | 0d | 2006-08-18 | 2006-08-18 | 278 | 0d | must finish on 2006-08-18 |  |
| 280 | 1.8 | caGrid 1.0 Release | milestone | 0d | 2006-10-23 | 2006-10-23 | 279 | 0d | must finish on 2006-10-23 |  |
