# caGrid_Development1

Schedule from MS Project, 2007-01-15 to 2008-02-29.

## Calendars

- Standard: Mon-Fri 08:00-12:00, 13:00-17:00; Sat-Sun off.

## Schedule

| ID | WBS | Task | Duration | Start | Finish | Total slack | Free slack |
| --- | --- | --- | --- | --- | --- | --- | --- |
| 1 | 1 | **Post caGrid 1.0** | 295d? | 2007-01-15 | 2008-02-29 | 0d |  |
| 2 | 1.1 | **Software Development Prior to Point Release (caGrid 1.0.1)** | 15d? | 2007-01-15 | 2007-02-02 | 228d | 0d |
| 3 | 1.1.1 | **Inception** | 15d? | 2007-01-15 | 2007-02-02 | 228d |  |
| 4 | 1.1.1.1 | Define Scope of Release | 2d? | 2007-01-15 | 2007-01-16 | 241d |  |
| 5 | 1.1.1.2 | Define release engineering logistics | 1d? | 2007-01-15 | 2007-01-15 | 242d |  |
| 6 | 1.1.1.3 | Create training plan | 1d? | 2007-01-15 | 2007-01-15 | 242d |  |
| 7 | 1.1.1.4 | **Add Information to Wiki** | 15d | 2007-01-15 | 2007-02-02 | 228d |  |
| 8 | 1.1.1.4.1 | Overview Information | 5d | 2007-01-15 | 2007-01-19 | 238d |  |
| 9 | 1.1.1.4.2 | Security Administration Guides | 5d | 2007-01-15 | 2007-01-19 | 238d |  |
| 10 | 1.1.1.4.3 | Tutorial | 15d | 2007-01-15 | 2007-02-02 | 228d |  |
| 11 | 1.1.1.4.4 | How-To | 5d | 2007-01-15 | 2007-01-19 | 238d |  |
| 12 | 1.1.1.4.5 | FAQ | 2d | 2007-01-15 | 2007-01-16 | 241d |  |
| 13 | 1.1.1.5 | **Meet with caCORE teams to discuss requirements and timelines** | 1d? | 2007-01-15 | 2007-01-15 | 242d |  |
| 14 | 1.1.1.5.1 | SDK | 1d? | 2007-01-15 | 2007-01-15 | 242d |  |
| 15 | 1.1.1.5.2 | CSM | 1d? | 2007-01-15 | 2007-01-15 | 242d |  |
| 16 | 1.1.1.5.3 | caDSR | 1d? | 2007-01-15 | 2007-01-15 | 242d |  |
| 17 | 1.1.1.6 | Meet with TeraGrid to discuss integration | 1d? | 2007-01-15 | 2007-01-15 | 242d |  |
| 18 | 1.1.1.7 | Set release timeline | 1d? | 2007-01-15 | 2007-01-15 | 242d |  |
| 19 | 1.1.1.8 | Create release regression test plan | 3d | 2007-01-15 | 2007-01-17 | 240d |  |
| 20 | 1.1.1.9 | Create/Edit Secuity Policy Documents for caGrid security services | 5d | 2007-01-15 | 2007-01-19 | 238d |  |
| 21 | 1.1.2 | **Elaboration** | 5d | 2007-01-15 | 2007-01-19 | 238d |  |
| 22 | 1.1.2.1 | **Design Introduce Update/Upgrade Support for handling service transitions from caGrid 1.0 and beyond** | 5d | 2007-01-15 | 2007-01-19 | 238d |  |
| 23 | 1.1.2.1.1 | Design update mechanism and support in Introduce | 4d | 2007-01-15 | 2007-01-18 | 239d |  |
| 24 | 1.1.2.1.2 | Design serivce migration support in Introduce | 3d | 2007-01-15 | 2007-01-17 | 240d |  |
| 25 | 1.1.2.1.3 | Design extension support | 3d | 2007-01-15 | 2007-01-17 | 240d |  |
| 26 | 1.1.2.1.4 | Design Data service migration plan | 2d | 2007-01-15 | 2007-01-16 | 241d |  |
| 27 | 1.1.2.1.5 | Design Data Service support for caCORE 3.2 | 5d | 2007-01-15 | 2007-01-19 | 238d |  |
| 28 | 1.1.2.2 | Design TeraGrid integration | 2d | 2007-01-15 | 2007-01-16 | 241d |  |

| ID | WBS | Task | Duration | Start | Finish | Predecessors | Total slack | Free slack |
| --- | --- | --- | --- | --- | --- | --- | --- | --- |
| 29 | 1.1.3 | **Construction** | 10d? | 2007-01-15 | 2007-01-26 |  | 233d |  |
| 30 | 1.1.3.1 | Minor Bug Fixes | 3d | 2007-01-15 | 2007-01-17 |  | 240d |  |
| 31 | 1.1.3.2 | Implement Introduce Update/Upgrade Support | 10d | 2007-01-15 | 2007-01-26 |  | 233d |  |
| 32 | 1.1.3.3 | Implement Service metadata editor/validator | 1d? | 2007-01-15 | 2007-01-15 |  | 242d |  |
| 33 | 1.1.3.4 | Implement Data Service Extension Updater | 2d | 2007-01-15 | 2007-01-16 |  | 241d |  |
| 34 | 1.1.3.5 | Implement CQL Processor for caCORE SDK 3.2 | 10d | 2007-01-15 | 2007-01-26 |  | 233d |  |
| 35 | 1.1.3.6 | Update Data Service SDK Wizard to support for caCORE SDK 3.1 and 3.2 | 3d | 2007-01-15 | 2007-01-17 |  | 240d |  |
| 36 | 1.1.4 | **Transition** | 3d | 2007-01-15 | 2007-01-17 |  | 240d |  |
| 37 | 1.1.4.1 | System Testing | 3d | 2007-01-15 | 2007-01-17 |  | 240d |  |
| 38 | 1.1.4.2 | **Regression Testing** | 2d | 2007-01-15 | 2007-01-16 |  | 241d |  |
| 39 | 1.1.4.2.1 | Verify service migration from 1.0 services | 2d | 2007-01-15 | 2007-01-16 |  | 241d |  |
| 40 | 1.1.4.3 | Create plan for future "development" or "early access" releases | 3d | 2007-01-15 | 2007-01-17 |  | 240d |  |
| 41 | 1.2 | **Software Development Prior to caGrid 1.1 API Freeze** | 52d? | 2007-02-05 | 2007-04-17 | 2 | 228d |  |
| 42 | 1.2.1 | **Inception** | 5d? | 2007-02-05 | 2007-02-09 |  | 228d |  |
| 43 | 1.2.1.1 | **Gather feedback from Community** | 5d | 2007-02-05 | 2007-02-09 |  | 228d |  |
| 44 | 1.2.1.1.1 | caGrid Reference Implementer's Post Mortum | 5d | 2007-02-05 | 2007-02-09 |  | 228d | 0d |
| 45 | 1.2.1.1.2 | User's Group | 2d | 2007-02-05 | 2007-02-06 |  | 278d |  |
| 46 | 1.2.1.2 | Define Requirements for Backwards compatibility | 5d | 2007-02-05 | 2007-02-09 |  | 275d |  |
| 47 | 1.2.1.3 | Create ICR working group to identify requirements and usecases for large data | 1d? | 2007-02-05 | 2007-02-05 |  | 279d |  |
| 48 | 1.2.2 | **Elaboration** | 10d? | 2007-02-12 | 2007-02-23 | 44 | 228d |  |
| 49 | 1.2.2.1 | **Iteration 1** | 5d? | 2007-02-12 | 2007-02-16 |  | 228d |  |
| 50 | 1.2.2.1.1 | Create TeraGrid "hello world" caGrid service prototype | 5d | 2007-02-12 | 2007-02-16 |  | 228d | 0d |
| 51 | 1.2.2.1.2 | Design tooling to support large data needs | 5d | 2007-02-12 | 2007-02-16 |  | 270d |  |
| 52 | 1.2.2.1.3 | Design GME enhancements | 1d? | 2007-02-12 | 2007-02-12 |  | 274d |  |
| 53 | 1.2.2.1.4 | Design discovery of "compliant services" | 1d? | 2007-02-12 | 2007-02-12 |  | 274d |  |

| ID | WBS | Task | Duration | Start | Finish | Total slack |
| --- | --- | --- | --- | --- | --- | --- |
| 54 | 1.2.2.1.5 | **Design enhancements to BDT necessary for ICR-needs** | 5d? | 2007-02-12 | 2007-02-16 | 270d |
| 55 | 1.2.2.1.5.1 | Refine security model | 1d? | 2007-02-12 | 2007-02-12 | 274d |
| 56 | 1.2.2.1.5.2 | easier "out of the box" integration with GridFTP | 5d | 2007-02-12 | 2007-02-16 | 270d |
| 57 | 1.2.2.1.5.3 | Design additional security support desired for Introduce | 5d | 2007-02-12 | 2007-02-16 | 270d |
| 58 | 1.2.2.1.6 | Design CQL/DCQL Enhancements | 1d? | 2007-02-12 | 2007-02-12 | 274d |
| 59 | 1.2.2.1.7 | Design authorization support for data services | 1d? | 2007-02-12 | 2007-02-12 | 274d |
| 60 | 1.2.2.1.8 | Investigate GUI tooling for BPEL | 5d | 2007-02-12 | 2007-02-16 | 270d |
| 61 | 1.2.2.1.9 | Work with IGTF to investigate caBIG's potential use | 3d | 2007-02-12 | 2007-02-14 | 272d |
| 62 | 1.2.2.1.10 | **Design Portal Enhancements** | 1d? | 2007-02-12 | 2007-02-12 | 274d |
| 63 | 1.2.2.1.10.1 | Usability | 1d? | 2007-02-12 | 2007-02-12 | 274d |
| 64 | 1.2.2.1.10.2 | Better handling of services over time | 1d? | 2007-02-12 | 2007-02-12 | 274d |
| 65 | 1.2.2.1.11 | **Scope Dorian Enhancements** | 1d? | 2007-02-12 | 2007-02-12 | 274d |
| 66 | 1.2.2.1.11.1 | Event Notification | 1d? | 2007-02-12 | 2007-02-12 | 274d |
| 67 | 1.2.2.1.11.2 | Multiple CA Support | 1d? | 2007-02-12 | 2007-02-12 | 274d |
| 68 | 1.2.2.1.11.3 | SAML 2.0 Support | 1d? | 2007-02-12 | 2007-02-12 | 274d |
| 69 | 1.2.2.1.11.4 | Generic Attributes Support | 1d? | 2007-02-12 | 2007-02-12 | 274d |
| 70 | 1.2.2.1.11.5 | Attribute Release Policies | 1d? | 2007-02-12 | 2007-02-12 | 274d |
| 71 | 1.2.2.1.11.6 | Dorian IdP Enhancements to support generic attributes, and account editing facilities. | 1d? | 2007-02-12 | 2007-02-12 | 274d |
| 72 | 1.2.2.1.11.7 | Add enhancements required to meet caGridPMA policies. | 1d? | 2007-02-12 | 2007-02-12 | 274d |
| 73 | 1.2.2.1.12 | **Scope GTS Enhancements** | 1d? | 2007-02-12 | 2007-02-12 | 274d |
| 74 | 1.2.2.1.12.1 | Support for RSRV Profile. | 1d? | 2007-02-12 | 2007-02-12 | 274d |
| 75 | 1.2.2.1.12.2 | Automated support for downloading CRLs. | 1d? | 2007-02-12 | 2007-02-12 | 274d |
| 76 | 1.2.2.1.12.3 | Support for managing syncGTS history. | 1d? | 2007-02-12 | 2007-02-12 | 274d |
| 77 | 1.2.2.1.12.4 | Add enhancements required to meet caGridPMA policies | 1d? | 2007-02-12 | 2007-02-12 | 274d |

| ID | WBS | Task | Duration | Start | Finish | Predecessors | Total slack | Free slack |
| --- | --- | --- | --- | --- | --- | --- | --- | --- |
| 78 | 1.2.2.2 | **Iteration 2** | 5d? | 2007-02-19 | 2007-02-23 | 50 | 228d | 0d |
| 79 | 1.2.2.2.1 | **Design support for "other language" clients in Introduce** | 1d? | 2007-02-19 | 2007-02-19 |  | 232d |  |
| 80 | 1.2.2.2.1.1 | Investigate WSRF libraries on other languages | 1d? | 2007-02-19 | 2007-02-19 |  | 232d |  |
| 81 | 1.2.2.2.2 | Investigate use cases for semantic query in data services | 5d | 2007-02-19 | 2007-02-23 |  | 228d |  |
| 82 | 1.2.2.2.3 | Investigate additional use cases for distributed query | 1d? | 2007-02-19 | 2007-02-19 |  | 232d |  |
| 83 | 1.2.2.2.4 | Design tooling to support creation of grid service from "executables" | 5d | 2007-02-19 | 2007-02-23 |  | 228d |  |
| 84 | 1.2.2.2.5 | **Design Workflow optimizations** | 5d | 2007-02-19 | 2007-02-23 |  | 228d |  |
| 85 | 1.2.2.2.5.1 | Data Transfer | 5d | 2007-02-19 | 2007-02-23 |  | 228d |  |
| 86 | 1.2.2.2.5.2 | Fault Tolerance | 5d | 2007-02-19 | 2007-02-23 |  | 228d |  |
| 87 | 1.2.2.2.6 | Design caGrid's use of "registered services" in caDSR | 5d | 2007-02-19 | 2007-02-23 |  | 228d |  |
| 88 | 1.2.2.3 | **Iteration 3** | 5d | 2007-02-12 | 2007-02-16 |  | 270d |  |
| 89 | 1.2.2.3.1 | Design Introduce extension framework enhancements | 5d | 2007-02-12 | 2007-02-16 |  | 270d |  |
| 90 | 1.2.2.3.2 | Use case analysis for auditing | 5d | 2007-02-12 | 2007-02-16 |  | 270d |  |
| 91 | 1.2.2.3.3 | Use case analysis for provenance | 5d | 2007-02-12 | 2007-02-16 |  | 270d |  |
| 92 | 1.2.3 | **Construction** | 36d? | 2007-02-26 | 2007-04-16 | 78 | 228d |  |
| 93 | 1.2.3.1 | **Iteration 1** | 21d | 2007-02-26 | 2007-03-26 |  | 228d |  |
| 94 | 1.2.3.1.1 | Implement Introduce support for BDT | 21d | 2007-02-26 | 2007-03-26 |  | 228d | 0d |
| 95 | 1.2.3.1.2 | Create prototype TeraGrid service that uses GRAM submissions | 5d | 2007-02-26 | 2007-03-02 |  | 260d |  |
| 96 | 1.2.3.1.3 | Implement Introduce Extension framework enhancements | 10d | 2007-02-26 | 2007-03-09 |  | 255d |  |
| 97 | 1.2.3.1.4 | Implement ability to have services register to multiple index services | 7d | 2007-02-26 | 2007-03-06 |  | 258d |  |
| 98 | 1.2.3.1.5 | **Implement intial GME enhancements** | 15d | 2007-02-26 | 2007-03-16 |  | 250d |  |
| 99 | 1.2.3.1.5.1 | Multiple DB support | 5d | 2007-02-26 | 2007-03-02 |  | 260d |  |
| 100 | 1.2.3.1.5.2 | Update/Delete capabilities | 15d | 2007-02-26 | 2007-03-16 |  | 250d |  |
| 101 | 1.2.3.2 | **Iteration 2** | 15d | 2007-03-27 | 2007-04-16 | 94 | 228d | 0d |
| 102 | 1.2.3.2.1 | Implement data service support for BDT | 15d | 2007-03-27 | 2007-04-16 |  | 228d |  |
| 103 | 1.2.3.2.2 | Implement Introduce integration with UML/XML binding | 5d | 2007-03-27 | 2007-04-02 |  | 238d |  |
| 104 | 1.2.3.2.3 | Implement GME security model | 5d | 2007-03-27 | 2007-04-02 |  | 238d |  |
| 105 | 1.2.3.3 | Iteration 3 | 1d? | 2007-02-26 | 2007-02-26 |  | 264d |  |

| ID | WBS | Task | Type | Duration | Start | Finish | Predecessors | Total slack | Free slack | Constraint |
| --- | --- | --- | --- | --- | --- | --- | --- | --- | --- | --- |
| 106 | 1.2.4 | **Transition** |  | 1d? | 2007-04-17 | 2007-04-17 | 101 | 228d |  |  |
| 107 | 1.2.4.1 | Design system and regression testing frameworks |  | 1d? | 2007-04-17 | 2007-04-17 |  | 228d |  |  |
| 108 | 1.2.4.2 | Create 1.1 beta release |  | 1d? | 2007-04-17 | 2007-04-17 |  | 228d |  |  |
| 109 | 1.3 | **Software Development Prior to 1.1 Release** |  | 5d? | 2007-01-15 | 2007-01-19 |  | 287d | 0d |  |
| 110 | 1.3.1 | **Inception** |  | 5d? | 2007-01-15 | 2007-01-19 |  | 287d |  |  |
| 111 | 1.3.1.1 | Identify remaining bugs/ features targeted for release |  | 1d? | 2007-01-15 | 2007-01-15 |  | 290d | 0d |  |
| 112 | 1.3.1.2 | Update design documents |  | 5d | 2007-01-15 | 2007-01-19 |  | 287d |  |  |
| 113 | 1.3.1.3 | Define plan for release documents |  | 1d? | 2007-01-15 | 2007-01-15 |  | 291d |  |  |
| 114 | 1.3.2 | **Elaboration** |  | 1d? | 2007-01-16 | 2007-01-16 | 111 | 290d |  |  |
| 115 | 1.3.2.1 | Implement regression testing framework |  | 1d? | 2007-01-16 | 2007-01-16 |  | 290d |  |  |
| 116 | 1.3.3 | Construction |  | 2d? | 2007-01-15 | 2007-01-16 |  | 290d |  |  |
| 117 | 1.3.4 | **Transition** |  | 5d? | 2007-01-15 | 2007-01-19 |  | 287d |  |  |
| 118 | 1.3.4.1 | Update release documents |  | 1d? | 2007-01-15 | 2007-01-15 |  | 291d |  |  |
| 119 | 1.3.4.2 | Create 1.1 release |  | 5d | 2007-01-15 | 2007-01-19 |  | 287d |  |  |
| 120 | 1.4 | **Software Development Prior to Point Release (caGrid 1.1.1)** |  | 3d? | 2007-01-22 | 2007-01-24 | 109 | 287d |  |  |
| 121 | 1.4.1 | **Inception** |  | 1d? | 2007-01-22 | 2007-01-22 |  | 287d |  |  |
| 122 | 1.4.1.1 | Gather feedback on 1.1 release |  | 1d? | 2007-01-22 | 2007-01-22 |  | 287d | 0d |  |
| 123 | 1.4.1.2 | Identify Scope of point release |  | 1d? | 2007-01-22 | 2007-01-22 |  | 289d |  |  |
| 124 | 1.4.2 | Elaboration |  | 2d? | 2007-01-23 | 2007-01-24 | 122 | 287d |  |  |
| 125 | 1.4.3 | Construction |  | 2d? | 2007-01-22 | 2007-01-23 |  | 288d |  |  |
| 126 | 1.4.4 | Transition |  | 1d? | 2007-01-22 | 2007-01-22 |  | 289d |  |  |
| 127 | 1.5 | caGrid Developer's Face to Face (Columbus, OH) |  | 2d | 2007-03-15 | 2007-03-16 |  | 250d |  | start no earlier than 2007-03-15 |
| 128 | 1.6 | caGrid 1.0.1 Release | milestone | 0d | 2007-03-30 | 2007-03-30 |  | 0d |  | must finish on 2007-03-30 |
| 129 | 1.7 | caGrid 1.1 Feature Freeze | milestone | 0d | 2007-08-18 | 2007-08-18 | 128 | 0d |  | must finish on 2007-08-18 |
| 130 | 1.8 | caGrid 1.1 Release | milestone | 0d | 2007-12-03 | 2007-12-03 | 129 | 0d |  | must finish on 2007-12-03 |
| 131 | 1.9 | caGrid 1.1.1 Release | milestone | 0d | 2008-02-29 | 2008-02-29 |  | 0d |  | must finish on 2008-02-29 |
