# caGrid Development

Schedule from MS Project MPX, 2001-01-01 to 2001-01-05, A marks actual dates.

## Calendars

- Standard: Mon-Fri 8:00-12:00, 13:00-17:00; Sat-Sun off.

## Resources

| Resource |
| --- |
| Resource 1 |

## Schedule

| ID | WBS | Task | Duration | Start | Predecessors | Complete | Constraint |
| --- | --- | --- | --- | --- | --- | --- | --- |
| 1 | 1 | **Next Release with SHA 2 Support** | 64.00h | 2001-01-01 A |  | 61% |  |
| 2 | 1.1 | Upgrade Documentation | 60.00h | 2001-01-01 A |  | 40% |  |
| 3 | 1.2 | New Install Documentation | 24.00h | 2001-01-01 A |  |  |  |
| 4 | 1.3 | Identify Owners of Secure Services on Training Grid | 4.00h | 2001-01-01 A |  | 50% |  |
| 5 | 1.4 | Identify Owners of Secure Services on Production Grid | 8.00h | 2001-01-02 A | 4 |  |  |
| 6 | 1.5 | Merge caCORE SDK 4.4 data service style | 16.00h | 2001-01-01 A |  | 100% |  |
| 7 | 1.6 | **Introduce Upgraders** | 56.00h | 2001-01-01 A |  | 92% |  |
| 8 | 1.6.1 | CaGrid Metadata Extension Upgrader | 8.00h | 2001-01-01 A |  | 60% | start no earlier than 2001-01-01 |
| 9 | 1.6.2 | Data Service with SDK 4.2 Upgraders from 1.3 and 1.4 | 24.00h | 2001-01-01 A |  | 100% |  |
| 10 | 1.6.3 | Data Service with SDK 4.3 Upgraders from 1.3 and 1.4 | 24.00h | 2001-01-01 A |  | 100% |  |
| 11 | 1.6.4 | Data Service with SDK 4.4 Upgraders from 1.4 | 24.00h | 2001-01-05 A | 16 | 100% |  |
| 12 | 1.6.5 | WS-Enumeration Upgrader | 8.00h | 2001-01-01 A |  | 50% |  |
| 13 | 2 | **Continued Development** | 88.00h | 2001-01-01 A |  | 44% |  |
| 14 | 2.1 | Fix service build problems with spaces in the path | 80.00h | 2001-01-01 A |  | 100% |  |
| 15 | 2.2 | Client Tool for Service Identities | 8.00h | 2001-01-01 A |  | 100% |  |
| 16 | 2.3 | Merge caCORE SDK 4.4 data service style | 16.00h | 2001-01-03 A | 6 | 100% |  |
| 17 | 2.4 | Migrate XMI Datatypes Browser to SDK 4.3 or newer | 40.00h | 2001-01-01 A |  |  |  |
| 18 | 2.5 | Discoverable Target Grids | 16.00h | 2001-01-01 A |  |  |  |
| 19 | 2.6 | Break WS-Core Ivy module into more granular components | 1.00h | 2001-01-04 A | 20 |  |  |
| 20 | 2.7 | Remove dependency on GLOBUS_LOCATION | 24.00h | 2001-01-01 A |  |  |  |
| 21 | 2.8 | Dorian Users Password Reset Mechanism | 40.00h | 2001-01-01 A |  |  |  |
| 22 | 2.9 | New Resource Property to indicate Semantic Annotation Source | 16.00h | 2001-01-01 A |  |  |  |
| 23 | 2.10 | Introduce Advanced Deployment Option | 4.00h | 2001-01-01 A |  |  |  |
| 24 | 2.11 | Rework GAARDS-UI's target grid configuration | 24.00h | 2001-01-01 A |  |  |  |
| 25 | 2.12 | FQP performance and scalability | 80.00h | 2001-01-01 A |  | 70% |  |
| 26 | 2.13 | SDK Data Services under OpenJDK | 8.00h | 2001-01-01 A |  |  |  |
| 27 | 2.14 | Introduce Update and Version Coordination | 4.00h | 2001-01-01 A |  | 30% |  |
| 28 | 2.15 | Dynamic Data Type creation with FQP | 80.00h | 2001-01-01 A |  | 20% |  |

Notes:
- 1: The release formerly known as caGrid 1.4.1, or 1.4 w/ SHA 2 https://tracker.nci.nih.gov/browse/CAGRID-540
- 2: https://tracker.nci.nih.gov/browse/CAGRID-516
- 3: https://tracker.nci.nih.gov/browse/CAGRID-517
- 4: https://tracker.nci.nih.gov/browse/CAGRID-600
- 5: https://tracker.nci.nih.gov/browse/CAGRID-601
- 6: https://tracker.nci.nih.gov/browse/CAGRID-755
- 7: https://tracker.nci.nih.gov/browse/CAGRID-640
- 8: https://tracker.nci.nih.gov/browse/CAGRID-758
- 9: https://tracker.nci.nih.gov/browse/CAGRID-752
- 10: https://tracker.nci.nih.gov/browse/CAGRID-753
- 11: https://tracker.nci.nih.gov/browse/CAGRID-754
- 12: https://tracker.nci.nih.gov/browse/CAGRID-766
- 13: The release following the SHA 2 release, currently known as 1.6
- 14: https://tracker.nci.nih.gov/browse/CAGRID-161
- 15: https://tracker.nci.nih.gov/browse/CAGRID-619
- 16: https://tracker.nci.nih.gov/browse/CAGRID-755
- 17: https://tracker.nci.nih.gov/browse/CAGRID-90
- 18: https://tracker.nci.nih.gov/browse/CAGRID-141
- 19: https://tracker.nci.nih.gov/browse/CAGRID-173
- 20: https://tracker.nci.nih.gov/browse/CAGRID-677
- 21: https://tracker.nci.nih.gov/browse/CAGRID-357
- 22: https://tracker.nci.nih.gov/browse/CAGRID-380
- 23: https://tracker.nci.nih.gov/browse/CAGRID-393
- 24: https://tracker.nci.nih.gov/browse/CAGRID-633
- 25: https://tracker.nci.nih.gov/browse/CAGRID-646
- 26: https://tracker.nci.nih.gov/browse/CAGRID-673
- 27: https://tracker.nci.nih.gov/browse/CAGRID-679
- 28: https://tracker.nci.nih.gov/browse/CAGRID-685

| ID | WBS | Task | Duration | Start | Predecessors | Complete |
| --- | --- | --- | --- | --- | --- | --- |
| 29 | 2.16 | **Introduce Upgraders** | 24.00h | 2001-01-01 A |  | 57% |
| 30 | 2.16.1 | CaGrid Metadata Extension Upgrader | 8.00h | 2001-01-01 A |  | 50% |
| 31 | 2.16.2 | Data Service with SDK 4.2 Upgraders from 1.4 and 1.5 | 24.00h | 2001-01-01 A |  | 40% |
| 32 | 2.16.3 | Data Service with SDK 4.3 Upgraders from 1.4 and 1.5 | 24.00h | 2001-01-01 A |  | 67% |
| 33 | 2.16.4 | Data Service with SDK 4.4 Upgraders from 1.4 and 1.5 | 24.00h | 2001-01-01 A |  | 67% |
| 34 | 2.16.5 | WS-Enumeration Upgrader | 8.00h | 2001-01-01 A |  | 50% |
| 35 | 2.17 | **Tech Stack Upgrades** | 88.00h | 2001-01-01 A |  | 49% |
| 36 | 2.17.1 | Tomcat 6 Support | 24.00h | 2001-01-01 A |  | 95% |
| 37 | 2.17.2 | JBoss 5.1 support | 60.00h | 2001-01-04 A | 36 | 10% |
| 38 | 2.17.3 | MySQL 5.1.x support | 8.00h | 2001-01-01 A |  | 50% |
| 39 | 2.17.4 | Ant 1.8.x support | 24.00h | 2001-01-01 A |  | 100% |

Notes:
- 30: https://tracker.nci.nih.gov/browse/CAGRID-758
- 31: https://tracker.nci.nih.gov/browse/CAGRID-752
- 32: https://tracker.nci.nih.gov/browse/CAGRID-753
- 33: https://tracker.nci.nih.gov/browse/CAGRID-754
- 34: https://tracker.nci.nih.gov/browse/CAGRID-767
- 35: https://tracker.nci.nih.gov/browse/CAGRID-83
- 36: https://tracker.nci.nih.gov/browse/CAGRID-104 https://tracker.nci.nih.gov/browse/CAGRID-110
- 37: https://tracker.nci.nih.gov/browse/CAGRID-103 https://tracker.nci.nih.gov/browse/CAGRID-768
- 38: https://tracker.nci.nih.gov/browse/CAGRID-108
- 39: https://tracker.nci.nih.gov/browse/CAGRID-372
