# caGrid Development

Schedule from MS Project XML, 2001-01-01 to 2001-01-05, A marks actual dates.

## Calendars

- Standard: Mon-Fri 08:00-12:00, 13:00-17:00; Sat-Sun off.

## Resources

| Resource |
| --- |
| Resource 1 |

## Schedule

| ID | WBS | Task | Duration | Start | Predecessors | Complete | Remaining | Total slack | Constraint | Work |
| --- | --- | --- | --- | --- | --- | --- | --- | --- | --- | --- |
| 1 | 1 | **Next Release with SHA 2 Support** | 64h | 2001-01-01 A |  | 61% | 24.7h | 0d |  | 200h |
| 2 | 1.1 | Upgrade Documentation | 60h | 2001-01-01 A |  | 40% | 36h | 0d |  | 60h |
| 3 | 1.2 | New Install Documentation | 24h | 2001-01-01 A |  |  | 24h | 0d |  | 24h |
| 4 | 1.3 | Identify Owners of Secure Services on Training Grid | 4h | 2001-01-01 A |  | 50% | 2.01h | 0d |  | 4h |
| 5 | 1.4 | Identify Owners of Secure Services on Production Grid | 8h | 2001-01-02 A | 4 |  | 8h | 0d |  | 8h |
| 6 | 1.5 | Merge caCORE SDK 4.4 data service style | 16h | 2001-01-01 A |  | 100% | 0h | 0d |  | 16h |
| 7 | 1.6 | **Introduce Upgraders** | 56h | 2001-01-01 A |  | 92% | 4.57h | 0d |  | 88h |
| 8 | 1.6.1 | CaGrid Metadata Extension Upgrader | 8h | 2001-01-01 A |  | 60% | 3.2h | 0d | start no earlier than 2001-01-01 | 8h |
| 9 | 1.6.2 | Data Service with SDK 4.2 Upgraders from 1.3 and 1.4 | 24h | 2001-01-01 A |  | 100% | 0h | 0d |  | 24h |
| 10 | 1.6.3 | Data Service with SDK 4.3 Upgraders from 1.3 and 1.4 | 24h | 2001-01-01 A |  | 100% | 0h | 0d |  | 24h |
| 11 | 1.6.4 | Data Service with SDK 4.4 Upgraders from 1.4 | 24h | 2001-01-05 A | 16 | 100% | 0h | 0d |  | 24h |
| 12 | 1.6.5 | WS-Enumeration Upgrader | 8h | 2001-01-01 A |  | 50% | 3.98h | 0d |  | 8h |
| 13 | 2 | **Continued Development** | 88h | 2001-01-01 A |  | 44% | 49.29h | 0d |  | 645h |
| 14 | 2.1 | Fix service build problems with spaces in the path | 80h | 2001-01-01 A |  | 100% | 0h | 0d |  | 80h |
| 15 | 2.2 | Client Tool for Service Identities | 8h | 2001-01-01 A |  | 100% | 0h | 0d |  | 8h |
| 16 | 2.3 | Merge caCORE SDK 4.4 data service style | 16h | 2001-01-03 A | 6 | 100% | 0h | 0d |  | 16h |
| 17 | 2.4 | Migrate XMI Datatypes Browser to SDK 4.3 or newer | 40h | 2001-01-01 A |  |  | 40h | 0d |  | 40h |
| 18 | 2.5 | Discoverable Target Grids | 16h | 2001-01-01 A |  |  | 16h | 0d |  | 16h |
| 19 | 2.6 | Break WS-Core Ivy module into more granular components | 1h | 2001-01-04 A | 20 |  | 1h | 0d |  | 1h |
| 20 | 2.7 | Remove dependency on GLOBUS_LOCATION | 24h | 2001-01-01 A |  |  | 24h | 0d |  | 24h |
| 21 | 2.8 | Dorian Users Password Reset Mechanism | 40h | 2001-01-01 A |  |  | 40h | 0d |  | 40h |
| 22 | 2.9 | New Resource Property to indicate Semantic Annotation Source | 16h | 2001-01-01 A |  |  | 16h | 0d |  | 16h |
| 23 | 2.10 | Introduce Advanced Deployment Option | 4h | 2001-01-01 A |  |  | 4h | 0d |  | 4h |
| 24 | 2.11 | Rework GAARDS-UI's target grid configuration | 24h | 2001-01-01 A |  |  | 24h | 0d |  | 24h |
| 25 | 2.12 | FQP performance and scalability | 80h | 2001-01-01 A |  | 70% | 24h | 0d |  | 80h |
| 26 | 2.13 | SDK Data Services under OpenJDK | 8h | 2001-01-01 A |  |  | 8h | 0d |  | 8h |
| 27 | 2.14 | Introduce Update and Version Coordination | 4h | 2001-01-01 A |  | 30% | 2.81h | 0d |  | 4h |
| 28 | 2.15 | Dynamic Data Type creation with FQP | 80h | 2001-01-01 A |  | 20% | 63.73h | 0d |  | 80h |

Notes:
- 1: The release formerly known as caGrid 1.4.1, or 1.4 w/ SHA 2 / https://tracker.nci.nih.gov/browse/CAGRID-540
- 2: https://tracker.nci.nih.gov/browse/CAGRID-516
- 3: https://tracker.nci.nih.gov/browse/CAGRID-517
- 4: https://tracker.nci.nih.gov/browse/CAGRID-600
- 5: https://tracker.nci.nih.gov/browse/CAGRID-601
- 6: https://tracker.nci.nih.gov/browse/CAGRID-755
- 7: https://tracker.nci.nih.gov/browse/CAGRID-640
- 8: https://tracker.nci.nih.gov/browse/CAGRID-758
- 9: https://tracker.nci.nih.gov/browse/CAGRID-752
- 10: https://tracker.nci.nih.gov/browse/CAGRID-753
- 11: https://tracker.nci.nih.gov/browse/CAGRID-754
- 12: https://tracker.nci.nih.gov/browse/CAGRID-766
- 13: The release following the SHA 2 release, currently known as 1.6
- 14: https://tracker.nci.nih.gov/browse/CAGRID-161
- 15: https://tracker.nci.nih.gov/browse/CAGRID-619
- 16: https://tracker.nci.nih.gov/browse/CAGRID-755
- 17: https://tracker.nci.nih.gov/browse/CAGRID-90
- 18: https://tracker.nci.nih.gov/browse/CAGRID-141
- 19: https://tracker.nci.nih.gov/browse/CAGRID-173
- 20: https://tracker.nci.nih.gov/browse/CAGRID-677
- 21: https://tracker.nci.nih.gov/browse/CAGRID-357
- 22: https://tracker.nci.nih.gov/browse/CAGRID-380
- 23: https://tracker.nci.nih.gov/browse/CAGRID-393
- 24: https://tracker.nci.nih.gov/browse/CAGRID-633
- 25: https://tracker.nci.nih.gov/browse/CAGRID-646
- 26: https://tracker.nci.nih.gov/browse/CAGRID-673
- 27: https://tracker.nci.nih.gov/browse/CAGRID-679
- 28: https://tracker.nci.nih.gov/browse/CAGRID-685

| ID | WBS | Task | Duration | Start | Predecessors | Complete | Remaining | Total slack | Work |
| --- | --- | --- | --- | --- | --- | --- | --- | --- | --- |
| 29 | 2.16 | **Introduce Upgraders** | 24h | 2001-01-01 A |  | 57% | 10.43h | 0d | 88h |
| 30 | 2.16.1 | CaGrid Metadata Extension Upgrader | 8h | 2001-01-01 A |  | 50% | 3.98h | 0d | 8h |
| 31 | 2.16.2 | Data Service with SDK 4.2 Upgraders from 1.4 and 1.5 | 24h | 2001-01-01 A |  | 40% | 14.29h | 0d | 24h |
| 32 | 2.16.3 | Data Service with SDK 4.3 Upgraders from 1.4 and 1.5 | 24h | 2001-01-01 A |  | 67% | 8h | 0d | 24h |
| 33 | 2.16.4 | Data Service with SDK 4.4 Upgraders from 1.4 and 1.5 | 24h | 2001-01-01 A |  | 67% | 8h | 0d | 24h |
| 34 | 2.16.5 | WS-Enumeration Upgrader | 8h | 2001-01-01 A |  | 50% | 3.98h | 0d | 8h |
| 35 | 2.17 | **Tech Stack Upgrades** | 88h | 2001-01-01 A |  | 49% | 45.13h | 0d | 116h |
| 36 | 2.17.1 | Tomcat 6 Support | 24h | 2001-01-01 A |  | 95% | 1.2h | 0d | 24h |
| 37 | 2.17.2 | JBoss 5.1 support | 60h | 2001-01-04 A | 36 | 10% | 54.26h | 0d | 60h |
| 38 | 2.17.3 | MySQL 5.1.x support | 8h | 2001-01-01 A |  | 50% | 4.02h | 0d | 8h |
| 39 | 2.17.4 | Ant 1.8.x support | 24h | 2001-01-01 A |  | 100% | 0h | 0d | 24h |

Notes:
- 30: https://tracker.nci.nih.gov/browse/CAGRID-758
- 31: https://tracker.nci.nih.gov/browse/CAGRID-752
- 32: https://tracker.nci.nih.gov/browse/CAGRID-753
- 33: https://tracker.nci.nih.gov/browse/CAGRID-754
- 34: https://tracker.nci.nih.gov/browse/CAGRID-767
- 35: https://tracker.nci.nih.gov/browse/CAGRID-83
- 36: https://tracker.nci.nih.gov/browse/CAGRID-104 / https://tracker.nci.nih.gov/browse/CAGRID-110
- 37: https://tracker.nci.nih.gov/browse/CAGRID-103 / https://tracker.nci.nih.gov/browse/CAGRID-768
- 38: https://tracker.nci.nih.gov/browse/CAGRID-108
- 39: https://tracker.nci.nih.gov/browse/CAGRID-372
