Schedule from OmniPlan, 2011-11-16 to 2012-01-19.
Project start 2011-11-15

## Resources

| Resource | Group |
| --- | --- |
| Resource 1 | staff |
| Equipment 1 | equipment |
| Material 1 | material |
| Group 1 | group |
| Resource 1 | staff |
| Joe George | staff |
| David Ervin | staff |

## Schedule

| ID | WBS | Task | Start | Predecessors | Complete | Resources | Work | Actual work |
| --- | --- | --- | --- | --- | --- | --- | --- | --- |
| 1 | 1 | **caGrid Release Plan** |  |  |  |  |  |  |
| 2 | 1.1 | **1.4.1 Release** |  |  |  |  |  |  |
| 3 | 1.1.1 | **Development Tasks** |  |  |  |  |  |  |
| 4 | 1.1.1.1 | Organize tasks in JIRA | 2011-11-16 |  |  | David Ervin [60%] | 8h |  |
| 5 | 1.1.1.2 | Create 1.4.1 Branch from 1.4 branch in SVN | 2011-11-17 | 4 |  | David Ervin [60%] | 0.5h |  |
| 6 | 1.1.1.3 | Create CI builds for 1.4.1 | 2011-11-17 | 5 |  | David Ervin [60%] | 4h |  |
| 7 | 1.1.1.4 | Update version numbers to 1.4.1 | 2011-11-18 | 6 |  | David Ervin [60%]; Joe George [60%] | 16h |  |
| 8 | 1.1.1.5 | NCI Production LDAP Authentication Service allows user IDs with garbage appended | 2011-11-22 | 7 | 90% | Joe George [60%] | 16h | 14.4h |
| 9 | 1.1.1.6 | Update authentication Service to include configurable lockout settings | 2011-11-25 | 8 | 80% | David Ervin [30%]; Joe George [30%] | 40h | 32h |
| 10 | 1.1.1.7 | Add a view for locked out accounts to GAARDS-UI | 2011-12-07 | 9 |  | Joe George [60%]; David Ervin [60%] | 16h |  |
| 11 | 1.1.1.8 | Merge caCORE SDK 4.4 data service style project into caGrid 1.4.1 branch | 2011-12-09 | 9 |  | David Ervin [60%] | 16h |  |
| 12 | 1.1.1.9 | Create upgraders for all services, extensions, and data service styles | 2011-11-25 |  |  | Joe George [60%]; David Ervin [60%] | 60h |  |
| 13 | 1.2 | **Documentation** |  |  |  |  |  |  |
| 14 | 1.2.1 | Update all necessary documentation and guides | 2011-12-14 |  |  | Joe George [60%]; David Ervin [60%] | 60h |  |
| 15 | 1.3 | **Testing** |  |  |  |  |  |  |
| 16 | 1.3.1 | Unit Testing | 2011-12-23 |  |  | Joe George [60%]; David Ervin [60%] | 40h |  |
| 17 | 1.3.2 | Integration Testing | 2011-12-29 |  |  | Joe George [60%]; David Ervin [60%] | 40h |  |
| 18 | 1.4 | **App Scan** |  | 15 |  |  |  |  |
| 19 | 1.4.1 | Perform App Scan Process |  |  |  |  | 8h |  |
| 20 | 1.4.2 | Fix App Scan issues | 2012-01-05 | 19 |  | Joe George [60%]; David Ervin [60%] | 24h |  |
| 21 | 1.5 | **Deployment** |  | 18 |  |  |  |  |
| 22 | 1.5.1 | Move to Training and test |  |  |  |  | 16h |  |
| 23 | 1.5.2 | Move to QA and test |  | 22 |  |  | 24h |  |
| 24 | 1.5.3 | Move to Stage and test |  | 23 |  |  | 16h |  |
| 25 | 1.5.4 | Move to Prod and test | 2012-01-19 | 24 |  | Joe George [60%]; David Ervin [60%] | 8h |  |

Notes:
- 10: https://tracker.nci.nih.gov/browse/CAGRID-717
