Schedule from MS Project XML, 2011-11-16 to 2012-01-20, A marks actual dates.

## Calendars

- Standard: Mon-Fri 08:00-12:00, 13:00-17:00; Sat-Sun off.

## Resources

| Resource |
| --- |
| Resource 1 |
| Joe George |
| David Ervin |

## Schedule

| ID | WBS | Task | Duration | Start | Predecessors | Complete | Remaining | Total slack | Constraint | Resources | Work |
| --- | --- | --- | --- | --- | --- | --- | --- | --- | --- | --- | --- |
| 1 | 1 | **caGrid Release Plan** | 384.17h | 2011-11-16 A |  | 11% | 341.8h | 0d |  |  | 420.5h |
| 2 | 1.1 | **1.4.1 Release** | 167.5h | 2011-11-16 A |  | 26% | 123.46h | 0d |  |  | 176.5h |
| 3 | 1.1.1 | **Development Tasks** | 167.5h | 2011-11-16 A |  | 26% | 123.46h | 0d |  |  | 176.5h |
| 4 | 1.1.1.1 | Organize tasks in JIRA | 13.33h | 2011-11-16 A |  |  | 13.33h | 0d |  | David Ervin [60%] | 8h |
| 5 | 1.1.1.2 | Create 1.4.1 Branch from 1.4 branch in SVN | 0.83h | 2011-11-17 A | 4 |  | 0.83h | 0d |  | David Ervin [60%] | 0.5h |
| 6 | 1.1.1.3 | Create CI builds for 1.4.1 | 6.67h | 2011-11-17 A | 5 |  | 6.67h | 0d |  | David Ervin [60%] | 4h |
| 7 | 1.1.1.4 | Update version numbers to 1.4.1 | 13.33h | 2011-11-18 A | 6 |  | 13.33h | 0d |  | David Ervin [60%]; Joe George [60%] | 16h |
| 8 | 1.1.1.5 | NCI Production LDAP Authentication Service allows user IDs with garbage appended | 26.67h | 2011-11-22 A | 7 | 90% | 2.67h | 0d | start no earlier than 2011-11-14 | Joe George [60%] | 16h |
| 9 | 1.1.1.6 | Update authentication Service to include configurable lockout settings | 66.67h | 2011-11-25 A | 8 | 80% | 13.33h | 0d |  | David Ervin [30%]; Joe George [30%] | 40h |
| 10 | 1.1.1.7 | Add a view for locked out accounts to GAARDS-UI | 13.33h | 2011-12-07 A | 9 |  | 13.33h | 0d |  | Joe George [60%]; David Ervin [60%] | 16h |
| 11 | 1.1.1.8 | Merge caCORE SDK 4.4 data service style project into caGrid 1.4.1 branch | 26.67h | 2011-12-09 A | 9 |  | 26.67h | 0d |  | David Ervin [60%] | 16h |
| 12 | 1.1.1.9 | Create upgraders for all services, extensions, and data service styles | 50h | 2011-11-25 A |  |  | 50h | 0d |  | Joe George [60%]; David Ervin [60%] | 60h |
| 13 | 1.2 | **Documentation** | 50h | 2011-12-14 A |  |  | 50h | 0d |  |  | 60h |
| 14 | 1.2.1 | Update all necessary documentation and guides | 50h | 2011-12-14 A |  |  | 50h | 0d | start no earlier than 2011-11-04 | Joe George [60%]; David Ervin [60%] | 60h |
| 15 | 1.3 | **Testing** | 66.67h | 2011-12-23 A |  |  | 66.67h | 0d |  |  | 80h |
| 16 | 1.3.1 | Additional Unit Testing | 33.33h | 2011-12-23 A |  |  | 33.33h | 0d | start no earlier than 2011-11-04 | Joe George [60%]; David Ervin [60%] | 40h |
| 17 | 1.3.2 | Additional Integration Testing | 33.33h | 2011-12-29 A |  |  | 33.33h | 0d | start no earlier than 2011-11-04 | Joe George [60%]; David Ervin [60%] | 40h |
| 18 | 1.4 | **App Scan** | 37.33h | 2012-01-04 A | 15 |  | 37.33h | 0d |  |  | 40h |
| 19 | 1.4.1 | Perform App Scan Process | 24h | 2012-01-04 A |  |  | 24h | 0d | start no earlier than 2011-11-04 |  | 24h |
| 20 | 1.4.2 | Fix App Scan issues | 13.33h | 2012-01-09 A | 19 |  | 13.33h | 0d | start no earlier than 2011-11-04 | Joe George [60%]; David Ervin [60%] | 16h |
| 21 | 1.5 | **Deployment** | 62.67h | 2012-01-11 A | 18 |  | 62.67h | 0d |  |  | 64h |
| 22 | 1.5.1 | Move to Training and test | 16h | 2012-01-11 A |  |  | 16h | 0d | start no earlier than 2011-11-04 |  | 16h |
| 23 | 1.5.2 | Move to QA and test | 24h | 2012-01-13 A | 22 |  | 24h | 0d | start no earlier than 2011-11-04 |  | 24h |
| 24 | 1.5.3 | Move to Stage and test | 16h | 2012-01-18 A | 23 |  | 16h | 0d | start no earlier than 2011-11-04 |  | 16h |
| 25 | 1.5.4 | Move to Prod and test | 6.67h | 2012-01-20 A | 24 |  | 6.67h | 0d | start no earlier than 2011-11-04 | Joe George [60%]; David Ervin [60%] | 8h |

Notes:
- 10: https://tracker.nci.nih.gov/browse/CAGRID-717
