# caGrid Development

Schedule from MS Project XML, 2011-11-04 to 2012-02-22, A marks actual dates.

## Calendars

- Standard: Mon-Fri 08:00-12:00, 13:00-17:00; Sat-Sun off.

## Resources

| Resource |
| --- |
| Joe George |
| David Ervin |

## Schedule

| ID | WBS | Task | Duration | Start | Predecessors | Complete | Remaining | Total slack | Constraint | Resources | Work |
| --- | --- | --- | --- | --- | --- | --- | --- | --- | --- | --- | --- |
| 1 | 1 | **caGrid Release Plan** | 632.03h | 2011-11-04 A |  | 5% | 602.77h | 0d |  |  | 908h |
| 2 | 1.1 | **Iteration 1** | 327.35h | 2011-11-04 A |  | 12% | 289.15h | 0d |  |  | 360h |
| 3 | 1.1.1 | **Bug Fixes** | 120.01h | 2011-11-04 A |  | 34% | 79.36h | 0d |  |  | 124h |
| 4 | 1.1.1.1 | NCI Production LDAP Authentication Service allows user IDs with garbage appended | 26.67h | 2011-11-04 A |  |  | 26.67h | 0d | start no earlier than 2011-11-04 | Joe George [60%] | 16h |
| 5 | 1.1.1.2 | Update authentication Service to include configurable lockout settings | 66.67h | 2011-11-09 A | 4 | 80% | 13.33h | 0d |  | David Ervin [30%]; Joe George [30%] | 40h |
| 6 | 1.1.1.3 | Data Service Upgrader for 1.4 and 1.5 to 1.6 | 20h | 2011-11-09 A |  |  | 20h | 0d | start no earlier than 2011-11-04 | David Ervin [60%]; Joe George [60%] | 24h |
| 7 | 1.1.1.4 | Merge caCORE SDK 4.4 data service style project into caGrid 1.5 and trunk | 26.67h | 2011-11-09 A | 9 | 63% | 10h | 0d |  | David Ervin [60%] | 16h |
| 8 | 1.1.1.5 | Technical Status Report for October 2011 | 6.67h | 2011-11-04 A |  |  | 6.67h | 0d | start no earlier than 2011-11-04 | David Ervin [60%] | 4h |
| 9 | 1.1.1.6 | Technical Project Plan Update for October 2011 | 13.33h | 2011-11-04 A | 8 |  | 13.33h | 0d | start no earlier than 2011-11-04 | David Ervin [60%] | 8h |
| 10 | 1.1.1.7 | caCore SDK 4.x data service styles need upgraders to handle swapping out Spring versions for SHA2 support | 26.67h | 2011-11-21 A | 7 |  | 26.67h | 0d | start no earlier than 2011-11-04 | Joe George [60%] | 16h |
| 11 | 1.1.2 | **Documentation** | 50h | 2011-11-25 A |  |  | 50h | 0d |  |  | 60h |
| 12 | 1.1.2.1 | Update all necessary documentation and guides | 50h | 2011-11-25 A |  |  | 50h | 0d | start no earlier than 2011-11-04 | Joe George [60%]; David Ervin [60%] | 60h |
| 13 | 1.1.3 | **Testing** | 66.67h | 2011-12-05 A |  |  | 66.67h | 0d |  |  | 80h |
| 14 | 1.1.3.1 | Unit Testing | 33.33h | 2011-12-05 A |  |  | 33.33h | 0d | start no earlier than 2011-11-04 | Joe George [60%]; David Ervin [60%] | 40h |
| 15 | 1.1.3.2 | Integration Testing | 33.33h | 2011-12-09 A |  |  | 33.33h | 0d | start no earlier than 2011-11-04 | Joe George [60%]; David Ervin [60%] | 40h |
| 16 | 1.1.4 | **App Scan** | 28h | 2011-12-15 A | 13 |  | 28h | 0d |  |  | 32h |
| 17 | 1.1.4.1 | Perform App Scan Process | 8h | 2011-12-15 A |  |  | 8h | 0d | start no earlier than 2011-11-04 |  | 8h |
| 18 | 1.1.4.2 | Fix App Scan issues | 20h | 2011-12-16 A | 17 |  | 20h | 0d | start no earlier than 2011-11-04 | Joe George [60%]; David Ervin [60%] | 24h |
| 19 | 1.1.5 | **Deployment** | 62.67h | 2011-12-21 A | 16 |  | 62.67h | 0d |  |  | 64h |
| 20 | 1.1.5.1 | Move to Training and test | 16h | 2011-12-21 A |  |  | 16h | 0d | start no earlier than 2011-11-04 |  | 16h |
| 21 | 1.1.5.2 | Move to QA and test | 24h | 2011-12-23 A | 20 |  | 24h | 0d | start no earlier than 2011-11-04 |  | 24h |
| 22 | 1.1.5.3 | Move to Stage and test | 16h | 2011-12-28 A | 21 |  | 16h | 0d | start no earlier than 2011-11-04 |  | 16h |
| 23 | 1.1.5.4 | Move to Prod and test | 6.67h | 2011-12-30 A | 22 |  | 6.67h | 0d | start no earlier than 2011-11-04 | Joe George [60%]; David Ervin [60%] | 8h |
| 24 | 1.2 | **Iteration 2** | 296.68h | 2011-12-30 A | 2 |  | 296.68h | 0d |  |  | 308h |
| 25 | 1.2.1 | **Bug Fixes** | 140.01h | 2011-12-30 A |  |  | 140.01h | 0d |  |  | 96h |
| 26 | 1.2.1.1 | caGrid w/ SHA2 release | 133.34h | 2011-12-30 A |  |  | 133.34h | 0d | start no earlier than 2011-11-04 | Joe George [60%] | 80h |
| 27 | 1.2.1.2 | SHA-2 support | 8h | 2011-12-30 A |  |  | 8h | 0d | start no earlier than 2011-11-04 |  | 8h |
| 28 | 1.2.1.3 | Begin 1.5 Production Install | 6.67h | 2012-01-24 A |  |  | 6.67h | 0d | start no earlier than 2011-11-04 | David Ervin [60%]; Joe George [60%] | 8h |

Notes:
- 1: The release following the SHA 2 release, currently known as 1.6

| ID | WBS | Task | Duration | Start | Predecessors | Remaining | Total slack | Constraint | Resources | Work |
| --- | --- | --- | --- | --- | --- | --- | --- | --- | --- | --- |
| 29 | 1.2.2 | **Documentation** | 90h | 2012-01-25 A |  | 90h | 0d |  |  | 84h |
| 30 | 1.2.2.1 | Update all necessary documentation and guides | 50h | 2012-01-25 A |  | 50h | 0d | start no earlier than 2011-11-04 | Joe George [60%]; David Ervin [60%] | 60h |
| 31 | 1.2.2.2 | Create new install documentation | 40h | 2012-02-02 A |  | 40h | 0d | start no earlier than 2011-11-04 | Joe George [60%] | 24h |
| 32 | 1.2.3 | **Testing** | 296.68h | 2011-12-30 A |  | 296.68h | 0d |  |  | 80h |
| 33 | 1.2.3.1 | Unit Testing | 66.67h | 2012-02-09 A |  | 66.67h | 0d | start no earlier than 2011-11-04 | Joe George [60%] | 40h |
| 34 | 1.2.3.2 | Integration Testing | 66.67h | 2011-12-30 A |  | 66.67h | 0d | start no earlier than 2011-11-04 | David Ervin [60%] | 40h |
| 35 | 1.2.4 | **App Scan** | 8h | 2011-12-30 A |  | 8h | 0d |  |  | 16h |
| 36 | 1.2.4.1 | Perform App Scan Process | 8h | 2011-12-30 A |  | 8h | 0d | start no earlier than 2011-11-04 |  | 8h |
| 37 | 1.2.4.2 | Fix App Scan issues | 8h | 2011-12-30 A |  | 8h | 0d | start no earlier than 2011-11-04 |  | 8h |
| 38 | 1.2.5 | **Deployment** | 8h | 2011-12-30 A |  | 8h | 0d |  |  | 32h |
| 39 | 1.2.5.1 | Move to Training and test | 8h | 2011-12-30 A |  | 8h | 0d | start no earlier than 2011-11-04 |  | 8h |
| 40 | 1.2.5.2 | Move to QA and test | 8h | 2011-12-30 A |  | 8h | 0d | start no earlier than 2011-11-04 |  | 8h |
| 41 | 1.2.5.3 | Move to Stage and test | 8h | 2011-12-30 A |  | 8h | 0d | start no earlier than 2011-11-04 |  | 8h |
| 42 | 1.2.5.4 | Move to Prod and test | 8h | 2011-12-30 A |  | 8h | 0d | start no earlier than 2011-11-04 |  | 8h |
| 43 | 1.3 | **Iteration 3** | 8h | 2012-02-22 A | 24 | 8h | 0d |  |  | 240h |
| 44 | 1.3.1 | **Bug Fixes** | 8h | 2012-02-22 A |  | 8h | 0d |  |  | 168h |
| 45 | 1.3.1.1 | Upgraders for SDK 4.3 data services from 1.5 and 1.4 to 1.6 | 8h | 2012-02-22 A |  | 8h | 0d | start no earlier than 2011-11-04 |  | 8h |
| 46 | 1.3.1.2 | Technical Status Report | 8h | 2012-02-22 A |  | 8h | 0d | start no earlier than 2011-11-04 |  | 8h |
| 47 | 1.3.1.3 | Technical Project Plan | 8h | 2012-02-22 A |  | 8h | 0d | start no earlier than 2011-11-04 |  | 8h |
| 48 | 1.3.1.4 | Plan for a 1.4.1 release to follow 1.4 that adds Tomcat 6 & JBoss 5 support | 8h | 2012-02-22 A |  | 8h | 0d | start no earlier than 2011-11-04 |  | 8h |
| 49 | 1.3.1.5 | Fix projects in caGrid to use WS-Core artifacts from Ivy rather than relying on GLOBUS_LOCATION | 8h | 2012-02-22 A |  | 8h | 0d | start no earlier than 2011-11-04 |  | 8h |
| 50 | 1.3.1.6 | Figure out at what point the SDK data service is failing to serialize results | 8h | 2012-02-22 A |  | 8h | 0d | start no earlier than 2011-11-04 |  | 8h |
| 51 | 1.3.1.7 | FQP performance and scalability enhancements | 8h | 2012-02-22 A |  | 8h | 0d | start no earlier than 2011-11-04 |  | 8h |
| 52 | 1.3.1.8 | Possible bug: Missing jars when producing caCORE SDK 4.1 backed local grid services | 8h | 2012-02-22 A |  | 8h | 0d | start no earlier than 2011-11-04 |  | 8h |
| 53 | 1.3.1.9 | GAARDS UI Target Grid selector needs completely redone | 8h | 2012-02-22 A |  | 8h | 0d | start no earlier than 2011-11-04 |  | 8h |
| 54 | 1.3.1.10 | Error connecting to GridGrouper with an authenticated account | 8h | 2012-02-22 A |  | 8h | 0d | start no earlier than 2011-11-04 |  | 8h |
| 55 | 1.3.1.11 | Identify all secure services on the Production Grid | 8h | 2012-02-22 A |  | 8h | 0d | start no earlier than 2011-11-04 |  | 8h |
| 56 | 1.3.1.12 | Identify all secure services on the Training Grid | 8h | 2012-02-22 A |  | 8h | 0d | start no earlier than 2011-11-04 |  | 8h |
| 57 | 1.3.1.13 | A way to add new target grids to the top-level configure target | 8h | 2012-02-22 A |  | 8h | 0d | start no earlier than 2011-11-04 |  | 8h |
| 58 | 1.3.1.14 | Create new installation documentation | 8h | 2012-02-22 A |  | 8h | 0d | start no earlier than 2011-11-04 |  | 8h |
| 59 | 1.3.1.15 | Create upgrade documentation | 8h | 2012-02-22 A |  | 8h | 0d | start no earlier than 2011-11-04 |  | 8h |
| 60 | 1.3.1.16 | Inconsistent user and host search operation behavior | 8h | 2012-02-22 A |  | 8h | 0d | start no earlier than 2011-11-04 |  | 8h |
| 61 | 1.3.1.17 | Breakup the ws-core ivy module to have finer grain configurations | 8h | 2012-02-22 A |  | 8h | 0d | start no earlier than 2011-11-04 |  | 8h |
| 62 | 1.3.1.18 | Support Viewing/Signing Host Certificate Policies in GAARDS UI | 8h | 2012-02-22 A |  | 8h | 0d | start no earlier than 2011-11-04 |  | 8h |
| 63 | 1.3.1.19 | Implement support for viewing and digitally signing host policy agreement during host certificate request | 8h | 2012-02-22 A |  | 8h | 0d | start no earlier than 2011-11-04 |  | 8h |
| 64 | 1.3.1.20 | Modify build to have a resolver chain specific for target grids, and allow working with external grids | 8h | 2012-02-22 A |  | 8h | 0d | start no earlier than 2011-11-04 |  | 8h |
| 65 | 1.3.1.21 | Add support in installer to work with a list of supported target grid repositories | 8h | 2012-02-22 A |  | 8h | 0d | start no earlier than 2011-11-04 |  | 8h |

| ID | WBS | Task | Duration | Start | Remaining | Total slack | Constraint | Work |
| --- | --- | --- | --- | --- | --- | --- | --- | --- |
| 66 | 1.3.2 | **Documentation** | 8h | 2012-02-22 A | 8h | 0d |  | 8h |
| 67 | 1.3.2.1 | Update all necessary documentation and guides | 8h | 2012-02-22 A | 8h | 0d | start no earlier than 2011-11-04 | 8h |
| 68 | 1.3.3 | **Testing** | 8h | 2012-02-22 A | 8h | 0d |  | 16h |
| 69 | 1.3.3.1 | Unit Testing | 8h | 2012-02-22 A | 8h | 0d | start no earlier than 2011-11-04 | 8h |
| 70 | 1.3.3.2 | Integration Testing | 8h | 2012-02-22 A | 8h | 0d | start no earlier than 2011-11-04 | 8h |
| 71 | 1.3.4 | **App Scan** | 8h | 2012-02-22 A | 8h | 0d |  | 16h |
| 72 | 1.3.4.1 | Perform App Scan Process | 8h | 2012-02-22 A | 8h | 0d | start no earlier than 2011-11-04 | 8h |
| 73 | 1.3.4.2 | Fix App Scan issues | 8h | 2012-02-22 A | 8h | 0d | start no earlier than 2011-11-04 | 8h |
| 74 | 1.3.5 | **Deployment** | 8h | 2012-02-22 A | 8h | 0d |  | 32h |
| 75 | 1.3.5.1 | Move to Training and test | 8h | 2012-02-22 A | 8h | 0d | start no earlier than 2011-11-04 | 8h |
| 76 | 1.3.5.2 | Move to QA and test | 8h | 2012-02-22 A | 8h | 0d | start no earlier than 2011-11-04 | 8h |
| 77 | 1.3.5.3 | Move to Stage and test | 8h | 2012-02-22 A | 8h | 0d | start no earlier than 2011-11-04 | 8h |
| 78 | 1.3.5.4 | Move to Prod and test | 8h | 2012-02-22 A | 8h | 0d | start no earlier than 2011-11-04 | 8h |
