# 13XS487-Technical

Schedule from MS Project MPX, 2013-07-22 to 2014-09-18, A marks actual dates.

## Calendars

- Standard: Mon-Fri 08:00-12:00, 13:00-17:00; Sat-Sun off.

## Resources

| Resource |
| --- |
| Lantern Three Project Manager |
| Lantern Three Software Architect |
| NCI Documentation |
| NCI Project Officer |
| NCI Quality Assurance |
| NCI Systems |
| SAIC-F Technical Project Manager |

## Schedule

| ID | WBS | Task | Type | Duration | Start | Predecessors | Complete | Actual finish | Constraint | Resources |
| --- | --- | --- | --- | --- | --- | --- | --- | --- | --- | --- |
| 1 | 1 | Start | milestone | 0d | 2013-10-18 A |  | 100% | 2013-10-18 | start no earlier than 2013-10-18 |  |
| 2 | 2 | **caGrid Architectural Mentoring** |  |  | 2013-10-18 | 1 |  |  |  |  |
| 3 | 2.1 | caGrid Operations & Maintenance |  | 1y | 2013-10-18 | 1 |  |  |  | Lantern Three Project Manager; Lantern Three Software Architect |
| 4 | 3 | **caGrid 2.0 Cookbook Development** |  |  | 2013-10-18 | 1 | 20% |  |  |  |
| 5 | 3.1 | Start | milestone | 0d | 2013-10-18 A | 1 | 100% | 2013-10-18 |  |  |
| 6 | 3.2 | Upgrading caGrid Services 1.x to SHA-2 |  | 1w | 2013-10-18 A | 5 | 100% |  |  | Lantern Three Software Architect |
| 7 | 3.3 | Splitting Grid Service Containers <?> |  | 1w | 2013-10-18 | 5 |  |  |  | Lantern Three Software Architect |
| 8 | 3.4 | Developing services for caGrid 2.0 |  | 3w | 2013-10-18 | 5 |  |  |  | Lantern Three Software Architect |
| 9 | 3.5 | End | milestone | 0d | 2013-11-07 | 7, 6, 8 |  |  |  |  |
| 10 | 4 | **caGrid 2.0 Deployment** |  |  | 2013-07-22 |  | 95% |  |  |  |
| 11 | 4.1 | Start | milestone | 0d | 2013-10-18 A | 1 | 100% | 2013-10-18 |  |  |
| 12 | 4.2 | Documentation |  | 3w | 2013-10-18 A | 11 | 100% | 2013-12-02 |  | Lantern Three Software Architect |
| 13 | 4.3 | **Deployment** |  |  | 2013-07-22 |  | 95% |  |  |  |
| 14 | 4.3.1 | Architecture Review Checklist |  | 1w | 2013-07-22 A | 11 | 100% | 2013-07-26 |  | Lantern Three Project Manager |
| 15 | 4.3.2 | Deployment to NCI QA |  | 1w | 2013-10-21 A | 14 | 100% | 2013-10-25 |  | NCI Systems |
| 16 | 4.3.3 | QA Testing |  | 3w | 2013-10-28 A | 15 | 100% |  |  | NCI Quality Assurance |
| 17 | 4.3.4 | App Scan |  | 3d | 2013-11-18 | 16 |  |  |  | NCI Systems |
| 18 | 4.3.5 | **Training Grid** |  |  | 2013-10-18 |  | 100% | 2013-12-23 |  |  |
| 19 | 4.3.5.1 | Start |  | 0h | 2013-10-18 A | 11 | 100% | 2013-12-17 |  |  |
| 20 | 4.3.5.2 | Dorian |  | 1d | 2013-10-18 A | 19 | 100% | 2013-12-17 |  | Lantern Three Software Architect |
| 21 | 4.3.5.3 | Master GTS |  | 1d | 2013-10-18 A | 19 | 100% | 2013-12-17 |  | Lantern Three Software Architect |
| 22 | 4.3.5.4 | Slave GTS |  | 1d | 2013-10-18 A | 19 | 100% | 2013-12-17 |  | Lantern Three Software Architect |
| 23 | 4.3.5.5 | Index |  | 1d | 2013-10-18 A | 19 | 100% | 2013-12-17 |  | Lantern Three Software Architect |
| 24 | 4.3.5.6 | Grid Grouper |  | 1d | 2013-10-18 A | 19 | 100% | 2013-12-20 |  | Lantern Three Software Architect |
| 25 | 4.3.5.7 | MMS |  | 1d | 2013-10-18 A | 19 | 100% | 2013-12-22 |  | Lantern Three Software Architect |
| 26 | 4.3.5.8 | GME |  | 1d | 2013-10-18 A | 19 | 100% | 2013-12-23 |  | Lantern Three Software Architect |
| 27 | 4.3.5.9 | End |  | 0h | 2013-10-18 A | 21, 25, 20, 23, 24, 22, 26 | 100% | 2013-12-23 |  | Lantern Three Software Architect |
| 28 | 4.3.6 | Deployment to NCI Stage |  | 1w | 2013-11-21 | 17 |  |  |  | NCI Systems |
| 29 | 4.3.7 | Deployment to NCI Production |  | 1w | 2013-11-28 | 28 |  |  |  | NCI Systems |
| 30 | 4.3.8 | Deployment Support |  | 1.4w | 2013-12-05 | 16, 15, 17, 28, 29 |  |  |  |  |
| 31 | 4.3.9 | End |  | 0h | 2013-12-13 | 15, 29, 28, 16, 14, 30 |  |  |  |  |

Notes:
- 12: https://cagrid.org/display/caGrid20/Home
- 17: https://tracker.nci.nih.gov/browse/SECURITYTEAM-222

| ID | WBS | Task | Type | Duration | Start | Predecessors | Complete |
| --- | --- | --- | --- | --- | --- | --- | --- |
| 32 | 5 | **caGrid 2.1 Development** |  |  | 2013-12-30 |  | 2% |
| 33 | 5.1 | Start |  | 0h | 2013-12-30 A | 31 | 100% |
| 34 | 5.2 | **Service Development** |  |  | 2013-12-30 |  | 5% |
| 35 | 5.2.1 | Start |  | 0h | 2013-12-30 | 33 |  |
| 36 | 5.2.2 | MMS Service |  | 1.2w | 2013-12-30 | 35 |  |
| 37 | 5.2.3 | Index Service |  | 3w | 2013-12-30 | 35 |  |
| 38 | 5.2.4 | Authentication Service |  | 2w | 2013-12-30 | 35 |  |
| 39 | 5.2.5 | SyncGTS |  | 2w | 2013-12-30 A | 35 | 20% |
| 40 | 5.2.6 | End |  | 0h | 2014-01-17 | 36, 39, 37, 38 |  |
| 41 | 5.3 | **Other Activities** |  |  | 2013-12-30 |  |  |
| 42 | 5.3.1 | Start |  | 0h | 2013-12-30 | 33 |  |
| 43 | 5.3.2 | Project Management |  | 1w | 2013-12-30 | 42 |  |
| 44 | 5.3.3 | Training Grid Update |  | 1w | 2014-01-20 | 40 |  |
| 45 | 5.3.4 | Deployment Documentation |  | 2w | 2014-01-20 | 40 |  |
| 46 | 5.3.5 | SHA-2 |  | 0h | 2013-12-30 | 42 |  |
| 47 | 5.3.6 | WSRF Libraries |  | 0h | 2013-12-30 | 42 |  |
| 48 | 5.3.7 | Testing |  | 1.5w | 2014-01-20 | 40 |  |
| 49 | 5.3.8 | Target Grid |  | 0h | 2014-01-17 | 40 |  |
| 50 | 5.3.9 | Jenkins Setup |  | 1d | 2013-12-30 | 42 |  |
| 51 | 5.3.10 | Deployment Support |  | 3d | 2014-01-29 | 48 |  |
| 52 | 5.3.11 | End |  | 0h | 2014-01-31 | 50, 48, 49, 46, 45, 43, 47, 44 |  |
| 53 | 5.4 | End |  | 0h | 2014-01-31 | 52, 40 |  |
| 54 | 6 | End | milestone | 0d | 2014-09-18 | 53, 4, 9, 31, 3, 2 |  |
