# 13XS487-Technical

Schedule from MS Project XML, 2013-07-22 to 2014-09-18, A marks actual dates.

## Calendars

- Standard: Mon-Fri 08:00-12:00, 13:00-17:00; Sat-Sun off.

## Resources

| Resource |
| --- |
| Lantern Three Project Manager |
| Lantern Three Software Architect |
| NCI Documentation |
| NCI Project Officer |
| NCI Quality Assurance |
| NCI Systems |
| SAIC-F Technical Project Manager |

## Schedule

| ID | WBS | Task | Type | Duration | Start | Predecessors | Complete | Actual finish | Total slack | Constraint | Resources | Work | Actual work |
| --- | --- | --- | --- | --- | --- | --- | --- | --- | --- | --- | --- | --- | --- |
| 1 | 1 | Start | milestone | 0h | 2013-10-18 A |  | 100% | 2013-10-18 |  | start no earlier than 2013-10-18 |  |  |  |
| 2 | 2 | **caGrid Architectural Mentoring** |  | 0d | 2013-10-18 | 1 |  |  | 0d |  |  |  |  |
| 3 | 2.1 | caGrid Operations & Maintenance |  | 240d | 2013-10-18 | 1 |  |  | 0d |  | Lantern Three Software Architect; Lantern Three Project Manager |  |  |
| 4 | 3 | **caGrid 2.0 Cookbook Development** |  | 0d | 2013-10-18 | 1 | 20% |  | 0d |  |  |  |  |
| 5 | 3.1 | Start | milestone | 0h | 2013-10-18 A | 1 | 100% | 2013-10-18 |  |  |  |  |  |
| 6 | 3.2 | Upgrading caGrid Services 1.x to SHA-2 |  | 1w | 2013-10-18 A | 5 | 100% |  | 0d |  | Lantern Three Software Architect | 40h |  |
| 7 | 3.3 | Splitting Grid Service Containers <?> |  | 1w | 2013-10-18 | 5 |  |  | 0d |  | Lantern Three Software Architect | 40h |  |
| 8 | 3.4 | Developing services for caGrid 2.0 |  | 3w | 2013-10-18 | 5 |  |  | 0d |  | Lantern Three Software Architect | 120h |  |
| 9 | 3.5 | End | milestone | 0h | 2013-11-07 | 6, 8, 7 |  |  | 0d |  |  |  |  |
| 10 | 4 | **caGrid 2.0 Deployment** |  | 0d | 2013-07-22 |  | 95% |  | 0d |  |  |  |  |
| 11 | 4.1 | Start | milestone | 0h | 2013-10-18 A | 1 | 100% | 2013-10-18 |  |  |  |  |  |
| 12 | 4.2 | Documentation |  | 1.6mo | 2013-10-18 A | 11 | 100% | 2013-12-02 |  |  | Lantern Three Software Architect | 120h |  |
| 13 | 4.3 | **Deployment** |  | 0d | 2013-07-22 |  | 95% |  | 0d |  |  |  |  |
| 14 | 4.3.1 | Architecture Review Checklist |  | 4.75d | 2013-07-22 A | 11 | 100% | 2013-07-26 |  |  | Lantern Three Project Manager | 40h |  |
| 15 | 4.3.2 | Deployment to NCI QA |  | 4.75d | 2013-10-21 A | 14 | 100% | 2013-10-25 |  |  | NCI Systems | 40h |  |
| 16 | 4.3.3 | QA Testing |  | 3w | 2013-10-28 A | 15 | 100% |  | 0d |  | NCI Quality Assurance | 120h |  |
| 17 | 4.3.4 | App Scan |  | 3d | 2013-11-18 | 16 |  |  | 0d |  | NCI Systems |  |  |
| 18 | 4.3.5 | **Training Grid** |  | 0d | 2013-10-18 |  | 100% | 2013-12-23 |  |  |  |  |  |
| 19 | 4.3.5.1 | Start |  | 2.15mo | 2013-10-18 A | 11 | 100% | 2013-12-17 |  |  |  |  | 344h |
| 20 | 4.3.5.2 | Dorian |  | 2.15mo? | 2013-10-18 A | 19 | 100% | 2013-12-17 |  |  | Lantern Three Software Architect | 8h |  |
| 21 | 4.3.5.3 | Master GTS |  | 2.15mo? | 2013-10-18 A | 19 | 100% | 2013-12-17 |  |  | Lantern Three Software Architect | 8h |  |
| 22 | 4.3.5.4 | Slave GTS |  | 2.15mo? | 2013-10-18 A | 19 | 100% | 2013-12-17 |  |  | Lantern Three Software Architect | 8h |  |
| 23 | 4.3.5.5 | Index |  | 2.15mo? | 2013-10-18 A | 19 | 100% | 2013-12-17 |  |  | Lantern Three Software Architect | 8h |  |
| 24 | 4.3.5.6 | Grid Grouper |  | 2.3mo? | 2013-10-18 A | 19 | 100% | 2013-12-20 |  |  | Lantern Three Software Architect | 8h |  |
| 25 | 4.3.5.7 | MMS |  | 2.3mo? | 2013-10-18 A | 19 | 100% | 2013-12-22 |  |  | Lantern Three Software Architect | 8h |  |
| 26 | 4.3.5.8 | GME |  | 2.35mo? | 2013-10-18 A | 19 | 100% | 2013-12-23 |  |  | Lantern Three Software Architect | 8h |  |
| 27 | 4.3.5.9 | End |  | 2.3mo | 2013-10-18 A | 22, 23, 24, 20, 25, 21, 26 | 100% | 2013-12-23 |  |  | Lantern Three Software Architect |  |  |
| 28 | 4.3.6 | Deployment to NCI Stage |  | 5d | 2013-11-21 | 17 |  |  | 0d |  | NCI Systems |  |  |
| 29 | 4.3.7 | Deployment to NCI Production |  | 5d | 2013-11-28 | 28 |  |  | 0d |  | NCI Systems |  |  |
| 30 | 4.3.8 | Deployment Support |  | 1.38w | 2013-12-05 | 29, 16, 15, 28, 17 |  |  | 0d |  |  | 55h |  |
| 31 | 4.3.9 | End |  | 0h | 2013-12-13 | 28, 30, 15, 29, 14, 16 |  |  | 0d |  |  |  |  |

Notes:
- 12: https://cagrid.org/display/caGrid20/Home
- 17: https://tracker.nci.nih.gov/browse/SECURITYTEAM-222

| ID | WBS | Task | Type | Duration | Start | Predecessors | Complete | Remaining | Total slack | Work | Actual work |
| --- | --- | --- | --- | --- | --- | --- | --- | --- | --- | --- | --- |
| 32 | 5 | **caGrid 2.1 Development** |  | 0d | 2013-12-30 |  | 2% |  | 0d |  |  |
| 33 | 5.1 | Start |  | 0h | 2013-12-30 A | 31 | 100% | 0h | 0d |  |  |
| 34 | 5.2 | **Service Development** |  | 0d | 2013-12-30 |  | 5% |  | 0d |  |  |
| 35 | 5.2.1 | Start |  | 0h | 2013-12-30 A | 33 | 8% | 0h | 0d |  |  |
| 36 | 5.2.2 | MMS Service |  | 1.25w | 2013-12-30 | 35 |  |  | 0d | 50h |  |
| 37 | 5.2.3 | Index Service |  | 3w | 2013-12-30 | 35 |  |  | 0d | 120h |  |
| 38 | 5.2.4 | Authentication Service |  | 2w | 2013-12-30 | 35 |  |  | 0d | 80h |  |
| 39 | 5.2.5 | SyncGTS |  | 2.1w | 2013-12-30 A | 35 | 20% | 1.68w | 0d | 84h | 16.8h |
| 40 | 5.2.6 | End |  | 0h | 2014-01-17 | 38, 36, 39, 37 |  |  | 0d |  |  |
| 41 | 5.3 | **Other Activities** |  | 0d | 2013-12-30 |  |  |  | 0d |  |  |
| 42 | 5.3.1 | Start |  | 0h | 2013-12-30 | 33 |  |  | 0d |  |  |
| 43 | 5.3.2 | Project Management |  | 1w | 2013-12-30 | 42 |  |  | 0d | 40h |  |
| 44 | 5.3.3 | Training Grid Update |  | 1w | 2014-01-20 | 40 |  |  | 0d | 40h |  |
| 45 | 5.3.4 | Deployment Documentation |  | 2w | 2014-01-20 | 40 |  |  | 0d | 80h |  |
| 46 | 5.3.5 | SHA-2 |  | 0h | 2013-12-30 | 42 |  |  | 0d |  |  |
| 47 | 5.3.6 | WSRF Libraries |  | 0h | 2013-12-30 | 42 |  |  | 0d |  |  |
| 48 | 5.3.7 | Testing |  | 1.5w | 2014-01-20 | 40 |  |  | 0d | 60h |  |
| 49 | 5.3.8 | Target Grid |  | 0h | 2014-01-17 | 40 |  |  | 0d |  |  |
| 50 | 5.3.9 | Jenkins Setup |  | 1d | 2013-12-30 | 42 |  |  | 0d | 8h |  |
| 51 | 5.3.10 | Deployment Support |  | 3d | 2014-01-29 | 48 |  |  | 0d | 24h |  |
| 52 | 5.3.11 | End |  | 0h | 2014-01-31 | 48, 44, 47, 43, 45, 49, 50, 46 |  |  | 0d |  |  |
| 53 | 5.4 | End |  | 0h | 2014-01-31 | 52, 40 |  |  | 0d |  |  |
| 54 | 6 | End | milestone | 0h | 2014-09-18 | 31, 3, 9, 4, 53, 2 |  |  | 0d |  |  |
