# caGrid-1-4

Schedule from MS Project, 2009-09-04 to 2009-10-19.
caGrid 1.3
NCI CBIIT

## Calendars

- Standard: Mon-Fri 08:00-12:00, 13:00-17:00; Sat-Sun off.

## Resources

| Resource |
| --- |
| Scott Oster |
| Steve Langella |
| Shannon Hastings |
| David Ervin |
| Santhosh Garmilla |
| John Eisenschmidt |
| Knowledge Center |
| Carolyn Klinger |
| Quality Assurance |
| Systems |
| Manav Kher |
| Ravi Madduri |

## Schedule

| ID | WBS | Task | Type | Duration | Start | Finish | Predecessors | Total slack | Free slack | Constraint | Resources | Work |
| --- | --- | --- | --- | --- | --- | --- | --- | --- | --- | --- | --- | --- |
| 1 | 1.0 | **caGrid 1.4 Development** |  | 5d? | 2009-09-04 | 2009-09-10 |  | 0d |  |  |  | 202.2h |
| 2 | 1.1 | Start | milestone | 0d | 2009-09-04 | 2009-09-04 |  | 0d |  | start no earlier than 2009-09-04 |  |  |
| 3 | 1.2 | **Gold Compatibility** |  | 5d | 2009-09-04 | 2009-09-10 |  | 0d |  |  |  | 112h |
| 4 | 1.2.1 | Start | milestone | 0d | 2009-09-04 | 2009-09-04 | 2 | 32d |  |  |  |  |
| 5 | 1.2.2 | **Register Object and Metadata Models** |  | 5d | 2009-09-04 | 2009-09-10 |  | 0d |  |  | John Eisenschmidt | 112h |
| 6 | 1.3.3.1 | Start | milestone | 0d | 2009-09-04 | 2009-09-04 | 2 | 0d |  |  | John Eisenschmidt |  |
| 7 | 1.3.3.2 | CQL |  | 5d | 2009-09-04 | 2009-09-10 | 6 | 0d |  |  | John Eisenschmidt | 40h |
| 8 | 1.2.2.3 | CQL Results |  | 2d | 2009-09-04 | 2009-09-07 | 6 | 3d |  |  | John Eisenschmidt | 16h |
| 9 | 1.2.2.4 | Data Services Object Model |  | 2d | 2009-09-04 | 2009-09-07 | 6 | 3d |  |  | John Eisenschmidt | 16h |
| 10 | 1.2.2.5 | Finish | milestone | 0d | 2009-09-10 | 2009-09-10 | 7, 8, 9 | 0d |  |  | John Eisenschmidt |  |
| 11 | 1.2.3 | Finish | milestone | 0d | 2009-09-10 | 2009-09-10 | 10 | 0d |  |  |  |  |
| 12 | 1.3 | **caCORE Integration** |  | 0d | 2009-09-04 | 2009-09-04 |  | 5d |  |  |  |  |
| 13 | 1.3.1 | Start | milestone | 0d | 2009-09-04 | 2009-09-04 | 2 | 5d | 0d |  |  |  |
| 14 | 1.3.2 | Finish | milestone | 0d | 2009-09-04 | 2009-09-04 | 13 | 5d |  |  |  |  |
| 15 | 1.4 | **Bug Fixes** |  | 0d | 2009-09-04 | 2009-09-04 |  | 5d |  |  |  |  |
| 16 | 1.4.1 | Start | milestone | 0d | 2009-09-04 | 2009-09-04 | 2 | 5d | 0d |  |  |  |
| 17 | 1.4.2 | Finish | milestone | 0d | 2009-09-04 | 2009-09-04 | 16 | 5d |  |  |  |  |
| 18 | 1.5 | **WebSSO** |  | 0d | 2009-09-04 | 2009-09-04 |  | 5d |  |  |  |  |
| 19 | 1.5.1 | Start | milestone | 0d | 2009-09-04 | 2009-09-04 | 2 | 5d | 0d |  |  |  |
| 20 | 1.5.2 | Finish | milestone | 0d | 2009-09-04 | 2009-09-04 | 19 | 5d |  |  |  |  |
| 21 | 1.6 | **Continuous Innovation** |  | 5d? | 2009-09-04 | 2009-09-10 |  | 0d |  |  |  | 90.2h |
| 22 | 1.6.1 | Start | milestone | 0d | 2009-09-04 | 2009-09-04 | 2 | 4d | 0d |  |  |  |
| 23 | 5.3 | Support common technology stack for caGrid infrastructure |  | 1d? | 2009-09-04 | 2009-09-04 | 22 | 4d |  |  | Knowledge Center | 8h |
| 24 | 1.6.3 | **Update installer** |  | 0d | 2009-09-10 | 2009-09-10 |  | 0d |  |  |  |  |
| 25 | 1.6.3.1 | Start | milestone | 0d | 2009-09-10 | 2009-09-10 | 50 | 0d |  |  |  |  |
| 26 | 1.6.3.2 | Finish | milestone | 0d | 2009-09-10 | 2009-09-10 | 25 | 0d |  |  |  |  |

| ID | WBS | Task | Type | Duration | Start | Finish | Predecessors | Total slack | Free slack | Constraint | Resources | Work |
| --- | --- | --- | --- | --- | --- | --- | --- | --- | --- | --- | --- | --- |
| 27 | 1.6.4 | **Update core caGrid Services using Introduce 1.4** |  | 1d? | 2009-09-04 | 2009-09-04 |  | 4d |  |  | David Ervin [80%]; Shannon Hastings [80%]; Steve Langella [80%]; Scott Oster [50%] | 82.2h |
| 28 | 1.6.4.1 | Start | milestone | 0d | 2009-09-04 | 2009-09-04 | 46 | 4d | 0d | start no earlier than 2008-07-17 |  |  |
| 29 | 1.6.4.2 | Dorian |  | 1d? | 2009-09-04 | 2009-09-04 | 28 | 4d | 0d | start no earlier than 2008-07-17 | Steve Langella [80%] | 6.4h |
| 30 | 1.6.4.3 | Authentication Service |  | 1d? | 2009-09-04 | 2009-09-04 | 28 | 4d | 0d | start no earlier than 2008-07-17 | Steve Langella [80%] | 6.4h |
| 31 | 1.6.4.4 | GTS Master |  | 1d? | 2009-09-04 | 2009-09-04 | 28 | 4d | 0d | start no earlier than 2008-07-17 | Steve Langella [80%] | 6.4h |
| 32 | 1.6.4.5 | GTS Slave |  | 1d? | 2009-09-04 | 2009-09-04 | 28 | 4d | 0d | start no earlier than 2008-07-17 | Steve Langella [80%] | 6.4h |
| 33 | 1.6.4.6 | CDS |  | 1d? | 2009-09-04 | 2009-09-04 | 28 | 4d | 0d | start no earlier than 2008-07-17 | Steve Langella [80%] | 6.4h |
| 34 | 1.6.4.7 | Grouper |  | 1d? | 2009-09-04 | 2009-09-04 | 28 | 4d | 0d | start no earlier than 2008-07-17 | Steve Langella [80%] | 6.4h |
| 35 | 1.6.4.8 | GME |  | 1d? | 2009-09-04 | 2009-09-04 | 28 | 4d | 0d | start no earlier than 2008-07-17 | Scott Oster [50%] | 4h |
| 36 | 1.6.4.9 | FQP |  | 1d? | 2009-09-04 | 2009-09-04 | 28 | 4d | 0d | start no earlier than 2008-07-17 | David Ervin [80%] | 6.4h |
| 37 | 1.6.4.10 | MMS |  | 1d? | 2009-09-04 | 2009-09-04 | 28 | 4d | 0d |  | Scott Oster [50%] | 4h |
| 38 | 1.6.4.11 | Workflow |  | 1d? | 2009-09-04 | 2009-09-04 | 28 | 4d | 0d | start no earlier than 2008-07-17 | Ravi Madduri | 8h |
| 39 | 1.6.4.12 | Finish | milestone | 0d | 2009-09-04 | 2009-09-04 | 38, 29, 30, 31, 32, 33, 34, 35, 36, 37 | 4d |  | start no earlier than 2008-07-17 |  |  |
| 40 | 1.6.5 | Finish | milestone | 0d | 2009-09-10 | 2009-09-10 | 23, 26, 39 | 0d |  |  |  |  |
| 41 | 1.7 | **Data Services** |  | 0d | 2009-09-04 | 2009-09-04 |  | 5d |  |  |  |  |
| 42 | 1.7.1 | Start | milestone | 0d | 2009-09-04 | 2009-09-04 | 2 | 5d | 0d |  |  |  |
| 43 | 1.7.2 | Finish | milestone | 0d | 2009-09-04 | 2009-09-04 | 42 | 5d |  |  |  |  |
| 44 | 1.8 | **Introduce** |  | 0d | 2009-09-04 | 2009-09-04 |  | 4d |  |  |  |  |
| 45 | 1.8.1 | Start | milestone | 0d | 2009-09-04 | 2009-09-04 | 2 | 4d | 0d |  |  |  |
| 46 | 1.8.2 | Finish | milestone | 0d | 2009-09-04 | 2009-09-04 | 45 | 4d | 0d |  |  |  |
| 47 | 1.9 | **Security** |  | 0d | 2009-09-04 | 2009-09-04 |  | 5d |  |  |  |  |
| 48 | 1.9.1 | Start | milestone | 0d | 2009-09-04 | 2009-09-04 | 2 | 5d | 0d |  |  |  |
| 49 | 1.9.2 | Finish | milestone | 0d | 2009-09-04 | 2009-09-04 | 48 | 5d |  |  |  |  |
| 50 | 1.10 | Code Freeze | milestone | 0d | 2009-09-10 | 2009-09-10 | 11, 14, 17, 20, 43, 46, 49 | 0d |  |  |  |  |
| 51 | 1.11 | Finish | milestone | 0d | 2009-09-10 | 2009-09-10 | 40 | 0d |  | finish no earlier than 2009-01-02 |  |  |

| ID | WBS | Task | Type | Duration | Start | Finish | Predecessors | Total slack | Free slack | Constraint | Resources | Work |
| --- | --- | --- | --- | --- | --- | --- | --- | --- | --- | --- | --- | --- |
| 52 | 2.0 | **caGrid 1.4 Transition** |  | 27d? | 2009-09-10 | 2009-10-19 |  | 0d |  |  |  | 538.4h |
| 53 | 2.1 | Start | milestone | 0d | 2009-09-10 | 2009-09-10 | 51 | 0d |  |  |  |  |
| 54 | 2.2 | **Documentation** |  | 6.14d? | 2009-09-10 | 2009-09-21 |  | 20.86d |  |  |  | 83.2h |
| 55 | 2.2.1 | Start | milestone | 0d | 2009-09-10 | 2009-09-10 | 53 | 20.86d | 0d |  |  |  |
| 56 | 2.2.2 | Developers Update Admin Guide |  | 2.5d? | 2009-09-11 | 2009-09-15 | 55 | 20.86d | 0d |  | Carolyn Klinger | 20h |
| 57 | 2.2.3 | Documentation Team Update Admin Guide |  | 0.51d? | 2009-09-15 | 2009-09-16 | 56 | 23.24d | 2.38d |  | Carolyn Klinger; Steve Langella [80%]; Scott Oster [50%]; Shannon Hastings [80%]; David Ervin [80%] | 8h |
| 58 | 2.2.4 | Developer Update User Guide |  | 1.28d? | 2009-09-15 | 2009-09-17 | 56 | 20.86d | 0d |  | Carolyn Klinger; David Ervin [80%]; Scott Oster [50%]; Shannon Hastings [80%]; Steve Langella [80%] | 20h |
| 59 | 2.2.5 | Documentation Team Update User Guide |  | 1d? | 2009-09-17 | 2009-09-18 | 58 | 21.86d | 1d |  | Scott Oster [50%]; Steve Langella [80%]; Shannon Hastings [80%]; David Ervin [80%] | 23.2h |
| 60 | 2.2.6 | Developers Update Programmer Guide |  | 1d? | 2009-09-17 | 2009-09-18 | 58 | 20.86d | 0d |  |  |  |
| 61 | 2.2.7 | Documentation Team Update Programmer Guide |  | 1d? | 2009-09-18 | 2009-09-21 | 60 | 20.86d | 0d |  |  |  |
| 62 | 2.2.8 | Development Team Update Design Docs |  | 1d? | 2009-09-18 | 2009-09-21 | 60 | 20.86d | 0d |  |  |  |
| 63 | 2.2.6 | Update caGrid overview |  | 1d? | 2009-09-11 | 2009-09-11 | 55 | 26d | 5.14d |  | Scott Oster [50%]; John Eisenschmidt | 12h |
| 64 | 2.2.8 | Finish | milestone | 0d | 2009-09-21 | 2009-09-21 | 56, 57, 58, 59, 60, 61, 62, 63 | 20.86d |  |  |  |  |
| 65 | 2.3 | **Quality Assurance** |  | 21d? | 2009-09-10 | 2009-10-09 |  | 0d |  |  |  | 256h |
| 66 | 2.3.1 | Start | milestone | 0d | 2009-09-10 | 2009-09-10 | 53 | 0d |  | start no earlier than 2009-01-26 |  |  |
| 67 | 2.3.2 | Redeploy QA Grid |  | 5d | 2009-09-11 | 2009-09-17 | 66 | 21d | 0d | start no earlier than 2009-02-16 |  |  |
| 68 | 2.3.3 | Test GME |  | 1d? | 2009-09-18 | 2009-09-18 | 67 | 21d |  |  | Quality Assurance | 8h |
| 69 | 2.3.4 | Test caDSR Replacement |  | 1d? | 2009-09-11 | 2009-09-11 | 66 | 26d |  |  | Quality Assurance | 8h |
| 70 | 2.3.5 | Test WebSSO |  | 1d? | 2009-09-11 | 2009-09-11 | 66, 20 | 26d |  |  | Quality Assurance | 8h |
| 71 | 2.3.6 | Test release on new tech stack |  | 1d? | 2009-09-11 | 2009-09-11 | 66 | 26d |  |  | Quality Assurance | 8h |
| 72 | 2.3.7 | Test Introduce |  | 5d | 2009-09-11 | 2009-09-17 | 66 | 22d |  |  | Quality Assurance | 40h |
| 73 | 2.3.8 | Test Security |  | 1d? | 2009-09-11 | 2009-09-11 | 66, 49 | 26d |  |  | Quality Assurance | 8h |
| 74 | 2.3.9 | Test Data Services |  | 1d? | 2009-09-11 | 2009-09-11 | 66, 43 | 26d |  |  | Quality Assurance | 8h |
| 75 | 2.3.10 | Test caGrid 1.3 Grid Services |  | 1d? | 2009-09-11 | 2009-09-11 | 66 | 0d |  |  | Quality Assurance | 8h |
| 76 | 2.3.11 | Test QA integration scenarios |  | 20d | 2009-09-14 | 2009-10-09 | 75 | 0d |  |  | Quality Assurance | 160h |
| 77 | 2.3.12 | Finish | milestone | 0d | 2009-10-09 | 2009-10-09 | 76 | 0d |  |  | Quality Assurance |  |

| ID | WBS | Task | Type | Duration | Start | Finish | Predecessors | Total slack | Free slack | Constraint | Resources | Work |
| --- | --- | --- | --- | --- | --- | --- | --- | --- | --- | --- | --- | --- |
| 78 | 2.4 | **Deployment** |  | 27d? | 2009-09-10 | 2009-10-19 |  | 0d |  |  |  | 199.2h |
| 79 | 2.4.1 | Start | milestone | 0d | 2009-09-10 | 2009-09-10 | 53 | 21.08d | 0d | start no earlier than 2009-01-26 |  |  |
| 80 | 2.4.2 | Create release notes |  | 1d? | 2009-09-14 | 2009-09-14 | 79 | 23d | 0d |  | Scott Oster [50%] | 4h |
| 81 | 2.4.3 | Create 1.4 target_grid configurations |  | 2d? | 2009-09-15 | 2009-09-16 | 80 | 23d |  |  | Scott Oster [50%] | 8h |
| 82 | 2.4.4 | **Create 1.4 release branch in CVS** |  | 1d | 2009-10-09 | 2009-10-12 |  | 5d |  |  |  | 12h |
| 83 | 2.4.4.1 | Start | milestone | 0d | 2009-10-09 | 2009-10-09 | 77 | 5d | 0d |  |  |  |
| 84 | 2.4.4.2 | Update project versions |  | 1d | 2009-10-12 | 2009-10-12 | 83 | 5d | 0d |  | Scott Oster [50%] | 4h |
| 85 | 2.4.4.3 | update eclipse projects |  | 1d | 2009-10-12 | 2009-10-12 | 83 | 5d | 0d |  | Scott Oster [50%] | 4h |
| 86 | 2.4.4.4 | remove any projects which wont be released in 1.4 |  | 1d | 2009-10-12 | 2009-10-12 | 83 | 5d | 0d |  | Scott Oster [50%] | 4h |
| 87 | 2.4.4.5 | Finish | milestone | 0d | 2009-10-12 | 2009-10-12 | 84, 85, 86 | 5d |  |  |  |  |
| 88 | 2.4.5 | Update LICENSE |  | 1d? | 2009-09-11 | 2009-09-11 | 79 | 21.08d | 0d |  | John Eisenschmidt | 8h |
| 89 | 2.4.7 | Validate core services' metadata |  | 2d? | 2009-09-11 | 2009-09-14 | 79 | 24d |  |  | Shannon Hastings [80%]; Steve Langella [80%]; Scott Oster [50%]; David Ervin [80%] | 23.2h |
| 90 | 2.4.8 | publish release IVY repositories |  | 3d? | 2009-09-14 | 2009-09-16 | 79 | 22d |  |  | Scott Oster [50%] | 12h |
| 91 | 2.4.9 | create installer release |  | 2d? | 2009-09-14 | 2009-09-15 | 88 | 21.08d | 0d |  | Scott Oster [50%] | 8h |
| 92 | 2.4.10 | post installer properties file to FTP site |  | 2d? | 2009-09-11 | 2009-09-14 | 79 | 25d |  |  | Scott Oster [50%]; Systems | 12h |
| 93 | 2.4.11 | create gforge release |  | 2d? | 2009-09-14 | 2009-09-15 | 79 | 23d |  |  | Scott Oster [50%] | 8h |
| 94 | 2.4.12 | Write Deployment Instructions |  | 1.92d? | 2009-09-14 | 2009-09-15 | 79 | 24.08d |  |  | Steve Langella [80%]; Scott Oster [50%] | 20h |
| 95 | 2.4.14 | Redeploy Training Grid |  | 1.92d? | 2009-09-16 | 2009-09-17 | 91 | 21.08d |  |  | Steve Langella [80%]; Scott Oster [50%] | 20h |
| 96 | 2.4.15 | Redeploy Staging Grid |  | 2.5d? | 2009-10-12 | 2009-10-14 | 77 | 0d |  |  | Systems | 20h |
| 97 | 2.4.16 | Redeploy Production Grid |  | 2.5d? | 2009-10-14 | 2009-10-16 | 96 | 0d |  |  | Systems | 20h |
| 98 | 2.4.17 | Update Zope / Plome |  | 1d? | 2009-09-11 | 2009-09-11 | 79 | 25d |  |  | John Eisenschmidt | 8h |
| 99 | 2.4.18 | Update gforge |  | 1d? | 2009-09-11 | 2009-09-11 | 79 | 25d |  |  | John Eisenschmidt | 8h |
| 100 | 2.4.19 | Send Release Announcement |  | 1d? | 2009-10-19 | 2009-10-19 | 97, 98, 99, 95, 93, 89, 90 | 0d |  |  | John Eisenschmidt | 8h |
| 101 | 2.4.20 | Finish | milestone | 0d | 2009-10-19 | 2009-10-19 | 100 | 0d |  |  |  |  |
| 102 | 2.5 | Finish | milestone | 0d | 2009-10-19 | 2009-10-19 | 101 | 0d |  |  |  |  |

Notes:
- 95: In the past, we have deployed the training grid before other tiers, as we develop the deployment process document in doing so
