# caGrid-1-4

Schedule from MS Project XML, 2009-10-01 to 2009-11-06, A marks actual dates.

## Calendars

- Standard: Mon-Fri 08:00-12:00, 13:00-17:00; Sat-Sun off.

## Resources

| Resource |
| --- |
| Calixto Melean |
| Carolyn Klinger |
| David Ervin |
| Dinanath Sulakhe |
| John Eisenschmidt |
| Knowledge Center |
| Manav Kher |
| Quality Assurance |
| Ravi Madduri |
| Santhosh Garmilla |
| Scott Oster |
| Shannon Hastings |
| Steve Langella |
| Systems |
| Wei Tan |

## Schedule

| ID | WBS | Task | Type | Duration | Start | Predecessors | Actual finish | Total slack | Resources | Work |
| --- | --- | --- | --- | --- | --- | --- | --- | --- | --- | --- |
| 1 | 1 | **caGrid 1.4 Development** |  | 0d | 2009-10-01 |  |  | 0d |  |  |
| 2 | 1.1 | Start | milestone | 0h | 2009-10-01 A |  | 2009-10-01 |  |  |  |
| 3 | 1.2 | **Bug Fixes** |  | 0d | 2009-10-01 |  |  | 0d |  |  |
| 4 | 1.2.1 | Start | milestone | 0h | 2009-10-01 A | 2 | 2009-10-01 |  |  |  |
| 5 | 1.2.2 | Introduce generated WSDL breaks unique key contraint of WSDL XSD |  | 1d? | 2009-10-01 | 4 |  | 0d |  | 8h |
| 6 | 1.2.3 | Introduce is not passing any system properties on to it's ant calls it makes when running the engine. |  | 1d? | 2009-10-01 | 4 |  | 0d |  | 8h |
| 7 | 1.2.4 | Introduce creates cycles between sub-context's resource base and main service's config class |  | 1d? | 2009-10-01 | 4 |  | 0d |  | 8h |
| 8 | 1.2.5 | Introduce add/remove types panel hides some interface components at low resolutions |  | 1d? | 2009-10-01 | 4 |  | 0d |  | 8h |
| 9 | 1.2.6 | Introduce grid service path cannot contain spaces |  | 1d? | 2009-10-01 | 4 |  | 0d |  | 8h |
| 10 | 1.2.7 | Introduce add/remove types schema file selection bug |  | 1d? | 2009-10-01 | 4 |  | 0d |  | 8h |
| 11 | 1.2.8 | Introduce disallows hyphenated last names for Point of Contact |  | 1d? | 2009-10-01 | 4 |  | 0d |  | 8h |
| 12 | 1.2.9 | Introduce GUI can be used to add multiple exceptions of the same type to operations |  | 1d? | 2009-10-01 | 4 |  | 0d |  | 8h |
| 13 | 1.2.10 | Introduce-generated services create EPRs with an incorrect hostname |  | 1d? | 2009-10-01 | 4 |  | 0d |  | 8h |
| 14 | 1.2.11 | Infinite loop in Introduce updater |  | 1d? | 2009-10-01 | 4 |  | 0d |  | 8h |
| 15 | 1.2.12 | Multiple GAARDS documentation pages reference the "ui" target of projects which no longer exists |  | 1d? | 2009-10-01 | 4 |  | 0d |  | 8h |
| 16 | 1.2.13 | GAARDS UI does not display the 'Set As Default' button after authenticating |  | 1d? | 2009-10-01 | 4 |  | 0d |  | 8h |
| 17 | 1.2.14 | GAARDS generates error if certificate is not selected for viewing |  | 1d? | 2009-10-01 | 4 |  | 0d |  | 8h |
| 18 | 1.2.15 | Delegated Credential Types schema cannot be added to services via Introduce GUI |  | 1d? | 2009-10-01 | 4 |  | 0d |  | 8h |
| 19 | 1.2.16 | Installer overwrites the installed credentials if already installed credentials are selected |  | 1d? | 2009-10-01 | 4 |  | 0d |  | 8h |
| 20 | 1.2.17 | caGrid installer doesn't check Apache Tomcat version properly on Windows |  | 1d? | 2009-10-01 | 4 |  | 0d |  | 8h |
| 21 | 1.2.18 | Incorrect exception handling when deleting non-existant file |  | 1d? | 2009-10-01 | 4 |  | 0d |  | 8h |
| 22 | 1.2.19 | connector redirect ports are not set to correct value when using custom https port |  | 1d? | 2009-10-01 | 4 |  | 0d |  | 8h |
| 23 | 1.2.20 | The Transfer service intermittently and randomly loses callbacks on transfer contexts |  | 1d? | 2009-10-01 | 4 |  | 0d |  | 8h |
| 24 | 1.2.21 | Missing XML prolog on schemas causes SyncGTS exception in JBoss |  | 1d? | 2009-10-01 | 4 |  | 0d |  | 8h |
| 25 | 1.2.22 | secure service deployed on port 443 has a connect bug (connects to port 8443) |  | 1d? | 2009-10-01 | 4 |  | 0d |  | 8h |
| 26 | 1.2.23 | Cannot select update patch after clicking "Look for Updates" for custom update site |  | 1d? | 2009-10-01 | 4 |  | 0d |  | 8h |
| 27 | 1.2.24 | SDK41QueryProcessor does not set the password for non-static logins |  | 1d? | 2009-10-01 | 4 |  | 0d |  | 8h |
| 28 | 1.2.25 | websso packages sync description file |  | 6h | 2009-10-01 | 4 |  | 0d | Santhosh Garmilla [133.33%] | 8h |
| 29 | 1.2.26 | webSSO login does not work with CBIIT Authentication service |  | 1.5d | 2009-10-01 | 4 |  | 0d | Santhosh Garmilla [66.67%] | 8h |
| 30 | 1.2.27 | WebSSO not allowing AuthenticationProviders urls may be null |  | 6h | 2009-10-01 | 4 |  | 0d | Santhosh Garmilla [133.33%] | 8h |
| 31 | 1.2.28 | Finish | milestone | 0h | 2009-10-02 | 17, 11, 22, 16, 18, 25, 24, 10, 12, 15, 23, 6, 29, 13, 8, 28, 7, 20, 21, 19, 27, 26, 5, 14, 9 |  | 0d |  |  |

Notes:
- 1: https://gforge.nci.nih.gov/pm/task.php?group_project_id=1205&group_id=25&func=browse
- 3: https://gforge.nci.nih.gov/pm/task.php?func=detailtask&project_task_id=3045&group_id=25&group_project_id=1205
- 5: https://gforge.nci.nih.gov/tracker/?func=detail&aid=19045&group_id=25&atid=174
- 6: https://gforge.nci.nih.gov/tracker/?func=detail&aid=16898&group_id=25&atid=174
- 7: https://gforge.nci.nih.gov/tracker/?func=detail&aid=16898&group_id=25&atid=174
- 8: https://gforge.nci.nih.gov/tracker/?func=detail&aid=22795&group_id=25&atid=174
- 9: https://gforge.nci.nih.gov/tracker/?func=detail&aid=19306&group_id=25&atid=174
- 10: https://gforge.nci.nih.gov/tracker/?func=detail&aid=22804&group_id=25&atid=174
- 11: https://gforge.nci.nih.gov/tracker/?func=detail&aid=22096&group_id=25&atid=174
- 12: https://gforge.nci.nih.gov/tracker/?func=detail&aid=22515&group_id=25&atid=174
- 13: https://gforge.nci.nih.gov/tracker/?func=detail&aid=22308&group_id=25&atid=174
- 14: https://gforge.nci.nih.gov/tracker/?func=detail&aid=21065&group_id=25&atid=174
- 15: https://gforge.nci.nih.gov/tracker/?func=detail&aid=15609&group_id=25&atid=174
- 16: https://gforge.nci.nih.gov/tracker/?func=detail&aid=22807&group_id=25&atid=174
- 17: https://gforge.nci.nih.gov/tracker/?func=detail&aid=15611&group_id=25&atid=174
- 18: https://gforge.nci.nih.gov/tracker/?func=detail&aid=17666&group_id=25&atid=174
- 19: https://gforge.nci.nih.gov/tracker/?func=detail&aid=20196&group_id=25&atid=174
- 20: https://gforge.nci.nih.gov/tracker/?func=detail&aid=22275&group_id=25&atid=174
- 21: https://gforge.nci.nih.gov/tracker/?func=detail&aid=20375&group_id=25&atid=174
- 22: https://gforge.nci.nih.gov/tracker/?func=detail&aid=22815&group_id=25&atid=174
- 23: https://gforge.nci.nih.gov/tracker/?func=detail&aid=22321&group_id=25&atid=174
- 24: https://gforge.nci.nih.gov/tracker/?func=detail&aid=22891&group_id=25&atid=174
- 25: https://gforge.nci.nih.gov/tracker/?func=detail&aid=23120&group_id=25&atid=174
- 26: https://gforge.nci.nih.gov/tracker/?func=detail&aid=20679&group_id=25&atid=174
- 27: https://gforge.nci.nih.gov/tracker/?func=detail&aid=23252&group_id=25&atid=174
- 28: https://gforge.nci.nih.gov/tracker/?func=detail&aid=20171&group_id=25&atid=174
- 29: https://gforge.nci.nih.gov/tracker/?func=detail&aid=22830&group_id=25&atid=174
- 30: https://gforge.nci.nih.gov/tracker/?func=detail&aid=20774&group_id=25&atid=174

| ID | WBS | Task | Type | Duration | Start | Predecessors | Total slack | Resources | Work |
| --- | --- | --- | --- | --- | --- | --- | --- | --- | --- |
| 32 | 1.3 | **Continuous Innovation** |  | 0d | 2009-10-01 |  | 0d |  |  |
| 33 | 1.3.1 | Start | milestone | 0h | 2009-10-01 | 2 | 0d |  |  |
| 34 | 1.3.2 | Ability to Display Current Target Grid Information |  | 1d? | 2009-10-01 | 33 | 0d |  | 8h |
| 35 | 1.3.3 | Installer should Allow full directory browsing |  | 1d? | 2009-10-01 | 33 | 0d |  | 8h |
| 36 | 1.3.4 | Add support to resource property helper for client side authorization |  | 1d? | 2009-10-01 | 33 | 0d |  | 8h |
| 37 | 1.3.5 | Make gov.nih.nci.cagrid.common.FaultHelper more usable |  | 1d? | 2009-10-01 | 33 | 0d |  | 8h |
| 38 | 1.3.6 | Finish | milestone | 0h | 2009-10-01 | 33 | 0d |  |  |
| 39 | 1.4 | **Data Services** |  | 0d | 2009-10-01 |  | 0d |  |  |
| 40 | 1.4.1 | Start | milestone | 0h | 2009-10-01 | 2 | 0d |  |  |
| 41 | 1.4.2 | CQL - allow subclass specification |  | 1d? | 2009-10-01 | 40 | 0d | David Ervin | 8h |
| 42 | 1.4.3 | Implementation of Common Testing between Grid and SDK |  | 1d? | 2009-10-01 | 40 | 0d | David Ervin | 8h |
| 43 | 1.4.4 | Proxy Framework and XML serialization integration in Grid Service |  | 1d? | 2009-10-01 | 40 | 0d | David Ervin | 8h |
| 44 | 1.4.5 | XMI Reader API Integration in Introduce |  | 1d? | 2009-10-01 | 40 | 0d | David Ervin | 8h |
| 45 | 1.4.6 | DCQL (FQP) should support query modifiers |  | 1d? | 2009-10-01 | 40 | 0d | David Ervin | 8h |
| 46 | 1.4.7 | Investigate adding support for processing abstract types in both query and return |  | 1d? | 2009-10-01 | 40 | 0d | David Ervin | 8h |
| 47 | 1.4.8 | CQL/DCQL does not allow associations to target object to be returned |  | 1d? | 2009-10-01 | 40 | 0d | David Ervin | 8h |
| 48 | 1.4.9 | Specify additional allowable CQL Predicate value datatypes |  | 1d? | 2009-10-01 | 40 | 0d | David Ervin | 8h |
| 49 | 1.4.10 | Conditions on aggregate data |  | 1d? | 2009-10-01 | 40 | 0d | David Ervin | 8h |
| 50 | 1.4.11 | Backport CQL2 association traversal logic to CQL1 |  | 1d? | 2009-10-01 | 40 | 0d | David Ervin | 8h |
| 51 | 1.4.12 | CQL 2.0 |  | 1d? | 2009-10-01 | 40 | 0d | David Ervin | 8h |
| 52 | 1.4.13 | Design DCQL 2.0 |  | 1d? | 2009-10-01 | 40 | 0d | David Ervin | 8h |
| 53 | 1.4.14 | Design FQP Engine to Implement DCQL 2.0 |  | 1d? | 2009-10-02 | 52 | 0d | David Ervin | 8h |
| 54 | 1.4.15 | Implement DCQL 2.0 in FQP |  | 1d? | 2009-10-05 | 53 | 0d | David Ervin | 8h |
| 55 | 1.4.16 | Finish | milestone | 0h | 2009-10-05 | 45, 42, 48, 51, 46, 41, 49, 43, 44, 47, 50, 54 | 0d |  |  |

Notes:
- 32: https://gforge.nci.nih.gov/pm/task.php?func=detailtask&project_task_id=3056&group_id=25&group_project_id=1205
- 34: https://gforge.nci.nih.gov/tracker/index.php?func=detail&aid=19379&group_id=25&atid=2252
- 35: https://gforge.nci.nih.gov/tracker/index.php?func=detail&aid=20099&group_id=25&atid=2252
- 36: https://gforge.nci.nih.gov/tracker/index.php?func=detail&aid=20237&group_id=25&atid=2252
- 37: https://gforge.nci.nih.gov/tracker/index.php?func=detail&aid=20322&group_id=25&atid=2252
- 39: https://gforge.nci.nih.gov/pm/task.php?func=detailtask&project_task_id=3046&group_id=25&group_project_id=1205
- 41: https://gforge.nci.nih.gov/tracker/index.php?func=detail&aid=20228&group_id=25&atid=2252
- 42: https://gforge.nci.nih.gov/tracker/index.php?func=detail&aid=20221&group_id=25&atid=2252
- 43: https://gforge.nci.nih.gov/tracker/index.php?func=detail&aid=20220&group_id=25&atid=2252
- 44: https://gforge.nci.nih.gov/tracker/index.php?func=detail&aid=20217&group_id=25&atid=2252
- 45: https://gforge.nci.nih.gov/tracker/index.php?func=detail&aid=19997&group_id=25&atid=2252
- 46: https://gforge.nci.nih.gov/tracker/index.php?func=detail&aid=19994&group_id=25&atid=2252
- 47: https://gforge.nci.nih.gov/tracker/index.php?func=detail&aid=19992&group_id=25&atid=2252
- 48: https://gforge.nci.nih.gov/tracker/index.php?func=detail&aid=19990&group_id=25&atid=2252
- 49: https://gforge.nci.nih.gov/tracker/index.php?func=detail&aid=19268&group_id=25&atid=2252
- 50: https://gforge.nci.nih.gov/tracker/index.php?func=detail&aid=23740&group_id=25&atid=2252

| ID | WBS | Task | Type | Duration | Start | Predecessors | Total slack | Resources | Work |
| --- | --- | --- | --- | --- | --- | --- | --- | --- | --- |
| 56 | 1.5 | **Metadata Infrastructure** |  | 0d | 2009-10-01 |  | 0d |  |  |
| 57 | 1.5.1 | Start | milestone | 0h | 2009-10-01 | 2 | 0d |  |  |
| 58 | 1.5.2 | GME should provide a validate capability to validate a given XML document conforms to schemas that are stored in the GME |  | 1d? | 2009-10-01 | 57 | 0d | Scott Oster | 8h |
| 59 | 1.5.3 | Finish | milestone | 0h | 2009-10-01 | 58 | 0d |  |  |
| 60 | 1.6 | **Security Infrastructure** |  | 0d | 2009-10-01 |  | 0d |  |  |
| 61 | 1.6.1 | Start | milestone | 0h | 2009-10-01 | 2 | 0d |  |  |
| 62 | 1.6.2 | SyncGTS needs to use service property for sync description |  | 1d? | 2009-10-01 | 61 | 0d | Steve Langella | 8h |
| 63 | 1.6.3 | GridGrouper should provide a way for a user to request to be added to a (non-opt in) group |  | 1d? | 2009-10-01 | 61 | 0d | Steve Langella | 8h |
| 64 | 1.6.4 | Dorian should validate emails for new registrations |  | 1d? | 2009-10-01 | 61 | 0d | Steve Langella | 8h |
| 65 | 1.6.5 | Finish | milestone | 0h | 2009-10-01 | 64, 62, 63 | 0d |  |  |
| 66 | 1.7 | **WebSSO** |  | 0d | 2009-10-01 |  | 0d |  |  |
| 67 | 1.7.1 | Start | milestone | 0h | 2009-10-01 | 2 | 0d |  |  |
| 68 | 1.7.2 | Document UI changes to ja-sig CAS |  | 1d? | 2009-10-01 | 67 | 0d | Santhosh Garmilla | 8h |
| 69 | 1.7.3 | Enhance logging in websso modules |  | 1d? | 2009-10-01 | 67 | 0d | Santhosh Garmilla | 8h |
| 70 | 1.7.4 | Logout filter should not need delegation EPR |  | 1d? | 2009-10-01 | 67 | 0d | Santhosh Garmilla | 8h |
| 71 | 1.7.5 | prototype on Shibboleth |  | 1d? | 2009-10-01 | 67 | 0d | Santhosh Garmilla | 8h |
| 72 | 1.7.6 | Websso ivy artifacts should be more granular |  | 1d? | 2009-10-01 | 67 | 0d | Santhosh Garmilla | 8h |
| 73 | 1.7.7 | Finish | milestone | 0h | 2009-10-01 | 68, 72, 71, 69, 70 | 0d |  |  |
| 74 | 1.8 | **Workflow** |  | 0d | 2009-10-01 |  | 0d |  |  |
| 75 | 1.8.1 | Start | milestone | 0h | 2009-10-01 | 2 | 0d |  |  |
| 76 | 1.8.2 | Need workflow integration tests |  | 1d? | 2009-10-01 | 75 | 0d |  | 8h |
| 77 | 1.8.3 | BPEL workflow should support CDS integration |  | 1d? | 2009-10-01 | 75 | 0d |  | 8h |
| 78 | 1.8.4 | Taverna workflow should support CDS integration |  | 1d? | 2009-10-01 | 75 | 0d |  | 8h |
| 79 | 1.8.5 | Finish | milestone | 0h | 2009-10-01 | 77, 76, 78 | 0d |  |  |

Notes:
- 56: https://gforge.nci.nih.gov/pm/task.php?func=detailtask&project_task_id=3054&group_id=25&group_project_id=1205
- 58: https://gforge.nci.nih.gov/tracker/index.php?func=detail&aid=20190&group_id=25&atid=2252
- 60: https://gforge.nci.nih.gov/pm/task.php?func=detailtask&project_task_id=3051&group_id=25&group_project_id=1205
- 62: https://gforge.nci.nih.gov/tracker/index.php?func=detail&aid=20087&group_id=25&atid=2252
- 63: https://gforge.nci.nih.gov/tracker/index.php?func=detail&aid=20182&group_id=25&atid=2252
- 64: https://gforge.nci.nih.gov/tracker/index.php?func=detail&aid=20763&group_id=25&atid=2252
- 66: https://gforge.nci.nih.gov/pm/task.php?func=detailtask&project_task_id=3055&group_id=25&group_project_id=1205
- 68: https://gforge.nci.nih.gov/tracker/index.php?func=detail&aid=20229&group_id=25&atid=2252
- 69: https://gforge.nci.nih.gov/tracker/index.php?func=detail&aid=20401&group_id=25&atid=2252
- 70: https://gforge.nci.nih.gov/tracker/index.php?func=detail&aid=20411&group_id=25&atid=2252
- 71: https://gforge.nci.nih.gov/tracker/index.php?func=detail&aid=21125&group_id=25&atid=2252
- 72: https://gforge.nci.nih.gov/tracker/index.php?func=detail&aid=22958&group_id=25&atid=2252
- 74: https://gforge.nci.nih.gov/pm/task.php?func=detailtask&project_task_id=3052&group_id=25&group_project_id=1205
- 76: https://gforge.nci.nih.gov/tracker/index.php?func=detail&aid=20090&group_id=25&atid=2252
- 77: https://gforge.nci.nih.gov/tracker/index.php?func=detail&aid=23472&group_id=25&atid=2252
- 78: https://gforge.nci.nih.gov/tracker/index.php?func=detail&aid=23473&group_id=25&atid=2252

| ID | WBS | Task | Type | Duration | Start | Predecessors | Total slack | Constraint | Resources | Work |
| --- | --- | --- | --- | --- | --- | --- | --- | --- | --- | --- |
| 80 | 1.9 | **Service Development Infrastructure** |  | 0d | 2009-10-01 |  | 0d |  |  |  |
| 81 | 1.9.1 | Start | milestone | 0h | 2009-10-01 | 2 | 0d |  |  |  |
| 82 | 1.9.2 | Transfer Service Needs Standard Metadata |  | 1d? | 2009-10-01 | 81 | 0d |  | Shannon Hastings | 8h |
| 83 | 1.9.3 | caGrid Transfer should have its data model registered in caDSR |  | 1d? | 2009-10-01 | 81 | 0d |  | Shannon Hastings | 8h |
| 84 | 1.9.4 | Pass the ServiceInformation object into the NamespaceTypeDiscoveryComponent class |  | 1d? | 2009-10-01 | 81 | 0d |  | Shannon Hastings | 8h |
| 85 | 1.9.5 | Stabilize Introduce 1.4 |  | 1d? | 2009-10-02 | 82, 84, 83 | 0d |  | Shannon Hastings | 8h |
| 86 | 1.9.6 | Finish | milestone | 0h | 2009-10-02 | 85 | 0d |  |  |  |
| 87 | 1.10 | Code Freeze | milestone | 0h | 2009-10-05 | 59, 65, 79, 38, 31, 55, 73 | 0d |  |  |  |
| 88 | 1.11 | Finish | milestone | 0h | 2009-10-01 | 38 | 0d |  |  |  |
| 89 | 2 | **caGrid 1.4 Transition** |  | 0d | 2009-10-01 |  | 0d |  |  |  |
| 90 | 2.1 | Start | milestone | 0h | 2009-10-01 | 88 | 0d |  |  |  |
| 91 | 2.2 | **Documentation** |  | 0d | 2009-10-01 |  | 0d |  |  |  |
| 92 | 2.2.1 | Start | milestone | 0h | 2009-10-01 | 90 | 0d |  |  |  |
| 93 | 2.2.2 | Developers Update Admin Guide |  | 2.5d | 2009-10-01 | 92 | 0d |  | Carolyn Klinger | 20h |
| 94 | 2.2.3 | Documentation Team Update Admin Guide |  | 4.1h | 2009-10-05 | 93 | 0d |  | David Ervin [39.99%]; Shannon Hastings [39.99%]; Scott Oster [24.99%]; Steve Langella [39.99%]; Carolyn Klinger [49.99%] | 8h |
| 95 | 2.2.4 | Developer Update User Guide |  | 1.28d | 2009-10-05 | 93 | 0d |  | Steve Langella [39.99%]; Carolyn Klinger [50%]; David Ervin [39.99%]; Scott Oster [25%]; Shannon Hastings [40%] | 20h |
| 96 | 2.2.5 | Documentation Team Update User Guide |  | 1d | 2009-10-06 | 95 | 0d |  | Shannon Hastings [80%]; Scott Oster [50%]; Steve Langella [80%]; David Ervin [80%] | 23.2h |
| 97 | 2.2.6 | Developers Update Programmer Guide |  | 1d | 2009-10-06 | 95 | 0d |  |  |  |
| 98 | 2.2.7 | Documentation Team Update Programmer Guide |  | 1d | 2009-10-07 | 97 | 0d |  |  |  |
| 99 | 2.2.8 | Development Team Update Design Docs |  | 1d | 2009-10-07 | 97 | 0d |  |  |  |
| 100 | 2.2.9 | Update caGrid overview |  | 1d | 2009-10-01 | 92 | 0d |  | Scott Oster [50%]; John Eisenschmidt | 12h |
| 101 | 2.2.10 | Finish | milestone | 0h | 2009-10-08 | 93, 96, 100, 95, 97, 99, 94, 98 | 0d |  |  |  |
| 102 | 2.3 | **Quality Assurance** |  | 0d | 2009-10-01 |  | 0d |  |  |  |
| 103 | 2.3.1 | Start | milestone | 0h | 2009-10-01 | 90 | 0d | start no earlier than 2009-01-26 |  |  |
| 104 | 2.3.2 | Redeploy QA Grid |  | 1w | 2009-10-01 | 103 | 0d | start no earlier than 2009-02-16 |  |  |
| 105 | 2.3.3 | Test GME |  | 1d | 2009-10-08 | 104 | 0d |  | Quality Assurance | 8h |
| 106 | 2.3.4 | Test caDSR Replacement |  | 1d | 2009-10-01 | 103 | 0d |  | Quality Assurance | 8h |
| 107 | 2.3.5 | Test WebSSO |  | 1d | 2009-10-02 | 103, 73 | 0d |  | Quality Assurance | 8h |
| 108 | 2.3.6 | Test release on new tech stack |  | 1d | 2009-10-01 | 103 | 0d |  | Quality Assurance | 8h |
| 109 | 2.3.7 | Test Introduce |  | 1w | 2009-10-01 | 103 | 0d |  | Quality Assurance | 40h |
| 110 | 2.3.8 | Test Security |  | 1d | 2009-10-02 | 65, 103 | 0d |  | Quality Assurance | 8h |
| 111 | 2.3.9 | Test Data Services |  | 1d | 2009-10-06 | 103, 55 | 0d |  | Quality Assurance | 8h |
| 112 | 2.3.10 | Test caGrid 1.3 Grid Services |  | 1d | 2009-10-01 | 103 | 0d |  | Quality Assurance | 8h |
| 113 | 2.3.11 | Test QA integration scenarios |  | 1mo | 2009-10-02 | 112 | 0d |  | Quality Assurance | 160h |
| 114 | 2.3.12 | Finish | milestone | 0h | 2009-10-29 | 113 | 0d |  | Quality Assurance |  |

Notes:
- 80: https://gforge.nci.nih.gov/pm/task.php?func=detailtask&project_task_id=3053&group_id=25&group_project_id=1205
- 82: https://gforge.nci.nih.gov/tracker/index.php?func=detail&aid=20224&group_id=25&atid=2252
- 83: https://gforge.nci.nih.gov/tracker/index.php?func=detail&aid=20225&group_id=25&atid=2252
- 84: https://gforge.nci.nih.gov/tracker/index.php?func=detail&aid=21615&group_id=25&atid=2252

| ID | WBS | Task | Type | Duration | Start | Predecessors | Total slack | Constraint | Resources | Work |
| --- | --- | --- | --- | --- | --- | --- | --- | --- | --- | --- |
| 115 | 2.4 | **Deployment** |  | 0d | 2009-10-01 |  | 0d |  |  |  |
| 116 | 2.4.1 | Start | milestone | 0h | 2009-10-01 | 90 | 0d | start no earlier than 2009-01-26 |  |  |
| 117 | 2.4.2 | Create release notes |  | 1d | 2009-10-01 | 116 | 0d |  | Scott Oster [50%] | 4h |
| 118 | 2.4.3 | Create 1.4 target_grid configurations |  | 2d | 2009-10-01 |  | 0d |  | Scott Oster [50%] | 8h |
| 119 | 2.4.4 | **Create 1.4 release branch in CVS** |  | 0d | 2009-10-29 |  | 0d |  |  |  |
| 120 | 2.4.4.1 | Start | milestone | 0h | 2009-10-29 | 114 | 0d |  |  |  |
| 121 | 2.4.4.2 | Update project versions |  | 1d | 2009-10-30 | 120 | 0d |  | Scott Oster [50%] | 4h |
| 122 | 2.4.4.3 | update eclipse projects |  | 1d | 2009-10-30 | 120 | 0d |  | Scott Oster [50%] | 4h |
| 123 | 2.4.4.4 | remove any projects which wont be released in 1.4 |  | 1d | 2009-10-30 | 120 | 0d |  | Scott Oster [50%] | 4h |
| 124 | 2.4.4.5 | Finish | milestone | 0h | 2009-10-30 | 123, 122, 121 | 0d |  |  |  |
| 125 | 2.4.5 | Update LICENSE |  | 1d | 2009-10-01 | 116 | 0d |  | John Eisenschmidt | 8h |
| 126 | 2.4.6 | Validate core services' metadata |  | 2d | 2009-10-01 | 116 | 0d |  | Shannon Hastings [40%]; Steve Langella [40%]; Scott Oster [25%]; David Ervin [40%] | 23.2h |
| 127 | 2.4.7 | publish release IVY repositories |  | 3d | 2009-10-01 | 116 | 0d |  | Scott Oster [50%] | 12h |
| 128 | 2.4.8 | create installer release |  | 2d | 2009-10-02 | 125 | 0d |  | Scott Oster [50%] | 8h |
| 129 | 2.4.9 | post installer properties file to FTP site |  | 2d | 2009-10-01 | 116 | 0d |  | Scott Oster [25%]; Systems [50%] | 12h |
| 130 | 2.4.10 | create gforge release |  | 2d | 2009-10-01 | 116 | 0d |  | Scott Oster [50%] | 8h |
| 131 | 2.4.11 | Write Deployment Instructions |  | 1.92d | 2009-10-01 | 116 | 0d |  | Scott Oster [50%]; Steve Langella [80%] | 20h |
| 132 | 2.4.12 | Redeploy Training Grid |  | 1.92d | 2009-10-06 | 128 | 0d |  | Scott Oster [50%]; Steve Langella [80%] | 20h |
| 133 | 2.4.13 | Redeploy Staging Grid |  | 2.5d | 2009-10-30 | 114 | 0d |  | Systems | 20h |
| 134 | 2.4.14 | Redeploy Production Grid |  | 2.5d | 2009-11-03 | 133 | 0d |  | Systems | 20h |
| 135 | 2.4.15 | Update Zope / Plome |  | 1d | 2009-10-01 | 116 | 0d |  | John Eisenschmidt | 8h |
| 136 | 2.4.16 | Update gforge |  | 1d | 2009-10-01 | 116 | 0d |  | John Eisenschmidt | 8h |
| 137 | 2.4.17 | Send Release Announcement |  | 1d | 2009-11-06 | 126, 130, 132, 136, 135, 127, 134 | 0d |  | John Eisenschmidt | 8h |
| 138 | 2.4.18 | Finish | milestone | 0h | 2009-11-06 | 137 | 0d |  |  |  |
| 139 | 2.5 | Finish | milestone | 0h | 2009-11-06 | 138 | 0d |  |  |  |

Notes:
- 132: In the past, we have deployed the training grid before other tiers, as we develop the deployment process document in doing so
