# UC caGrid 1.0 Workflow Project

Schedule from MS Project, 2005-10-31 to 2006-10-27, status date 2006-01-03, A marks actual dates.
Argonne National Laboratory

## Calendars

- Standard: Mon-Fri 08:00-12:00, 13:00-17:00; Sat-Sun off. Exceptions (off unless hours are given): 2005-12-26 to 2005-12-30, 2006-09-30 08:00-12:00, 13:00-17:00.

## Resources

| Resource |
| --- |
| Scott Oster |
| Shannon Hastings |
| Steve Langella |
| Tahsin Kurc |
| Joel Saltz |
| Bill Allcock |
| Ravi Madduri |
| Mike Wilde |
| J |
| Jarek Gawor |

## Schedule

| ID | WBS | Task | Duration | Start | Finish | Predecessors | Complete | Remaining | Baseline start | Baseline finish | Baseline duration | Total slack | Free slack | Constraint | Resources | Work | Actual work |
| --- | --- | --- | --- | --- | --- | --- | --- | --- | --- | --- | --- | --- | --- | --- | --- | --- | --- |
| 1 | 1 | **caGrid 1.0 Workflow Engine** | 256d | 2005-10-31 A | 2006-10-27 |  | 50% | 129.16d | 2005-12-01 | 2006-08-01 | 169d? | 0d |  |  |  | 7720h | 3438h |
| 2 | 1.1 | **Workflow Engine Technical Plan** | 231d | 2005-10-31 A | 2006-09-25 |  | 76% | 55.95d |  |  |  | 20d |  |  |  | 1400h | 1090h |
| 3 | 1.1.1 | **Initial Investigation of ActiveBPEL Engine and Prototyping (Campaign 1)** | 11d | 2005-12-19 A | 2006-01-09 A | 29 | 100% |  |  |  |  |  |  |  |  | 88h | 88h |
| 4 | 1.1.1.1 | Download and install ActiveBPEL | 1d | 2005-12-19 A | 2005-12-19 A |  | 100% |  |  |  |  |  |  | start no earlier than 2005-12-19 | Ravi Madduri | 8h | 8h |
| 5 | 1.1.1.2 | Install, configure, and test the ActiveBPEL examples | 10d | 2005-12-20 A | 2006-01-09 A | 4 | 100% |  |  |  |  |  |  |  | Ravi Madduri | 80h | 80h |
| 6 | 1.1.2 | **Install and configure caGrid V0.5 (Campaign 2A)** | 8d | 2006-01-09 A | 2006-01-18 A | 3 | 100% |  |  |  |  |  |  |  |  | 64h | 64h |
| 7 | 1.1.2.1 | Download and install caGrid 0.5 | 1d | 2006-01-09 A | 2006-01-09 A |  | 100% |  |  |  |  |  |  | start no earlier than 2006-01-09 | Ravi Madduri | 8h | 8h |
| 8 | 1.1.2.2 | Read caGrid 0.5 Technical Guide | 2d | 2006-01-10 A | 2006-01-11 A | 7 | 100% |  |  |  |  |  |  |  | Ravi Madduri | 16h | 16h |
| 9 | 1.1.2.3 | Write example services using caGrid 0.5 | 5d | 2006-01-12 A | 2006-01-18 A | 8 | 100% |  |  |  |  |  |  |  | Ravi Madduri | 40h | 40h |
| 10 | 1.1.3 | **Install and configure caGrid V1.0 (Ravi Campign 2B)** | 17d | 2006-01-17 A | 2006-02-08 A | 6 | 100% |  |  |  |  |  |  |  |  | 128h | 128h |
| 11 | 1.1.3.1 | Download and install caGrid 1.0 from CVS | 1d | 2006-01-17 A | 2006-01-17 A |  | 100% |  |  |  |  |  |  |  | Ravi Madduri | 8h | 8h |
| 12 | 1.1.3.2 | Write example analytical WS-RF services using caGrid 1.0 | 10d | 2006-01-19 A | 2006-02-01 A | 11 | 100% |  |  |  |  |  |  |  | Ravi Madduri | 80h | 80h |
| 13 | 1.1.3.3 | Create example data services and data stores | 5d | 2006-02-02 A | 2006-02-08 A | 12 | 100% |  |  |  |  |  |  |  | Ravi Madduri | 40h | 40h |
| 14 | 1.1.4 | **Create example workflow using caGrid 1.0 example services** | 12d | 2006-02-09 A | 2006-02-24 A | 10 | 100% |  |  |  |  |  |  |  |  | 96h | 96h |
| 15 | 1.1.4.1 | Create and test example workflow of analytical and data services using Java | 2d | 2006-02-09 A | 2006-02-10 A |  | 100% |  |  |  |  |  |  |  | Ravi Madduri | 16h | 16h |
| 16 | 1.1.4.2 | Create and test example workflow of analytical and data services using BPEL | 10d | 2006-02-13 A | 2006-02-24 A | 15 | 100% |  |  |  |  |  |  |  | Ravi Madduri | 80h | 80h |
| 17 | 1.1.5 | Add WFEngine and sample services to caGrid 1.0 CVS | 1d | 2006-02-28 A | 2006-02-28 A | 10 | 100% |  |  |  |  |  |  |  | Ravi Madduri | 8h | 8h |
| 18 | 1.1.6 | Add WFEngine to caGrid Build mechanism | 3d | 2006-03-01 A | 2006-03-03 A | 17 | 100% |  |  |  |  |  |  |  | Ravi Madduri | 24h | 24h |
| 19 | 1.1.7 | **Workflow Management Service** | 28d | 2006-05-01 A | 2006-06-07 |  | 77% | 6.5d |  |  |  | 65.75d | 0d |  |  | 264h | 212h |
| 20 | 1.1.7.1 | Design workflow management service | 5d | 2006-05-01 A | 2006-05-05 A |  | 100% |  |  |  |  |  |  | start no earlier than 2006-05-01 | Ravi Madduri; Mike Wilde | 80h | 80h |
| 21 | 1.1.7.2 | Initial Implement workflow management service | 10d | 2006-05-08 A | 2006-05-19 A | 20 | 100% |  |  |  |  |  |  |  | Ravi Madduri | 80h | 80h |
| 22 | 1.1.7.3 | Complete Implement workflow management service | 10d | 2006-05-22 A | 2006-06-02 | 21, 20 | 50% | 5d |  |  |  | 67.25d | 0d |  | Ravi Madduri | 80h | 40h |
| 23 | 1.1.7.4 | Test workflow management service | 3d | 2006-06-05 A | 2006-06-07 | 22 | 50% | 1.5d |  |  |  | 65.75d |  |  | Ravi Madduri | 24h | 12h |
| 24 | 1.1.8 | **Integrate Security into sample workflows and services** | 20d | 2006-06-08 A | 2006-07-05 | 19 | 75% | 5d |  |  |  | 50.75d | 0d |  |  | 200h | 160h |
| 25 | 1.1.8.1 | Determine WS-RF security wire protocol requirements | 5d | 2006-06-08 A | 2006-06-14 A |  | 100% |  |  |  |  |  |  |  | Ravi Madduri; Jarek Gawor | 80h | 80h |
| 26 | 1.1.8.2 | Determine where in BPEL engine processing to insert security fields | 5d | 2006-06-15 A | 2006-06-21 A | 25 | 100% |  |  |  |  |  |  |  | Ravi Madduri | 40h | 40h |
| 27 | 1.1.8.3 | Modify engine to insert security fields | 7d | 2006-06-22 A | 2006-06-30 | 26 | 50% | 3.5d |  |  |  | 52.25d | 0d |  | Ravi Madduri | 56h | 28h |
| 28 | 1.1.8.4 | Create and execute security tests | 3d | 2006-07-03 A | 2006-07-05 | 27 | 50% | 1.5d |  |  |  | 50.75d |  |  | Ravi Madduri | 24h | 12h |
| 29 | 1.1.9 | Create laboratory build and test environment | 3d | 2005-10-31 A | 2005-11-02 A |  | 100% |  |  |  |  |  |  |  | Ravi Madduri | 24h | 24h |

Notes:
- 5: Install and configure the samples provided in the website and understand the basic working of the engine.
- 12: At least 2 Services
- 13: Create example services for plain WS, WSRF, and some data services
- 14: This "example" workflow is executed using a Java program as a driver. No BPEL is involved
- 29: Allocate machines to work on / Create backup procedures / Install caGrid 0.5 and 1.0

| ID | WBS | Task | Type | Duration | Start | Finish | Predecessors | Complete | Remaining | Total slack | Free slack | Constraint | Resources | Work | Actual work |
| --- | --- | --- | --- | --- | --- | --- | --- | --- | --- | --- | --- | --- | --- | --- | --- |
| 30 | 1.1.10 | **Dynamic Service Selection** |  | 13d | 2006-07-06 | 2006-07-24 | 24 |  |  | 50.75d | 0d |  |  | 104h |  |
| 31 | 1.1.10.1 | Define workflow schema to permit dynamic service selection |  | 3d | 2006-07-06 | 2006-07-10 |  |  |  | 50.75d | 0d |  | Ravi Madduri | 24h |  |
| 32 | 1.1.10.2 | Create Sample caGriid Service Locator |  | 3d | 2006-07-11 | 2006-07-13 | 31 |  |  | 50.75d | 0d |  | Ravi Madduri | 24h |  |
| 33 | 1.1.10.3 | Create Sample caGriid Service Selector |  | 1d | 2006-07-14 | 2006-07-14 | 32 |  |  | 50.75d | 0d |  | Ravi Madduri | 8h |  |
| 34 | 1.1.10.4 | Implement dynamic service insertion into workflow document |  | 3d | 2006-07-17 | 2006-07-19 | 33 |  |  | 50.75d | 0d |  | Ravi Madduri | 24h |  |
| 35 | 1.1.10.5 | Write and Run Tests for Dynamic Service Selection. |  | 3d | 2006-07-20 | 2006-07-24 | 34 |  |  | 50.75d | 0d |  | Ravi Madduri | 24h |  |
| 36 | 1.1.11 | **WS-RF Resource Pattern** |  | 20d | 2006-07-25 A | 2006-08-21 | 30 | 88% | 2.5d | 33.25d | 0d |  |  | 200h | 180h |
| 37 | 1.1.11.1 | Design WS-RF integration into engine |  | 5d | 2006-07-25 A | 2006-07-31 A |  | 100% |  |  |  |  | Ravi Madduri; Jarek Gawor | 80h | 80h |
| 38 | 1.1.11.2 | Implement WS-RF resource patern integration into engine |  | 10d | 2006-08-01 A | 2006-08-14 | 37 | 75% | 2.5d | 38.25d |  |  | Ravi Madduri | 80h | 60h |
| 39 | 1.1.11.3 | Test WS-RF resource patern integraion into engine |  | 5d | 2006-08-15 A | 2006-08-21 A | 38 | 100% |  |  |  |  | Ravi Madduri | 40h | 40h |
| 40 | 1.1.12 | **Workflow tests** |  | 25d | 2006-08-22 A | 2006-09-25 | 36 | 53% | 11.75d | 20d | 0d |  |  | 200h | 106h |
| 41 | 1.1.12.1 | Test workflow patterns |  | 5d | 2006-08-22 A | 2006-08-28 |  | 90% | 0.5d | 28.75d | 0d |  | Ravi Madduri | 40h | 36h |
| 42 | 1.1.12.2 | Test management service |  | 5d | 2006-08-29 A | 2006-09-04 | 41 | 75% | 1.25d | 25d | 0d |  | Ravi Madduri | 40h | 30h |
| 43 | 1.1.12.3 | Test security |  | 5d | 2006-09-05 A | 2006-09-11 | 42 | 50% | 2.5d | 22.5d | 0d |  | Ravi Madduri | 40h | 20h |
| 44 | 1.1.12.4 | Test dynamic service selection |  | 5d | 2006-09-12 | 2006-09-18 | 43 |  |  | 22.5d | 0d |  | Ravi Madduri | 40h |  |
| 45 | 1.1.12.5 | Test WS-RF resource pattern |  | 5d | 2006-09-19 A | 2006-09-25 | 44 | 50% | 2.5d | 20d |  |  | Ravi Madduri | 40h | 20h |
| 46 | 1.2 | **Project SOW Deliverable Artifacts** |  | 171d | 2006-03-03 A | 2006-10-27 |  | 42% | 99.19d | 0d |  |  |  | 6320h | 2348h |
| 47 | 1.2.1 | A1: Entry of deliverables and milestones described in Management Plan into caMP (Task 1.1) |  | 1d | 2006-05-26 A | 2006-05-26 A |  | 100% |  |  |  | start no earlier than 2006-05-26 | Mike Wilde | 8h | 8h |
| 48 | 1.2.2 | A2: Documented meeting notes as assigned by Workspace (Task 1.2) |  | 116d | 2006-05-22 A | 2006-10-27 |  | 50% | 58d | 0d |  | start no earlier than 2006-05-22 | Mike Wilde; Ravi Madduri | 1856h | 928h |
| 49 | 1.2.3 | A3: Documented action items generated from meetings as assigned by Workspace (Task 1.3) |  | 116d | 2006-05-22 A | 2006-10-27 |  | 50% | 58d | 0d |  | finish no earlier than 2006-10-27 | Mike Wilde | 928h | 464h |
| 50 | 1.2.4 | A4: Monthly Status Report (Task 1.3) |  | 108d | 2006-06-01 | 2006-10-27 |  |  |  | 0d |  | finish no earlier than 2006-10-27 | Mike Wilde; Ravi Madduri | 1728h |  |
| 51 | 1.2.5 | A5: Risk Management Matrix (Task 1.4) |  | 5d | 2006-06-05 | 2006-06-09 |  |  |  | 101d |  | start no earlier than 2006-06-05 | Mike Wilde | 40h |  |
| 52 | 1.2.6 | A6: Document describing (worflow engine selection) decision and reasoning behind that decision (Task 2.1) |  | 5d | 2006-06-12 A | 2006-06-16 A |  | 100% |  |  |  | start no earlier than 2006-06-12 | Mike Wilde | 40h | 40h |
| 53 | 1.2.7 | A7: Detailed use cases (Task 2.2) |  | 20d | 2006-07-03 A | 2006-07-28 |  | 50% | 10d | 26d | 0d | finish no earlier than 2006-07-28 | Mike Wilde | 160h | 80h |
| 54 | 1.2.8 | A8: Document prioritizing workflow control pattern / feature support in the workflow engine (Task 2.3) |  | 5d | 2006-06-26 A | 2006-06-30 A |  | 100% |  |  |  | start no earlier than 2006-06-26 | Mike Wilde | 40h | 40h |
| 55 | 1.2.9 | A9: Draft Requirements and Specifications Document for workflow engine agreed upon within workflow SIG (Task 2.4) |  | 10d | 2006-07-03 A | 2006-07-14 A |  | 100% |  |  |  | start no earlier than 2006-07-03 | Mike Wilde | 80h | 80h |
| 56 | 1.2.10 | A10: Draft Requirements and Specifications Document for workflow engine agreed upon with adopters and cross cutting workspaces (Task 2.5) |  | 20d | 2006-07-17 A | 2006-08-11 A | 55 | 100% |  |  |  |  | Mike Wilde | 160h | 160h |
| 57 | 1.2.11 | A11: Requirements and Specifications Document for workflow engine (Task 2.6) |  | 20d | 2006-08-14 A | 2006-09-08 A | 56 | 100% |  |  |  |  | Mike Wilde | 160h | 160h |
| 58 | 1.2.12 | A12: Draft UML Model (Task 2.7.1) |  | 10d | 2006-07-17 | 2006-07-28 |  |  |  | 5d | 0d | start no earlier than 2006-07-17 | Mike Wilde | 80h |  |
| 59 | 1.2.13 | A13: Final UML Model, approved by the caGrid Chief Architect, NCICB Architecture Workspace Facilitator, Architecture Workspace Lead, and Adopter (.eap file) (Task 2.7.2) |  | 10d | 2006-07-31 | 2006-08-11 | 58 |  |  | 5d |  |  | Mike Wilde | 80h |  |
| 60 | 1.2.14 | A14: Test Approach document, approved by Adopters (Task 2.8) |  | 10d | 2006-08-07 A | 2006-08-18 A |  | 100% |  |  |  | start no earlier than 2006-08-07 | Ravi Madduri | 80h | 80h |
| 61 | 1.2.15 | A15: Software Architecture Diagram (Task 3.1) |  | 5d | 2006-08-14 A | 2006-08-18 A | 59 | 100% |  |  |  |  | Mike Wilde | 40h | 40h |
| 62 | 1.2.16 | A16: Design Document (Task 3.2) |  | 10d | 2006-06-12 A | 2006-06-23 A |  | 100% |  |  |  | start no earlier than 2006-06-12 | Ravi Madduri | 80h | 80h |
| 63 | 1.2.17 | A17: Workflow engine with caBIG discovery functionality (Task 3.3) | milestone | 0d | 2006-07-13 | 2006-07-13 | 32 |  |  | 77d |  |  | Ravi Madduri |  |  |
| 64 | 1.2.18 | A18: Workflow engine that has service selection functionality (Task 3.4) | milestone | 0d | 2006-07-19 | 2006-07-19 | 34 |  |  | 73d |  |  | Ravi Madduri |  |  |
| 65 | 1.2.19 | A19: Workflow engine that has caBIG specific functionality (Task 3.5) | milestone | 0d | 2006-07-24 | 2006-07-24 | 35 |  |  | 70d |  |  | Ravi Madduri |  |  |
| 66 | 1.2.20 | A20: Alpha of engine with caBIG 1.0 functionality (Task 3.5) | milestone | 0d | 2006-03-03 A | 2006-03-03 A | 18 | 100% |  |  |  |  | Ravi Madduri |  |  |
| 67 | 1.2.21 | A21: Test results reporting per test approach document (Task 3.6) |  | 5d | 2006-09-26 A | 2006-09-30 | 40 | 90% | 0.5d | 20d |  |  | Ravi Madduri | 40h | 36h |
| 68 | 1.2.22 | A22: Updated documentation (Task 3.7) |  | 10d | 2006-06-26 A | 2006-07-07 | 62 | 20% | 8d | 81d |  |  | Ravi Madduri; Mike Wilde | 160h | 32h |
| 69 | 1.2.23 | A23: Beta release of workflow engine (Task 3.8) | milestone | 0d | 2006-07-24 | 2006-07-24 | 30 |  |  | 70d |  |  | Ravi Madduri |  |  |
| 70 | 1.2.24 | A24: Feedback from adopters (Task 3.9) |  | 20d | 2006-07-31 | 2006-08-25 | 53 |  |  | 26d | 0d |  | Mike Wilde | 160h |  |
| 71 | 1.2.25 | A25: Updated software and documentation (Task 3.10) |  | 20d | 2006-08-28 | 2006-09-22 | 70 |  |  | 26d |  |  | Ravi Madduri | 160h |  |
| 72 | 1.2.26 | A26: Lessons Learned document (Task 3.11) |  | 10d | 2006-10-16 | 2006-10-27 |  |  |  | 0d |  | start no earlier than 2006-10-16 | Mike Wilde | 80h |  |
| 73 | 1.2.27 | A27: User Documentation document (Task 3.11) |  | 20d | 2006-10-02 A | 2006-10-27 |  | 75% | 5d | 0d |  | start no earlier than 2006-10-02 | Ravi Madduri | 160h | 120h |
| 74 | 1.2.28 | A28: Presentation at Annual Meeting (Task 3.11) | milestone | 0d | 2006-04-10 A | 2006-04-10 A |  | 100% |  |  |  |  | Mike Wilde |  |  |
| 75 | 1.2.29 | A29: Demo at Annual Meeting (Task 3.11) | milestone | 0d | 2006-04-10 A | 2006-04-10 A |  | 100% |  |  |  |  | Ravi Madduri |  |  |
| 76 | 1.2.30 | A30: Successful task completion (Task 3.12) | milestone | 0d | 2006-10-27 | 2006-10-27 | 73 |  |  | 0d |  |  | Ravi Madduri; Mike Wilde |  |  |
| 77 | 1.2.31 | A31: Workflow engine for caBIG 1.0 complete (Task 3.12) | milestone | 0d | 2006-09-25 | 2006-09-25 | 40 |  |  | 25d |  |  | Ravi Madduri |  |  |

Notes:
- 31: This is the XML workflow document, as a template, that will be expanded for Dynamic Service Selection. It will have the structure of the existing BPEL XSD but will have service endpoints represented symbolically as variables that can be replaced by actual values by the service selection process.
- 40: This will be based on V1.2, 2006.1103, of the document "Workflow Requirements Proposal"
- 41: patricks test case doc - case "multi domain wf" still to be done.
- 56: artifact: done in last f2f at OSU (Augus at ARCH f2f)
- 60: done by patrick: need artifact ptr
- 61: point to des doc
- 73: This consists of 4 docs as specified in the technical poposal: / - Technical/Architecture Manual / - Installation Guide / - Admin Guide / - Release Notes / (End user guide is not listed there but may be needed; perhaps there will be no need for an Admin guide though, so the User Guide could take its place in this deliverable)
