# caGrid_Development1

Schedule from MS Project, 2006-04-17 to 2007-04-16.

## Calendars

- Standard: Mon-Fri 08:00-12:00, 13:00-17:00; Sat-Sun off.

## Schedule

| ID | WBS | Task | Duration | Start | Finish | Predecessors | Total slack | Free slack | Constraint | Text1 |
| --- | --- | --- | --- | --- | --- | --- | --- | --- | --- | --- |
| 1 | 1 | **caGrid 1.0 Development** | 261d? | 2006-04-17 | 2007-04-16 |  | 0d |  |  |  |
| 2 | 1.1 | **Monthly Status/Financial Report** | 240d | 2006-05-10 | 2007-04-10 |  | 4d |  |  | 6.3 |
| 3 | 1.1.1 | Monthly Status/Financial Report 1 | 1d | 2006-05-10 | 2006-05-10 |  | 243d |  | start no earlier than 2006-05-10 |  |
| 4 | 1.1.2 | Monthly Status/Financial Report 2 | 1d | 2006-06-09 | 2006-06-09 |  | 221d |  | start no earlier than 2006-06-09 |  |
| 5 | 1.1.3 | Monthly Status/Financial Report 3 | 1d | 2006-07-10 | 2006-07-10 |  | 200d |  | start no earlier than 2006-07-10 |  |
| 6 | 1.1.4 | Monthly Status/Financial Report 4 | 1d | 2006-08-10 | 2006-08-10 |  | 177d |  | start no earlier than 2006-08-10 |  |
| 7 | 1.1.5 | Monthly Status/Financial Report 5 | 1d | 2006-09-08 | 2006-09-08 |  | 156d |  | start no earlier than 2006-09-08 |  |
| 8 | 1.1.6 | Monthly Status/Financial Report 6 | 1d | 2006-10-10 | 2006-10-10 |  | 134d |  | start no earlier than 2006-10-10 |  |
| 9 | 1.1.7 | Monthly Status/Financial Report 7 | 1d | 2006-11-10 | 2006-11-10 |  | 111d |  | start no earlier than 2006-11-10 |  |
| 10 | 1.1.8 | Monthly Status/Financial Report 8 | 1d | 2006-12-08 | 2006-12-08 |  | 91d |  | start no earlier than 2006-12-08 |  |
| 11 | 1.1.9 | Monthly Status/Financial Report 9 | 1d | 2007-01-10 | 2007-01-10 |  | 68d |  | start no earlier than 2007-01-10 |  |
| 12 | 1.1.10 | Monthly Status/Financial Report 10 | 1d | 2007-02-09 | 2007-02-09 |  | 46d |  | start no earlier than 2007-02-09 |  |
| 13 | 1.1.11 | Monthly Status/Financial Report 11 | 1d | 2007-03-09 | 2007-03-09 |  | 26d |  | start no earlier than 2007-03-09 |  |
| 14 | 1.1.12 | Monthly Status/Financial Report 12 | 1d | 2007-04-10 | 2007-04-10 |  | 4d |  | start no earlier than 2007-04-10 |  |
| 15 | 1.2 | **Software Development Cycle 1** | 73d? | 2006-04-17 | 2006-07-26 |  | 53d |  |  |  |
| 16 | 1.2.1 | **Inception** | 10d | 2006-04-17 | 2006-04-28 |  | 251d |  |  |  |
| 17 | 1.2.1.1 | Orientation Briefing | 1d | 2006-04-17 | 2006-04-17 |  | 260d |  | start no earlier than 2006-04-17 | 6.1 |
| 18 | 1.2.1.2 | Project Plan | 2d | 2006-04-17 | 2006-04-18 |  | 251d | 0d | start no earlier than 2006-04-17 | 6.2,6.4.1 |
| 19 | 1.2.1.3 | Phase and Iteration Plan | 1d | 2006-04-19 | 2006-04-19 | 18 | 251d | 0d |  |  |
| 20 | 1.2.1.4 | Requirement and Specifications Collection | 5d | 2006-04-20 | 2006-04-26 | 19 | 251d | 0d |  |  |
| 21 | 1.2.1.5 | Draft Use Case Model | 2d | 2006-04-27 | 2006-04-28 | 20 | 251d |  |  |  |
| 22 | 1.2.1.6 | Draft Test Plan | 10d | 2006-04-17 | 2006-04-28 |  | 251d |  | start no earlier than 2006-04-17 |  |
| 23 | 1.2.1.7 | Create Risks List | 5d | 2006-04-24 | 2006-04-28 |  | 251d |  | start no earlier than 2006-04-24 |  |
| 24 | 1.2.2 | **Elaboration** | 30d? | 2006-05-01 | 2006-06-09 |  | 221d |  |  |  |
| 25 | 1.2.2.1 | **Iteration I** | 15d? | 2006-05-01 | 2006-05-19 |  | 236d |  |  |  |
| 26 | 1.2.2.1.1 | **Design, develop and test integration of caCORE SDK generated system** | 15d | 2006-05-01 | 2006-05-19 |  | 236d |  |  | 6.4.4, 6.4.4.1 |
| 27 | 1.2.2.1.1.1 | Finalize CQL Schema | 5d | 2006-05-01 | 2006-05-05 |  | 246d |  | start no earlier than 2006-05-01 |  |
| 28 | 1.2.2.1.1.2 | Develop test cases to validate CQL schema | 5d | 2006-05-01 | 2006-05-05 |  | 246d |  | finish no earlier than 2006-05-05 |  |
| 29 | 1.2.2.1.1.3 | Create runtime class diagram | 3d | 2006-05-17 | 2006-05-19 |  | 236d |  | start no earlier than 2006-05-17 |  |

| ID | WBS | Task | Duration | Start | Finish | Predecessors | Total slack | Free slack | Constraint | Text1 |
| --- | --- | --- | --- | --- | --- | --- | --- | --- | --- | --- |
| 30 | 1.2.2.1.2 | **Design, develop and test caGrid 1.0 Installer and Deployment Wizard** | 15d? | 2006-05-01 | 2006-05-19 |  | 236d |  |  | 6.4.2, 6.4.2.1,6.4.2.2,6.4.3 |
| 31 | 1.2.2.1.2.1 | Requirments Analysis | 15d | 2006-05-01 | 2006-05-19 |  | 236d |  | start no earlier than 2006-05-01 |  |
| 32 | 1.2.2.1.2.2 | Evaluate existing open source Installer toolkits | 10d? | 2006-05-01 | 2006-05-12 |  | 241d |  | start no earlier than 2006-05-01 |  |
| 33 | 1.2.2.1.2.3 | Create UML Artifacts - Use Case Model and Activity Diagram | 15d | 2006-05-01 | 2006-05-19 |  | 236d |  | finish no earlier than 2006-05-19 |  |
| 34 | 1.2.2.1.2.4 | Prototype | 10d | 2006-05-03 | 2006-05-16 |  | 239d |  | start no earlier than 2006-05-03 |  |
| 35 | 1.2.2.2 | **Iteration II** | 15d? | 2006-05-22 | 2006-06-09 |  | 221d |  |  |  |
| 36 | 1.2.2.2.1 | **Implement and test integration of caCORE SDK generated system** | 7d | 2006-05-22 | 2006-05-30 |  | 229d |  |  | 6.4.4, 6.4.4.1 |
| 37 | 1.2.2.2.1.1 | Update UML Artifacts | 2d | 2006-05-22 | 2006-05-23 |  | 229d | 0d | start no earlier than 2006-05-22 |  |
| 38 | 1.2.2.2.1.2 | Code and Test | 5d | 2006-05-24 | 2006-05-30 | 37 | 229d |  | finish no earlier than 2006-05-30 |  |
| 39 | 1.2.2.2.2 | **Enhance caGrid 1.0 Installer and Deployment Wizard Prototype** | 15d | 2006-05-22 | 2006-06-09 |  | 221d |  |  | 6.4.2, 6.4.2.1,6.4.2.2,6.4.3 |
| 40 | 1.2.2.2.2.1 | Update UML Artifacts | 2d | 2006-05-22 | 2006-05-23 |  | 234d |  | start no earlier than 2006-05-22 |  |
| 41 | 1.2.2.2.2.2 | Code and Test | 15d | 2006-05-22 | 2006-06-09 |  | 221d |  | start no earlier than 2006-05-22 |  |
| 42 | 1.2.2.2.3 | **Design, develop and test integration of CSM in caGrid 1.0** | 15d | 2006-05-22 | 2006-06-09 |  | 221d |  |  |  |
| 43 | 1.2.2.2.3.1 | Requirements Analysis | 10d | 2006-05-22 | 2006-06-02 |  | 226d |  | start no earlier than 2006-05-22 |  |
| 44 | 1.2.2.2.3.2 | Create UML artifacts - Use Case Model, Sequence and Class Diagrams | 10d | 2006-05-29 | 2006-06-09 |  | 221d |  | start no earlier than 2006-05-29 |  |
| 45 | 1.2.2.2.4 | **Design, develop and test caDSR integration in caGrid 1.0** | 10d? | 2006-05-22 | 2006-06-02 |  | 226d |  |  |  |
| 46 | 1.2.2.2.4.1 | Requirements Analysis | 5d? | 2006-05-22 | 2006-05-26 |  | 231d |  | start no earlier than 2006-05-22 |  |
| 47 | 1.2.2.2.4.2 | Create UML artifacts | 10d | 2006-05-22 | 2006-06-02 |  | 226d |  | start no earlier than 2006-05-22 |  |
| 48 | 1.2.3 | **Construction** | 20d? | 2006-06-13 | 2006-07-10 |  | 12d | 2d |  |  |
| 49 | 1.2.3.1 | Implement caGrid 1.0 Installer and Deployment Wizard | 20d? | 2006-06-13 | 2006-07-10 |  | 12d |  | start no earlier than 2006-06-13 |  |
| 50 | 1.2.3.2 | Implement and test integration of CSM in caGrid 1.0 | 20d | 2006-06-13 | 2006-07-10 |  | 12d |  | start no earlier than 2006-06-13 | 6.4.4,6.4.4.1 |
| 51 | 1.2.3.3 | Implement and test caDSR integration in caGrid 1.0 | 10d | 2006-06-13 | 2006-06-26 |  | 22d |  | start no earlier than 2006-06-13 |  |
| 52 | 1.2.4 | **Transition** | 10d | 2006-07-13 | 2006-07-26 | 48 | 10d | 0d |  |  |
| 53 | 1.2.4.1 | Update software architecture design document | 5d | 2006-07-13 | 2006-07-19 |  | 15d |  | start no earlier than 2006-07-13 |  |
| 54 | 1.2.4.2 | Update design documents | 3d | 2006-07-13 | 2006-07-17 |  | 17d |  | start no earlier than 2006-07-13 |  |
| 55 | 1.2.4.3 | System Testing | 10d | 2006-07-13 | 2006-07-26 |  | 10d |  | start no earlier than 2006-07-13 |  |

| ID | WBS | Task | Duration | Start | Finish | Predecessors | Total slack | Free slack | Constraint | Text1 |
| --- | --- | --- | --- | --- | --- | --- | --- | --- | --- | --- |
| 56 | 1.3 | **Software Development Cycle 2** | 65d | 2006-07-27 | 2006-10-25 | 52 | 0d |  |  |  |
| 57 | 1.3.1 | **Inception** | 10d | 2006-07-27 | 2006-08-09 |  | 10d |  |  |  |
| 58 | 1.3.1.1 | Update Project Plan | 1d | 2006-07-27 | 2006-07-27 |  | 10d | 0d |  |  |
| 59 | 1.3.1.2 | Phase and Iteration Plan | 1d | 2006-07-28 | 2006-07-28 | 58 | 10d | 0d |  |  |
| 60 | 1.3.1.3 | Requirements and Specifications Collection | 5d | 2006-07-31 | 2006-08-04 | 59 | 10d | 0d |  |  |
| 61 | 1.3.1.4 | Draft Use Case Model | 3d | 2006-08-07 | 2006-08-09 | 60 | 10d | 0d |  |  |
| 62 | 1.3.1.5 | Update Test Plan | 3d | 2006-07-27 | 2006-07-31 |  | 62d |  |  |  |
| 63 | 1.3.2 | **Elaboration** | 30d | 2006-08-10 | 2006-09-20 | 61 | 10d | 0d |  |  |
| 64 | 1.3.2.1 | **Iteration I** | 15d | 2006-08-10 | 2006-08-30 |  | 10d |  |  |  |
| 65 | 1.3.2.1.1 | **Design for migrating grid enabled caBIO and caArray data services to caGrid 1.0** | 15d | 2006-08-10 | 2006-08-30 |  | 10d | 0d |  | 6.4.6 |
| 66 | 1.3.2.1.1.1 | Create UML Artifacts | 7d | 2006-08-10 | 2006-08-18 |  | 10d | 0d |  |  |
| 67 | 1.3.2.1.1.2 | Code and Test | 10d | 2006-08-10 | 2006-08-23 |  | 15d |  | start no earlier than 2006-07-17 |  |
| 68 | 1.3.2.1.1.3 | Prepare detailed design document | 8d | 2006-08-21 | 2006-08-30 | 66 | 10d |  |  |  |
| 69 | 1.3.2.1.2 | **Design caGrid Installer and Deployment Wizard** | 8d | 2006-08-10 | 2006-08-21 |  | 32d |  |  | 6.4.10, 6.4.10.1, 6.4.10.2 |
| 70 | 1.3.2.1.2.1 | UML Artifacts | 7d | 2006-08-10 | 2006-08-18 |  | 33d |  |  |  |
| 71 | 1.3.2.1.2.2 | Design document | 8d | 2006-08-10 | 2006-08-21 |  | 32d |  |  |  |
| 72 | 1.3.2.1.3 | Update Risk List | 1d | 2006-08-10 | 2006-08-10 |  | 39d |  | start no earlier than 2006-07-25 |  |
| 73 | 1.3.2.2 | **Iteration II** | 15d | 2006-08-31 | 2006-09-20 | 65 | 10d |  |  |  |
| 74 | 1.3.2.2.1 | Implement migration of caBIO and caArray data services from caGrid 0.5 to caGrid 1.0 | 15d | 2006-08-31 | 2006-09-20 |  | 10d |  |  | 6.4.7, 6.4.7.1 |
| 75 | 1.3.2.2.2 | Design and create prototypes for Installer and Deployment Wizard | 15d | 2006-08-31 | 2006-09-20 |  | 10d |  |  |  |
| 76 | 1.3.2.2.3 | Update Risk List | 1d | 2006-09-20 | 2006-09-20 |  | 10d |  | start no earlier than 2006-09-20 |  |
| 77 | 1.3.3 | **Construction** | 20d | 2006-09-21 | 2006-10-18 | 63 | 0d |  |  |  |
| 78 | 1.3.3.1 | **Iteration I** | 20d | 2006-09-21 | 2006-10-18 |  | 0d |  |  |  |
| 79 | 1.3.3.1.1 | **Migration of caGrid 0.5 users to caGrid 1.0** | 10d | 2006-09-21 | 2006-10-04 |  | 10d |  |  | 6.4.8 |
| 80 | 1.3.3.1.1.1 | UML Artifacts | 10d | 2006-09-21 | 2006-10-04 |  | 10d |  |  |  |
| 81 | 1.3.3.1.1.2 | Design and SOP document | 10d | 2006-09-21 | 2006-10-04 |  | 10d |  |  |  |

| ID | WBS | Task | Duration | Start | Finish | Predecessors | Total slack | Constraint | Text1 |
| --- | --- | --- | --- | --- | --- | --- | --- | --- | --- |
| 82 | 1.3.3.1.2 | **Implement caGrid 1.0 Installer and Deployment Wizard** | 20d | 2006-09-21 | 2006-10-18 | 79 | 0d |  | 6.4.11, 6.4.11.1 |
| 83 | 1.3.3.1.2.1 | Code and Test | 10d | 2006-09-21 | 2006-10-04 |  | 10d |  |  |
| 84 | 1.3.3.1.2.2 | Update Risk List | 1d | 2006-10-18 | 2006-10-18 |  | 0d | start no earlier than 2006-10-18 |  |
| 85 | 1.3.4 | **Transition** | 5d | 2006-10-19 | 2006-10-25 | 77 | 0d |  |  |
| 86 | 1.3.4.1 | Update design document for caGrid installer and deployer | 5d | 2006-10-19 | 2006-10-25 |  | 0d |  |  |
| 87 | 1.3.4.2 | Update document for migration of caGrid 0.5 user credentials to caGrid 1.0 | 5d | 2006-10-19 | 2006-10-25 |  | 0d |  |  |
| 88 | 1.3.4.3 | System Testing | 5d | 2006-10-19 | 2006-10-25 |  | 0d |  |  |
| 89 | 1.3.4.4 | Update software architecture document | 5d | 2006-10-19 | 2006-10-25 |  | 0d |  |  |
| 90 | 1.4 | **Software Development Cycle 3** | 123d | 2006-10-26 | 2007-04-16 | 56 | 0d |  |  |
| 91 | 1.4.1 | **Inception** | 10d | 2006-10-26 | 2006-11-08 |  | 0d |  |  |
| 92 | 1.4.1.1 | **Iteration I** | 10d | 2006-10-26 | 2006-11-08 |  | 0d |  |  |
| 93 | 1.4.1.1.1 | Requirement collection for caGrid Browser | 5d | 2006-10-26 | 2006-11-01 |  | 0d |  |  |
| 94 | 1.4.1.1.2 | Use Case Model for caGrid Browser | 5d | 2006-11-02 | 2006-11-08 | 93 | 0d |  |  |
| 95 | 1.4.1.2 | **Iteration II** | 2d | 2006-10-26 | 2006-10-27 |  | 8d |  |  |
| 96 | 1.4.1.2.1 | Use Case Specification Review and Adjustment | 2d | 2006-10-26 | 2006-10-27 |  | 8d |  |  |
| 97 | 1.4.2 | **Elaboration** | 36d | 2006-11-09 | 2006-12-28 | 91 | 0d |  |  |
| 98 | 1.4.2.1 | **Iteration I** | 15d | 2006-11-09 | 2006-11-29 |  | 0d |  |  |
| 99 | 1.4.2.1.1 | **Design for caGrid Browser enhancements** | 15d | 2006-11-09 | 2006-11-29 |  | 0d |  | 6.4.12, 6.4.12.1, 6.4.12.2, 6.4.12.2 |
| 100 | 1.4.2.1.1.1 | UML Artifacts | 10d | 2006-11-09 | 2006-11-22 |  | 0d |  |  |
| 101 | 1.4.2.1.1.2 | Design document | 5d | 2006-11-23 | 2006-11-29 | 100 | 0d |  |  |
| 102 | 1.4.2.1.2 | Migration document and SOP for data services and analytical services from caGrid 0.5 to caGrid 1.0 | 15d | 2006-11-09 | 2006-11-29 |  | 0d |  | 6.4.5 |
| 103 | 1.4.2.1.3 | Update Risk List | 1d | 2006-11-15 | 2006-11-15 |  | 10d | start no earlier than 2006-11-15 |  |
| 104 | 1.4.2.2 | **Iteration II** | 21d | 2006-11-30 | 2006-12-28 | 98 | 0d |  |  |
| 105 | 1.4.2.2.1 | **Implement caGrid 1.0 Browser** | 21d | 2006-11-30 | 2006-12-28 |  | 0d |  | 6.4.14, 6.4.14.1 |
| 106 | 1.4.2.2.1.1 | Code and test | 21d | 2006-11-30 | 2006-12-28 |  | 0d |  |  |

| ID | WBS | Task | Duration | Start | Finish | Predecessors | Total slack | Constraint | Text1 |
| --- | --- | --- | --- | --- | --- | --- | --- | --- | --- |
| 107 | 1.4.2.2.2 | **Implementation of migration of NCICB users from caGrid 0.5 to caGrid 1.0** | 15d | 2006-11-30 | 2006-12-20 |  | 6d |  | 6.4.9 |
| 108 | 1.4.2.2.2.1 | Code and test | 15d | 2006-11-30 | 2006-12-20 |  | 6d |  |  |
| 109 | 1.4.3 | **Construction** | 40d | 2006-12-29 | 2007-02-22 | 97 | 0d |  |  |
| 110 | 1.4.3.1 | **Iteration I** | 20d | 2006-12-29 | 2007-01-25 |  | 0d |  |  |
| 111 | 1.4.3.1.1 | **caGrid 1.0 Browser Release 2 Implementation** | 20d | 2006-12-29 | 2007-01-25 |  | 0d |  | 6.4.14, 6.4.14.1 |
| 112 | 1.4.3.1.1.1 | Code and test | 20d | 2006-12-29 | 2007-01-25 |  | 0d |  |  |
| 113 | 1.4.3.2 | **Iteration II** | 20d | 2007-01-26 | 2007-02-22 | 110 | 0d |  |  |
| 114 | 1.4.3.2.1 | **System Test Plan and Results** | 20d | 2007-01-26 | 2007-02-22 |  | 0d |  | 6.4.14 |
| 115 | 1.4.3.2.1.1 | Develop test cases | 15d | 2007-01-26 | 2007-02-15 |  | 5d |  |  |
| 116 | 1.4.3.2.1.2 | Conduct testing | 15d | 2007-01-26 | 2007-02-15 |  | 5d |  |  |
| 117 | 1.4.3.2.1.3 | Continuous defect fixing | 20d | 2007-01-26 | 2007-02-22 |  | 0d |  |  |
| 118 | 1.4.4 | **Transition** | 37d | 2007-02-23 | 2007-04-16 | 109 | 0d |  |  |
| 119 | 1.4.4.1 | **Iteration I** | 30d | 2007-02-23 | 2007-04-05 |  | 0d |  |  |
| 120 | 1.4.4.1.1 | Technical Guide | 20d | 2007-02-23 | 2007-03-22 |  | 0d |  | 6.14.15 |
| 121 | 1.4.4.1.2 | User Guide | 10d | 2007-03-23 | 2007-04-05 | 120 | 0d |  |  |
| 122 | 1.4.4.1.3 | System Testing | 10d | 2007-02-23 | 2007-03-08 |  | 20d |  |  |
| 123 | 1.4.4.2 | **Iteration II** | 7d | 2007-04-06 | 2007-04-16 | 119 | 0d |  |  |
| 124 | 1.4.4.2.1 | Lesson learned | 5d | 2007-04-06 | 2007-04-12 |  | 0d | start no earlier than 2007-04-06 |  |
| 125 | 1.4.4.2.2 | Release notes | 2d | 2007-04-13 | 2007-04-16 | 124 | 0d |  |  |
