# caGrid_Development1

Schedule from MS Project, 2006-04-17 to 2007-04-18, A marks actual dates.

## Calendars

- Standard: Mon-Fri 08:00-12:00, 13:00-17:00; Sat-Sun off.

## Resources

| Resource |
| --- |
| RC |
| VB |
| Team |
| VK |
| DW |

## Schedule

| ID | WBS | Task | Duration | Start | Finish | Predecessors | Complete | Remaining | Total slack | Constraint | Resources | Work | Actual work | Text1 | Text2 |
| --- | --- | --- | --- | --- | --- | --- | --- | --- | --- | --- | --- | --- | --- | --- | --- |
| 1 | 1 | **caGrid 1.0 Development** | 263d? | 2006-04-17 A | 2007-04-18 |  | 35% | 171.84d? | 0d |  |  | 2616h | 483.2h |  |  |
| 2 | 1.1 | **Monthly Status/Financial Report** | 240d | 2006-05-10 A | 2007-04-10 |  | 25% | 180d | 6d |  | VB | 1920h | 8h | 6.3 | All |
| 3 | 1.1.1 | Monthly Status/Financial Report 1 | 1d | 2006-05-10 A | 2006-05-10 A |  | 100% |  |  | start no earlier than 2006-05-10 |  |  |  |  |  |
| 4 | 1.1.2 | Monthly Status/Financial Report 2 | 1d | 2006-06-09 A | 2006-06-09 A |  | 100% |  |  | start no earlier than 2006-06-09 |  |  |  |  |  |
| 5 | 1.1.3 | Monthly Status/Financial Report 3 | 1d | 2006-07-10 A | 2006-07-10 A |  | 100% |  |  | start no earlier than 2006-07-10 |  |  |  |  |  |
| 6 | 1.1.4 | Monthly Status/Financial Report 4 | 1d | 2006-08-10 | 2006-08-10 |  |  |  | 204d | start no earlier than 2006-08-10 |  |  |  |  |  |
| 7 | 1.1.5 | Monthly Status/Financial Report 5 | 1d | 2006-09-08 | 2006-09-08 |  |  |  | 183d | start no earlier than 2006-09-08 |  |  |  |  |  |
| 8 | 1.1.6 | Monthly Status/Financial Report 6 | 1d | 2006-10-10 | 2006-10-10 |  |  |  | 161d | start no earlier than 2006-10-10 |  |  |  |  |  |
| 9 | 1.1.7 | Monthly Status/Financial Report 7 | 1d | 2006-11-10 | 2006-11-10 |  |  |  | 138d | start no earlier than 2006-11-10 |  |  |  |  |  |
| 10 | 1.1.8 | Monthly Status/Financial Report 8 | 1d | 2006-12-08 | 2006-12-08 |  |  |  | 118d | start no earlier than 2006-12-08 |  |  |  |  |  |
| 11 | 1.1.9 | Monthly Status/Financial Report 9 | 1d | 2007-01-10 | 2007-01-10 |  |  |  | 95d | start no earlier than 2007-01-10 |  |  |  |  |  |
| 12 | 1.1.10 | Monthly Status/Financial Report 10 | 1d | 2007-02-09 | 2007-02-09 |  |  |  | 73d | start no earlier than 2007-02-09 |  |  |  |  |  |
| 13 | 1.1.11 | Monthly Status/Financial Report 11 | 1d | 2007-03-09 | 2007-03-09 |  |  |  | 53d | start no earlier than 2007-03-09 |  |  |  |  |  |
| 14 | 1.1.12 | Monthly Status/Financial Report 12 | 1d | 2007-04-10 | 2007-04-10 |  |  |  | 31d | start no earlier than 2007-04-10 |  |  |  |  |  |
| 15 | 1.2 | **Software Development Cycle 1** | 100d? | 2006-04-17 A | 2006-09-01 |  | 62% | 38.3d? | 163d |  |  | 520h | 432h |  |  |
| 16 | 1.2.1 | **Inception** | 10d | 2006-04-17 A | 2006-04-28 A |  | 100% |  |  |  |  |  |  |  | All |
| 17 | 1.2.1.1 | Orientation Briefing | 1d | 2006-04-17 A | 2006-04-17 A |  | 100% |  |  | start no earlier than 2006-04-17 |  |  |  | 6.1 |  |
| 18 | 1.2.1.2 | Project Plan | 2d | 2006-04-17 A | 2006-04-18 A |  | 100% |  |  | start no earlier than 2006-04-17 |  |  |  | 6.2,6.4.1 |  |
| 19 | 1.2.1.3 | Phase and Iteration Plan | 1d | 2006-04-19 A | 2006-04-19 A | 18 | 100% |  |  |  |  |  |  |  |  |
| 20 | 1.2.1.4 | Requirement and Specifications Collection | 5d | 2006-04-20 A | 2006-04-26 A | 19 | 100% |  |  |  |  |  |  |  |  |
| 21 | 1.2.1.5 | Draft Use Case Model | 2d | 2006-04-27 A | 2006-04-28 A | 20 | 100% |  |  |  |  |  |  |  |  |
| 22 | 1.2.1.6 | Draft Test Plan | 10d | 2006-04-17 A | 2006-04-28 A |  | 100% |  |  | start no earlier than 2006-04-17 |  |  |  |  |  |
| 23 | 1.2.1.7 | Create Risks List | 5d | 2006-04-24 A | 2006-04-28 A |  | 100% |  |  | start no earlier than 2006-04-24 |  |  |  |  |  |
| 24 | 1.2.2 | **Elaboration** | 70d? | 2006-05-01 A | 2006-08-04 |  | 81% | 13.44d? | 183d |  |  | 440h | 352h |  |  |
| 25 | 1.2.2.1 | **Iteration I** | 15d? | 2006-05-01 A | 2006-05-19 A |  | 100% |  |  |  |  |  |  |  |  |
| 26 | 1.2.2.1.1 | **Design, develop and test integration of caCORE SDK generated system** | 15d | 2006-05-01 A | 2006-05-19 A |  | 100% |  |  |  |  |  |  | 6.4.4, 6.4.4.1 |  |
| 27 | 1.2.2.1.1.1 | Finalize CQL Schema | 5d | 2006-05-01 A | 2006-05-05 A |  | 100% |  |  | start no earlier than 2006-05-01 |  |  |  |  |  |
| 28 | 1.2.2.1.1.2 | Develop test cases to validate CQL schema | 5d | 2006-05-01 A | 2006-05-05 A |  | 100% |  |  | finish no earlier than 2006-05-05 |  |  |  |  |  |
| 29 | 1.2.2.1.1.3 | Create runtime class diagram | 3d | 2006-05-17 A | 2006-05-19 A |  | 100% |  |  | start no earlier than 2006-05-17 |  |  |  |  |  |

| ID | WBS | Task | Duration | Start | Finish | Predecessors | Complete | Remaining | Total slack | Constraint | Resources | Work | Actual work | Text1 |
| --- | --- | --- | --- | --- | --- | --- | --- | --- | --- | --- | --- | --- | --- | --- |
| 30 | 1.2.2.1.2 | **Design, develop and test caGrid 1.0 Installer and Deployment Wizard** | 15d? | 2006-05-01 A | 2006-05-19 A |  | 100% |  |  |  |  |  |  | 6.4.2, 6.4.2.1,6.4.2.2,6.4.3 |
| 31 | 1.2.2.1.2.1 | Requirements Analysis | 15d | 2006-05-01 A | 2006-05-19 A |  | 100% |  |  | start no earlier than 2006-05-01 |  |  |  |  |
| 32 | 1.2.2.1.2.2 | Evaluate existing open source Installer toolkits | 10d? | 2006-05-01 A | 2006-05-12 A |  | 100% |  |  | start no earlier than 2006-05-01 |  |  |  |  |
| 33 | 1.2.2.1.2.3 | Create UML Artifacts - Use Case Model and Activity Diagram | 15d | 2006-05-01 A | 2006-05-19 A |  | 100% |  |  | finish no earlier than 2006-05-19 |  |  |  |  |
| 34 | 1.2.2.1.2.4 | Prototype | 10d | 2006-05-03 A | 2006-05-16 A |  | 100% |  |  | start no earlier than 2006-05-03 |  |  |  |  |
| 35 | 1.2.2.2 | **Iteration II** | 55d? | 2006-05-22 A | 2006-08-04 |  | 73% | 14.64d? | 183d |  |  | 440h | 352h |  |
| 36 | 1.2.2.2.1 | **Implement and test integration of caCORE SDK generated system** | 7d | 2006-05-22 A | 2006-05-30 A |  | 100% |  |  |  |  |  |  | 6.4.4, 6.4.4.1 |
| 37 | 1.2.2.2.1.1 | Update UML Artifacts | 2d | 2006-05-22 A | 2006-05-23 A |  | 100% |  |  | start no earlier than 2006-05-22 |  |  |  |  |
| 38 | 1.2.2.2.1.2 | Code and Test | 5d | 2006-05-24 A | 2006-05-30 A | 37 | 100% |  |  | finish no earlier than 2006-05-30 |  |  |  |  |
| 39 | 1.2.2.2.2 | **Enhance caGrid 1.0 Installer and Deployment Wizard Prototype** | 15d | 2006-05-22 A | 2006-06-09 A |  | 100% |  |  |  |  |  |  | 6.4.2, 6.4.2.1,6.4.2.2,6.4.3 |
| 40 | 1.2.2.2.2.1 | Update UML Artifacts | 2d | 2006-05-22 A | 2006-05-23 A |  | 100% |  |  | start no earlier than 2006-05-22 |  |  |  |  |
| 41 | 1.2.2.2.2.2 | Code and Test | 15d | 2006-05-22 A | 2006-06-09 A |  | 100% |  |  | start no earlier than 2006-05-22 |  |  |  |  |
| 42 | 1.2.2.2.3 | **Design, develop and test integration of CSM in caGrid 1.0** | 15d | 2006-05-22 A | 2006-06-09 A |  | 100% |  |  |  |  |  |  |  |
| 43 | 1.2.2.2.3.1 | Requirements Analysis | 10d | 2006-05-22 A | 2006-06-02 A |  | 100% |  |  | start no earlier than 2006-05-22 |  |  |  |  |
| 44 | 1.2.2.2.3.2 | Create UML artifacts - Use Case Model, Sequence and Class Diagrams | 10d | 2006-05-29 A | 2006-06-09 A |  | 100% |  |  | start no earlier than 2006-05-29 |  |  |  |  |
| 45 | 1.2.2.2.4 | **Design, develop and test caDSR integration in caGrid 1.0** | 55d? | 2006-05-22 A | 2006-08-04 |  | 80% | 11d? | 183d |  | RC | 440h | 352h |  |
| 46 | 1.2.2.2.4.1 | Requirements Analysis | 45d? | 2006-05-22 A | 2006-07-21 |  | 80% | 9d? | 193d | finish no earlier than 2006-07-21 |  |  |  |  |
| 47 | 1.2.2.2.4.2 | Create caDSR-GME Mapping document | 10d | 2006-07-24 A | 2006-08-04 |  | 80% | 2d | 183d | finish no earlier than 2006-08-04 |  |  |  |  |
| 48 | 1.2.2.2.5 | **Design, develop and test Identity Provider service integration in caGrid 1.0** | 21d? | 2006-06-02 A | 2006-06-30 A |  | 100% |  |  |  |  |  |  |  |
| 49 | 1.2.2.2.5.1 | Requirements Analysis | 11d? | 2006-06-02 A | 2006-06-16 A |  | 100% |  |  |  |  |  |  |  |
| 50 | 1.2.2.2.5.2 | Create Design document | 11d? | 2006-06-16 A | 2006-06-30 A |  | 100% |  |  | finish no earlier than 2006-06-30 |  |  |  |  |
| 51 | 1.2.2.2.6 | Design, develop and test caBIO BigID service | 32d? | 2006-06-16 A | 2006-07-31 |  | 5% | 30.4d? | 187d | finish no earlier than 2006-07-31 |  |  |  |  |
| 52 | 1.2.2.2.7 | Support Silver Level Compatibility document development | 10d | 2006-06-23 A | 2006-07-06 |  | 80% | 2d | 204d | start no earlier than 2006-06-23 |  |  |  |  |
| 53 | 1.2.3 | **Construction** | 59d? | 2006-06-13 A | 2006-09-01 |  | 25% | 44.44d? | 163d |  |  |  |  |  |
| 54 | 1.2.3.1 | Implement caGrid 1.0 Installer and Deployment Framework Wizard for Beta Release | 20d? | 2006-06-13 A | 2006-07-10 A |  | 100% |  |  | start no earlier than 2006-06-13 |  |  |  |  |
| 55 | 1.2.3.2 | Implement and test integration of CSM in caGrid 1.0 | 44d | 2006-06-13 A | 2006-08-11 |  | 20% | 35.2d | 178d | finish no earlier than 2006-08-11 |  |  |  | 6.4.4,6.4.4.1 |
| 56 | 1.2.3.3 | Implement and test caDSR integration in caGrid 1.0 | 10d | 2006-07-24 A | 2006-08-04 |  | 60% | 4d | 183d | finish no earlier than 2006-08-04 |  |  |  |  |
| 57 | 1.2.3.4 | Implement and test integration of 'Grouper' external component | 30d? | 2006-07-24 A | 2006-09-01 |  | 5% | 28.5d? | 163d | finish no earlier than 2006-09-01 |  |  |  |  |
| 58 | 1.2.3.5 | Implement and test integration of Identity Provider (IDP) service | 31d? | 2006-07-07 A | 2006-08-18 |  | 5% | 29.45d? | 173d | finish no earlier than 2006-08-18 |  |  |  |  |
| 59 | 1.2.3.6 | Implement and test caBIO BigID service | 23d? | 2006-08-01 A | 2006-08-31 |  | 5% | 21.85d? | 164d | finish no earlier than 2006-08-31 |  |  |  |  |

Notes:
- 55: Depends on final specification not in place for use at this time (7/27).
- 56: Placeholder only

| ID | WBS | Task | Duration | Start | Finish | Predecessors | Complete | Remaining | Total slack | Free slack | Constraint | Resources | Work | Actual work | Text1 |
| --- | --- | --- | --- | --- | --- | --- | --- | --- | --- | --- | --- | --- | --- | --- | --- |
| 60 | 1.2.4 | **Transition** | 73d? | 2006-04-17 A | 2006-07-26 A | 53 | 100% |  |  |  |  |  | 80h | 80h |  |
| 61 | 1.2.4.1 | **Update design documents** | 1d? | 2006-04-17 A | 2006-04-17 A |  | 100% |  |  |  |  |  |  |  |  |
| 62 | 1.2.4.1.1 | IDP | 1d? | 2006-04-17 A | 2006-04-17 A |  | 100% |  |  |  |  |  |  |  |  |
| 63 | 1.2.4.1.2 | CSM Integration | 1d? | 2006-04-17 A | 2006-04-17 A |  | 100% |  |  |  |  |  |  |  |  |
| 64 | 1.2.4.1.3 | caGrid Authorization | 1d? | 2006-04-17 A | 2006-04-17 A |  | 100% |  |  |  |  |  |  |  |  |
| 65 | 1.2.4.1.4 | caBIO BigID | 1d? | 2006-04-17 A | 2006-04-17 A |  | 100% |  |  |  |  |  |  |  |  |
| 66 | 1.2.4.2 | System Testing | 10d | 2006-07-13 A | 2006-07-26 A |  | 100% |  |  |  | start no earlier than 2006-07-13 | DW | 80h | 80h |  |
| 67 | 1.3 | **Software Development Cycle 2** | 67d | 2006-07-27 A | 2006-10-27 | 60 | 4% | 64.58d | 0d |  |  |  | 136h | 42.4h |  |
| 68 | 1.3.1 | **Inception** | 9d | 2006-07-27 A | 2006-08-08 |  | 44% | 5.03d | 58d |  |  |  | 96h | 42.4h |  |
| 69 | 1.3.1.1 | Update Project Plan | 1d | 2006-07-27 A | 2006-07-27 |  | 80% | 0.2d | 17.5d | 0d |  | Team | 8h | 6.4h |  |
| 70 | 1.3.1.2 | Requirements and Specifications Collection | 5d | 2006-07-28 A | 2006-08-03 | 69 | 90% | 0.5d | 13d | 0d |  | VK | 40h | 36h |  |
| 71 | 1.3.1.3 | Draft Use Case Model | 3d | 2006-08-04 | 2006-08-08 | 70 |  |  | 13d | 0d |  | VK | 24h |  |  |
| 72 | 1.3.1.4 | Update Test Plan for components Unit testing | 3d | 2006-07-27 | 2006-07-31 |  |  |  | 64d |  |  | VK | 24h |  |  |
| 73 | 1.3.2 | **Elaboration** | 43d | 2006-08-09 | 2006-10-06 | 71 |  |  | 0d |  |  |  |  |  |  |
| 74 | 1.3.2.1 | **Iteration I** | 15d | 2006-08-09 | 2006-08-29 |  |  |  | 13d |  |  |  |  |  |  |
| 75 | 1.3.2.1.1 | **Design for migrating grid enabled caBIO and caArray data services to caGrid 1.0** | 15d | 2006-08-09 | 2006-08-29 |  |  |  | 13d | 0d |  |  |  |  | 6.4.6 |
| 76 | 1.3.2.1.1.1 | Create UML Artifacts | 7d | 2006-08-09 | 2006-08-17 |  |  |  | 13d | 0d |  |  |  |  |  |
| 77 | 1.3.2.1.1.2 | Code and Test | 10d | 2006-08-09 | 2006-08-22 |  |  |  | 18d |  | start no earlier than 2006-07-17 |  |  |  |  |
| 78 | 1.3.2.1.1.3 | Prepare detailed design document | 8d | 2006-08-18 | 2006-08-29 | 76 |  |  | 13d |  |  |  |  |  |  |
| 79 | 1.3.2.1.2 | **Design caGrid Installer and Deployment Wizard** | 8d | 2006-08-09 | 2006-08-18 |  |  |  | 35d |  |  |  |  |  | 6.4.10, 6.4.10.1, 6.4.10.2 |
| 80 | 1.3.2.1.2.1 | Update UML Artifacts | 7d | 2006-08-09 | 2006-08-17 |  |  |  | 36d |  |  |  |  |  |  |
| 81 | 1.3.2.1.2.2 | Update Design document | 8d | 2006-08-09 | 2006-08-18 |  |  |  | 35d |  |  |  |  |  |  |
| 82 | 1.3.2.1.3 | Update Risk List | 1d | 2006-08-09 | 2006-08-09 |  |  |  | 40d |  | start no earlier than 2006-07-25 |  |  |  |  |
| 83 | 1.3.2.2 | **Iteration II** | 28d | 2006-08-30 | 2006-10-06 | 75 |  |  | 0d |  |  |  |  |  |  |
| 84 | 1.3.2.2.1 | Implement migration of caBIO and caArray data services from caGrid 0.5 to caGrid 1.0 | 15d | 2006-08-30 | 2006-09-19 |  |  |  | 13d |  |  |  |  |  | 6.4.7, 6.4.7.1 |
| 85 | 1.3.2.2.2 | Design and create prototypes for component services for Installer and Deployment Wizard | 15d | 2006-08-30 | 2006-09-19 |  |  |  | 13d |  |  |  |  |  |  |
| 86 | 1.3.2.2.3 | Update Risk List | 13d | 2006-09-20 | 2006-10-06 |  |  |  | 0d |  | finish no earlier than 2006-10-06 |  |  |  |  |

Notes:
- 70: Documenting Authorization and Grouper requirements documents, sent to Product Mgr for review.

| ID | WBS | Task | Duration | Start | Finish | Predecessors | Complete | Remaining | Total slack | Constraint | Resources | Work | Actual work | Text1 |
| --- | --- | --- | --- | --- | --- | --- | --- | --- | --- | --- | --- | --- | --- | --- |
| 87 | 1.3.3 | **Construction** | 10d | 2006-10-09 | 2006-10-20 | 73 |  |  | 0d |  |  |  |  |  |
| 88 | 1.3.3.1 | **Iteration I** | 10d | 2006-10-09 | 2006-10-20 |  |  |  | 0d |  |  |  |  |  |
| 89 | 1.3.3.1.1 | **Migration of caGrid 0.5 users to caGrid 1.0** | 10d | 2006-10-09 | 2006-10-20 |  |  |  | 0d |  |  |  |  | 6.4.8 |
| 90 | 1.3.3.1.1.1 | UML Artifacts | 10d | 2006-10-09 | 2006-10-20 |  |  |  | 0d |  |  |  |  |  |
| 91 | 1.3.3.1.1.2 | Design and SOP document | 10d | 2006-10-09 | 2006-10-20 |  |  |  | 0d |  |  |  |  |  |
| 92 | 1.3.3.1.2 | **Implement caGrid 1.0 Installer and Deployment Wizard** | 10d | 2006-10-09 | 2006-10-20 | 89 |  |  | 0d |  |  |  |  | 6.4.11, 6.4.11.1 |
| 93 | 1.3.3.1.2.1 | Code and Test | 10d | 2006-10-09 | 2006-10-20 |  |  |  | 0d |  |  |  |  |  |
| 94 | 1.3.3.1.2.2 | Update Risk List | 1d | 2006-10-18 | 2006-10-18 |  |  |  | 2d | start no earlier than 2006-10-18 |  |  |  |  |
| 95 | 1.3.4 | **Transition** | 5d | 2006-10-23 | 2006-10-27 | 87 |  |  | 0d |  |  | 40h |  |  |
| 96 | 1.3.4.1 | Update design document for caGrid installer and deployer | 5d | 2006-10-23 | 2006-10-27 |  |  |  | 0d |  |  |  |  |  |
| 97 | 1.3.4.2 | Update document for migration of caGrid 0.5 user credentials to caGrid 1.0 | 5d | 2006-10-23 | 2006-10-27 |  |  |  | 0d |  |  |  |  |  |
| 98 | 1.3.4.3 | System Testing | 5d | 2006-10-23 | 2006-10-27 |  |  |  | 0d |  | DW | 40h |  |  |
| 99 | 1.3.4.4 | Update software architecture document | 5d | 2006-10-23 | 2006-10-27 |  |  |  | 0d |  |  |  |  |  |
| 100 | 1.4 | **Software Development Cycle 3** | 123d | 2006-10-30 A | 2007-04-18 | 67 |  | 122.94d | 0d |  |  | 40h | 0.8h |  |
| 101 | 1.4.1 | **Inception** | 10d | 2006-10-30 A | 2006-11-10 |  | 1% | 9.92d | 0d |  |  | 40h | 0.8h |  |
| 102 | 1.4.1.1 | **Iteration I** | 10d | 2006-10-30 A | 2006-11-10 |  | 1% | 9.9d | 0d |  |  | 40h | 0.8h |  |
| 103 | 1.4.1.1.1 | Requirement collection for caGrid Browser | 5d | 2006-10-30 A | 2006-11-03 |  | 2% | 4.9d | 0d |  | VK | 40h | 0.8h |  |
| 104 | 1.4.1.1.2 | Use Case Model for caGrid Browser | 5d | 2006-11-06 | 2006-11-10 | 103 |  |  | 0d |  |  |  |  |  |
| 105 | 1.4.1.2 | **Iteration II** | 2d | 2006-10-30 | 2006-10-31 |  |  |  | 8d |  |  |  |  |  |
| 106 | 1.4.1.2.1 | Use Case Specification Review and Adjustment | 2d | 2006-10-30 | 2006-10-31 |  |  |  | 8d |  |  |  |  |  |
| 107 | 1.4.2 | **Elaboration** | 36d | 2006-11-13 | 2007-01-01 | 101 |  |  | 0d |  |  |  |  |  |
| 108 | 1.4.2.1 | **Iteration I** | 15d | 2006-11-13 | 2006-12-01 |  |  |  | 0d |  |  |  |  |  |
| 109 | 1.4.2.1.1 | **Design for caGrid Browser enhancements** | 15d | 2006-11-13 | 2006-12-01 |  |  |  | 0d |  |  |  |  | 6.4.12, 6.4.12.1, 6.4.12.2, 6.4.12.2 |
| 110 | 1.4.2.1.1.1 | UML Artifacts | 10d | 2006-11-13 | 2006-11-24 |  |  |  | 0d |  |  |  |  |  |
| 111 | 1.4.2.1.1.2 | Design document | 5d | 2006-11-27 | 2006-12-01 | 110 |  |  | 0d |  |  |  |  |  |
| 112 | 1.4.2.1.2 | Migration document and SOP for data services and analytical services from caGrid 0.5 to caGrid 1.0 | 15d | 2006-11-13 | 2006-12-01 |  |  |  | 0d |  |  |  |  | 6.4.5 |
| 113 | 1.4.2.1.3 | Update Risk List | 1d | 2006-11-15 | 2006-11-15 |  |  |  | 12d | start no earlier than 2006-11-15 |  |  |  |  |

| ID | WBS | Task | Duration | Start | Finish | Predecessors | Total slack | Constraint | Text1 |
| --- | --- | --- | --- | --- | --- | --- | --- | --- | --- |
| 114 | 1.4.2.2 | **Iteration II** | 21d | 2006-12-04 | 2007-01-01 | 108 | 0d |  |  |
| 115 | 1.4.2.2.1 | **Implement caGrid 1.0 Browser** | 21d | 2006-12-04 | 2007-01-01 |  | 0d |  | 6.4.14, 6.4.14.1 |
| 116 | 1.4.2.2.1.1 | Code and test | 21d | 2006-12-04 | 2007-01-01 |  | 0d |  |  |
| 117 | 1.4.2.2.2 | **Implementation of migration of NCICB users from caGrid 0.5 to caGrid 1.0** | 15d | 2006-12-04 | 2006-12-22 |  | 6d |  | 6.4.9 |
| 118 | 1.4.2.2.2.1 | Code and test | 15d | 2006-12-04 | 2006-12-22 |  | 6d |  |  |
| 119 | 1.4.3 | **Construction** | 40d | 2007-01-02 | 2007-02-26 | 107 | 0d |  |  |
| 120 | 1.4.3.1 | **Iteration I** | 20d | 2007-01-02 | 2007-01-29 |  | 0d |  |  |
| 121 | 1.4.3.1.1 | **caGrid 1.0 Browser Release 2 Implementation** | 20d | 2007-01-02 | 2007-01-29 |  | 0d |  | 6.4.14, 6.4.14.1 |
| 122 | 1.4.3.1.1.1 | Code and test | 20d | 2007-01-02 | 2007-01-29 |  | 0d |  |  |
| 123 | 1.4.3.2 | **Iteration II** | 20d | 2007-01-30 | 2007-02-26 | 120 | 0d |  |  |
| 124 | 1.4.3.2.1 | **System Test Plan and Results** | 20d | 2007-01-30 | 2007-02-26 |  | 0d |  | 6.4.14 |
| 125 | 1.4.3.2.1.1 | Develop test cases | 15d | 2007-01-30 | 2007-02-19 |  | 5d |  |  |
| 126 | 1.4.3.2.1.2 | Conduct testing | 15d | 2007-01-30 | 2007-02-19 |  | 5d |  |  |
| 127 | 1.4.3.2.1.3 | Continuous defect fixing | 20d | 2007-01-30 | 2007-02-26 |  | 0d |  |  |
| 128 | 1.4.4 | **Transition** | 37d | 2007-02-27 | 2007-04-18 | 119 | 0d |  |  |
| 129 | 1.4.4.1 | **Iteration I** | 30d | 2007-02-27 | 2007-04-09 |  | 0d |  |  |
| 130 | 1.4.4.1.1 | Technical Guide | 20d | 2007-02-27 | 2007-03-26 |  | 0d |  | 6.14.15 |
| 131 | 1.4.4.1.2 | User Guide | 10d | 2007-03-27 | 2007-04-09 | 130 | 0d |  |  |
| 132 | 1.4.4.1.3 | System Testing | 10d | 2007-02-27 | 2007-03-12 |  | 20d |  |  |
| 133 | 1.4.4.2 | **Iteration II** | 7d | 2007-04-10 | 2007-04-18 | 129 | 0d |  |  |
| 134 | 1.4.4.2.1 | Lesson learned | 5d | 2007-04-10 | 2007-04-16 |  | 0d | start no earlier than 2007-04-06 |  |
| 135 | 1.4.4.2.2 | Release notes | 2d | 2007-04-17 | 2007-04-18 | 134 | 0d |  |  |
