# caGrid_Development1

Schedule from MS Project, 2006-04-17 to 2006-10-23.

## Calendars

- Standard: Mon-Fri 08:00-12:00, 13:00-17:00; Sat-Sun off.

## Schedule

| ID | WBS | Task | Duration | Start | Finish | Predecessors | Total slack | Free slack | Constraint | Text1 |
| --- | --- | --- | --- | --- | --- | --- | --- | --- | --- | --- |
| 1 | 1 | **caGrid 1.0 Development** | 136d? | 2006-04-17 | 2006-10-23 |  | 0d |  |  |  |
| 2 | 1.1 | **Software Development Prior to Beta Release** | 42d? | 2006-04-17 | 2006-06-13 |  | 34d | 0d |  |  |
| 3 | 1.1.1 | **Iteration I** | 22d? | 2006-04-17 | 2006-05-16 |  | 42d | 0d |  |  |
| 4 | 1.1.1.1 | **Data Services** | 15d | 2006-04-17 | 2006-05-05 |  | 49d |  |  | 6.4.4, 6.4.4.1 |
| 5 | 1.1.1.1.1 | Finalize CQL Schema | 5d | 2006-05-01 | 2006-05-05 |  | 56d |  | start no earlier than 2006-05-01 |  |
| 6 | 1.1.1.1.2 | Initial Design Document | 5d | 2006-04-17 | 2006-04-21 |  | 66d |  |  |  |
| 7 | 1.1.1.2 | **Introduce** | 22d | 2006-04-17 | 2006-05-16 |  | 34d |  |  | 6.4.2, 6.4.2.1,6.4.2.2,6.4.3 |
| 8 | 1.1.1.2.1 | **Engine:** | 22d | 2006-04-17 | 2006-05-16 |  | 34d | 0d |  |  |
| 9 | 1.1.1.2.1.1 | **Creation:** | 3d | 2006-04-17 | 2006-04-19 |  | 53d |  |  |  |
| 10 | 1.1.1.2.1.1.1 | Enable support for applying plugins or service extensions/templates | 3d | 2006-04-17 | 2006-04-19 |  | 53d |  |  |  |
| 11 | 1.1.1.2.1.2 | **Modification:** | 22d | 2006-04-17 | 2006-05-16 |  | 34d |  |  |  |
| 12 | 1.1.1.2.1.2.1 | Move to complete code templating process using JET for all code generation/modification | 10d | 2006-04-17 | 2006-04-28 |  | 44d | 0d |  |  |
| 13 | 1.1.1.2.1.2.2 | Increase ease of handling reformatted code | 2d | 2006-05-01 | 2006-05-02 | 12 | 44d |  |  |  |
| 14 | 1.1.1.2.1.2.3 | Support for ignoring locally modified source code | 1d | 2006-05-01 | 2006-05-01 | 12 | 45d |  |  |  |
| 15 | 1.1.1.2.1.2.4 | Support for modifying method signature with out modifying method bodies | 1d | 2006-05-01 | 2006-05-01 | 12 | 45d |  |  |  |
| 16 | 1.1.1.2.1.2.5 | Create service test framework | 2d | 2006-04-17 | 2006-04-18 |  | 54d |  |  |  |
| 17 | 1.1.1.2.1.2.6 | Complete support for WSRF / multi- resources/services | 15d | 2006-04-17 | 2006-05-05 |  | 34d | 0d |  |  |
| 18 | 1.1.1.2.1.2.7 | Source code must now support N services | 5d | 2006-05-08 | 2006-05-12 | 17 | 36d |  |  |  |
| 19 | 1.1.1.2.1.2.8 | Will require N wsdl documents | 3d | 2006-05-08 | 2006-05-10 | 17 | 38d |  |  |  |
| 20 | 1.1.1.2.1.2.9 | Build process will support flattening stubbing and binding of N services | 2d | 2006-05-08 | 2006-05-09 | 17 | 39d |  |  |  |
| 21 | 1.1.1.2.1.2.10 | Enable service/porttype inheritance | 7d | 2006-05-08 | 2006-05-16 | 17 | 34d |  |  |  |
| 22 | 1.1.1.2.1.3 | **Deployment:** | 1d | 2006-04-17 | 2006-04-17 |  | 55d |  |  |  |
| 23 | 1.1.1.2.1.3.1 | Enable support for service configuration variables | 1d | 2006-04-17 | 2006-04-17 |  | 55d |  |  |  |
| 24 | 1.1.1.2.1.3.2 | Enable support for tomcat and globus container deployment | 1d | 2006-04-17 | 2006-04-17 |  | 55d |  |  |  |

| ID | WBS | Task | Duration | Start | Finish | Predecessors | Total slack | Free slack |
| --- | --- | --- | --- | --- | --- | --- | --- | --- |
| 25 | 1.1.1.2.1.4 | **Plugin/Extension:** | 12d | 2006-04-17 | 2006-05-02 |  | 44d |  |
| 26 | 1.1.1.2.1.4.1 | Creation of plugin framework | 5d | 2006-04-17 | 2006-04-21 |  | 44d | 0d |
| 27 | 1.1.1.2.1.4.2 | Enable use of plugin framework | 2d | 2006-04-24 | 2006-04-25 | 26 | 44d | 0d |
| 28 | 1.1.1.2.1.4.3 | Creation of GME discovery plugin | 2d | 2006-04-26 | 2006-04-27 | 27 | 47d |  |
| 29 | 1.1.1.2.1.4.4 | Creation of File discovery plugin | 1d | 2006-04-26 | 2006-04-26 | 27 | 48d |  |
| 30 | 1.1.1.2.1.4.5 | Creation of caDSR discovery plugin | 5d | 2006-04-26 | 2006-05-02 | 27 | 44d |  |
| 31 | 1.1.1.2.1.4.6 | Creation of Example service extension plugin | 1d | 2006-04-26 | 2006-04-26 | 27 | 48d |  |
| 32 | 1.1.1.3 | **Metadata** | 9d? | 2006-04-17 | 2006-04-27 |  | 55d |  |
| 33 | 1.1.1.3.1 | **Initial Analytical Metadata Model** | 4d? | 2006-04-17 | 2006-04-20 |  | 55d | 0d |
| 34 | 1.1.1.3.1.1 | UML Model | 2d | 2006-04-17 | 2006-04-18 |  | 62d | 0d |
| 35 | 1.1.1.3.1.2 | Generate XSD | 1d? | 2006-04-19 | 2006-04-19 | 34 | 62d | 0d |
| 36 | 1.1.1.3.1.3 | caDSR Review | 1d? | 2006-04-20 | 2006-04-20 | 35 | 62d |  |
| 37 | 1.1.1.3.2 | **Initial Common Metadata Model** | 4d? | 2006-04-17 | 2006-04-20 |  | 55d | 0d |
| 38 | 1.1.1.3.2.1 | UML Model | 2d | 2006-04-17 | 2006-04-18 |  | 62d | 0d |
| 39 | 1.1.1.3.2.2 | Generate XSD | 1d? | 2006-04-19 | 2006-04-19 | 38 | 62d | 0d |
| 40 | 1.1.1.3.2.3 | caDSR Review | 1d? | 2006-04-20 | 2006-04-20 | 39 | 62d |  |
| 41 | 1.1.1.3.3 | **Initial Data Service Metadata Model** | 4d? | 2006-04-17 | 2006-04-20 |  | 55d | 0d |
| 42 | 1.1.1.3.3.1 | UML Model | 2d | 2006-04-17 | 2006-04-18 |  | 62d | 0d |
| 43 | 1.1.1.3.3.2 | Generate XSD | 1d? | 2006-04-19 | 2006-04-19 | 42 | 62d | 0d |
| 44 | 1.1.1.3.3.3 | caDSR Review | 1d? | 2006-04-20 | 2006-04-20 | 43 | 62d |  |
| 45 | 1.1.1.3.4 | **Discovery Client** | 5d | 2006-04-21 | 2006-04-27 | 33, 37, 41 | 55d |  |
| 46 | 1.1.1.3.4.1 | Define API | 2d | 2006-04-21 | 2006-04-24 |  | 65d |  |
| 47 | 1.1.1.3.4.2 | Initial Implementation | 5d | 2006-04-21 | 2006-04-27 |  | 62d |  |
| 48 | 1.1.1.3.5 | **Index Service** | 1d | 2006-04-17 | 2006-04-17 |  | 63d |  |
| 49 | 1.1.1.3.5.1 | Deploy on caGrid Cluster | 1d | 2006-04-17 | 2006-04-17 |  | 70d |  |

| ID | WBS | Task | Duration | Start | Finish | Predecessors | Total slack | Free slack | Constraint | Text1 |
| --- | --- | --- | --- | --- | --- | --- | --- | --- | --- | --- |
| 50 | 1.1.1.3.6 | **caDSR to GME Mapping** | 2d? | 2006-04-17 | 2006-04-18 |  | 62d |  |  |  |
| 51 | 1.1.1.3.6.1 | Meet with working group to identify issues and requirements | 1d? | 2006-04-17 | 2006-04-17 |  | 70d |  |  |  |
| 52 | 1.1.1.3.6.2 | Initial design of solution | 2d | 2006-04-17 | 2006-04-18 |  | 69d |  |  |  |
| 53 | 1.1.1.3.7 | **caDSR Service** | 1d? | 2006-04-21 | 2006-04-21 |  | 59d |  |  |  |
| 54 | 1.1.1.3.7.1 | Migrate published metadata to new models | 1d? | 2006-04-21 | 2006-04-21 | 33, 37 | 66d |  |  |  |
| 55 | 1.1.1.4 | **Security** | 1d? | 2006-04-17 | 2006-04-17 |  | 63d |  |  |  |
| 56 | 1.1.1.4.1 | asdf | 1d? | 2006-04-17 | 2006-04-17 |  | 63d |  |  |  |
| 57 | 1.1.1.5 | **Infrastructure** | 2d | 2006-04-17 | 2006-04-18 |  | 62d |  |  |  |
| 58 | 1.1.1.5.1 | Install all core services insecurely on cluster | 2d | 2006-04-17 | 2006-04-18 |  | 69d |  |  |  |
| 59 | 1.1.1.5.2 | Install Security services securely on cluster | 2d | 2006-04-17 | 2006-04-18 |  | 69d |  |  |  |
| 60 | 1.1.2 | **Iteration II** | 20d? | 2006-05-17 | 2006-06-13 | 3 | 34d |  |  |  |
| 61 | 1.1.2.1 | **Data Services** | 5d | 2006-05-17 | 2006-05-23 |  | 49d |  |  | 6.4.4, 6.4.4.1 |
| 62 | 1.1.2.1.1 | asdf | 5d | 2006-05-17 | 2006-05-23 |  | 49d |  | start no earlier than 2006-05-01 |  |
| 63 | 1.1.2.2 | **Introduce** | 20d | 2006-05-17 | 2006-06-13 |  | 34d |  |  | 6.4.2, 6.4.2.1,6.4.2.2,6.4.3 |
| 64 | 1.1.2.2.1 | **Graphical Workbench:** | 10d | 2006-05-17 | 2006-05-30 | 8 | 34d | 0d |  |  |
| 65 | 1.1.2.2.1.1 | **Creation:** | 2d | 2006-05-17 | 2006-05-18 |  | 42d |  |  |  |
| 66 | 1.1.2.2.1.1.1 | Plugin /service template selection | 1d | 2006-05-17 | 2006-05-17 |  | 43d |  |  |  |
| 67 | 1.1.2.2.1.1.2 | Plugin and service template reflection based execution | 2d | 2006-05-17 | 2006-05-18 |  | 42d |  |  |  |
| 68 | 1.1.2.2.1.2 | **Modification:** | 10d | 2006-05-17 | 2006-05-30 |  | 34d |  |  |  |
| 69 | 1.1.2.2.1.2.1 | Support plugin based types discovery and tools | 5d | 2006-05-17 | 2006-05-23 |  | 39d |  |  |  |
| 70 | 1.1.2.2.1.2.2 | Support WSRF with multi resource and multi service based grid services | 10d | 2006-05-17 | 2006-05-30 |  | 34d |  |  |  |
| 71 | 1.1.2.2.1.2.3 | Support service/porttype inheritance | 5d | 2006-05-17 | 2006-05-23 |  | 39d |  |  |  |
| 72 | 1.1.2.2.1.2.4 | Enable service and method security configuration | 10d | 2006-05-17 | 2006-05-30 |  | 34d |  |  |  |
| 73 | 1.1.2.2.1.3 | **Deployment:** | 5d | 2006-05-17 | 2006-05-23 |  | 39d |  |  |  |
| 74 | 1.1.2.2.1.3.1 | Support configuration of user defined service variables | 2d | 2006-05-17 | 2006-05-18 |  | 42d |  |  |  |
| 75 | 1.1.2.2.1.3.2 | Gui generator for populating service discovery metadata | 5d | 2006-05-17 | 2006-05-23 |  | 39d |  |  |  |

| ID | WBS | Task | Duration | Start | Finish | Predecessors | Total slack | Free slack |
| --- | --- | --- | --- | --- | --- | --- | --- | --- |
| 76 | 1.1.2.2.1.4 | **Plugin/Extension:** | 3d | 2006-05-17 | 2006-05-19 |  | 41d |  |
| 77 | 1.1.2.2.1.4.1 | **Enable use of plugin framework** | 3d | 2006-05-17 | 2006-05-19 |  | 41d |  |
| 78 | 1.1.2.2.1.4.1.1 | Discovery Tools | 2d | 2006-05-17 | 2006-05-18 |  | 42d |  |
| 79 | 1.1.2.2.1.4.1.2 | Service Templates | 3d | 2006-05-17 | 2006-05-19 |  | 41d |  |
| 80 | 1.1.2.2.2 | **Testing:** | 10d | 2006-05-31 | 2006-06-13 | 8, 64 | 34d |  |
| 81 | 1.1.2.2.2.1 | **Complete testing of all features** | 10d | 2006-05-31 | 2006-06-13 |  | 34d |  |
| 82 | 1.1.2.2.2.1.1 | **Automated Nightly regression on:** | 10d | 2006-05-31 | 2006-06-13 |  | 34d |  |
| 83 | 1.1.2.2.2.1.1.1 | Service creation | 1d | 2006-05-31 | 2006-05-31 |  | 38d | 4d |
| 84 | 1.1.2.2.2.1.1.2 | Service modification | 5d | 2006-05-31 | 2006-06-06 |  | 34d | 0d |
| 85 | 1.1.2.2.2.1.1.3 | Service deployment | 2d | 2006-05-31 | 2006-06-01 |  | 37d | 3d |
| 86 | 1.1.2.2.2.1.1.4 | Service Invocation | 5d | 2006-06-07 | 2006-06-13 | 83, 84, 85 | 34d |  |
| 87 | 1.1.2.2.2.1.1.5 | Service template extensions | 1d | 2006-05-31 | 2006-05-31 |  | 43d |  |
| 88 | 1.1.2.2.2.1.1.6 | Security configuration | 3d | 2006-05-31 | 2006-06-02 |  | 41d |  |
| 89 | 1.1.2.2.2.1.1.7 | Metadata configuration | 2d | 2006-05-31 | 2006-06-01 |  | 42d |  |
| 90 | 1.1.2.2.2.1.1.8 | WSRF multi resource testing | 5d | 2006-05-31 | 2006-06-06 |  | 39d |  |
| 91 | 1.1.2.2.2.2 | **Manual testing on** | 10d | 2006-05-31 | 2006-06-13 |  | 34d |  |
| 92 | 1.1.2.2.2.2.1 | Graphical components | 10d | 2006-05-31 | 2006-06-13 |  | 34d |  |
| 93 | 1.1.2.3 | **Metadata** | 12d? | 2006-05-17 | 2006-06-01 |  | 42d |  |
| 94 | 1.1.2.3.1 | **Finalize Metadata Models** | 2d? | 2006-05-17 | 2006-05-18 |  | 42d | 0d |
| 95 | 1.1.2.3.1.1 | Incorporate Feedback | 1d? | 2006-05-17 | 2006-05-17 |  | 43d |  |
| 96 | 1.1.2.3.1.2 | Update UML Models | 2d | 2006-05-17 | 2006-05-18 |  | 42d |  |
| 97 | 1.1.2.3.1.3 | Regenerate and Publish XSDs | 2d | 2006-05-17 | 2006-05-18 |  | 42d |  |
| 98 | 1.1.2.3.2 | **Discovery Client** | 5d | 2006-05-19 | 2006-05-25 | 94 | 42d | 0d |
| 99 | 1.1.2.3.2.1 | Update for Finalized Metadata Models | 5d | 2006-05-19 | 2006-05-25 |  | 42d |  |

| ID | WBS | Task | Duration | Start | Finish | Predecessors | Total slack | Free slack | Constraint | Text1 |
| --- | --- | --- | --- | --- | --- | --- | --- | --- | --- | --- |
| 100 | 1.1.2.3.3 | **Index Service** | 5d? | 2006-05-17 | 2006-05-23 |  | 49d |  |  |  |
| 101 | 1.1.2.3.3.1 | Modify to support communication with secure services | 5d? | 2006-05-17 | 2006-05-23 |  | 49d |  |  |  |
| 102 | 1.1.2.3.4 | **caDSR Service** | 5d | 2006-05-19 | 2006-05-25 | 94 | 47d |  |  |  |
| 103 | 1.1.2.3.4.1 | Implement Service-side Metadata generation | 5d | 2006-05-19 | 2006-05-25 |  | 47d |  |  |  |
| 104 | 1.1.2.3.5 | **Discovery Portal** | 5d | 2006-05-26 | 2006-06-01 |  | 42d |  |  |  |
| 105 | 1.1.2.3.5.1 | Initial implementation of discovery portal | 5d | 2006-05-26 | 2006-06-01 | 98 | 42d |  |  |  |
| 106 | 1.1.2.4 | **Security** | 1d? | 2006-05-17 | 2006-05-17 |  | 53d |  |  |  |
| 107 | 1.1.2.4.1 | asdf | 1d? | 2006-05-17 | 2006-05-17 |  | 53d |  |  |  |
| 108 | 1.1.2.5 | **Infrastructure** | 2d | 2006-05-17 | 2006-05-18 |  | 52d |  |  |  |
| 109 | 1.1.2.5.1 | Develop functional test plan | 2d | 2006-05-17 | 2006-05-18 |  | 52d |  |  |  |
| 110 | 1.1.2.5.2 | Install "staging" services on cluster | 1d | 2006-05-17 | 2006-05-17 |  | 53d |  |  |  |
| 111 | 1.2 | **Software Development Prior to API Freeze** | 30d? | 2006-06-14 | 2006-07-25 | 2 | 34d | 0d |  |  |
| 112 | 1.2.1 | **Iteration I** | 15d? | 2006-06-14 | 2006-07-04 |  | 34d | 0d |  |  |
| 113 | 1.2.1.1 | **Data Services** | 5d | 2006-06-14 | 2006-06-20 |  | 44d |  |  | 6.4.4, 6.4.4.1 |
| 114 | 1.2.1.1.1 | asdf | 5d | 2006-06-14 | 2006-06-20 |  | 44d |  | start no earlier than 2006-05-01 |  |
| 115 | 1.2.1.2 | **Introduce** | 15d | 2006-06-14 | 2006-07-04 |  | 34d |  |  | 6.4.2, 6.4.2.1,6.4.2.2,6.4.3 |
| 116 | 1.2.1.2.1 | asdf | 15d | 2006-06-14 | 2006-07-04 |  | 34d |  | start no earlier than 2006-05-01 |  |
| 117 | 1.2.1.3 | **Metadata** | 1d? | 2006-06-14 | 2006-06-14 |  | 48d |  |  |  |
| 118 | 1.2.1.3.1 | asdf | 1d? | 2006-06-14 | 2006-06-14 |  | 48d |  |  |  |
| 119 | 1.2.1.4 | **Security** | 1d? | 2006-06-14 | 2006-06-14 |  | 48d |  |  |  |
| 120 | 1.2.1.4.1 | asdf | 1d? | 2006-06-14 | 2006-06-14 |  | 48d |  |  |  |
| 121 | 1.2.1.5 | **Infrastructure** | 1d? | 2006-06-14 | 2006-06-14 |  | 48d |  |  |  |
| 122 | 1.2.1.5.1 | asdf | 1d? | 2006-06-14 | 2006-06-14 |  | 48d |  |  |  |
| 123 | 1.2.2 | **Iteration II** | 15d? | 2006-07-05 | 2006-07-25 | 112 | 34d |  |  |  |
| 124 | 1.2.2.1 | **Data Services** | 5d | 2006-07-05 | 2006-07-11 |  | 44d |  |  | 6.4.4, 6.4.4.1 |
| 125 | 1.2.2.1.1 | asdf | 5d | 2006-07-05 | 2006-07-11 |  | 44d |  | start no earlier than 2006-05-01 |  |

| ID | WBS | Task | Duration | Start | Finish | Predecessors | Total slack | Free slack | Constraint | Text1 |
| --- | --- | --- | --- | --- | --- | --- | --- | --- | --- | --- |
| 126 | 1.2.2.2 | **Introduce** | 15d | 2006-07-05 | 2006-07-25 |  | 34d |  |  | 6.4.2, 6.4.2.1,6.4.2.2,6.4.3 |
| 127 | 1.2.2.2.1 | asdf | 15d | 2006-07-05 | 2006-07-25 |  | 34d |  | start no earlier than 2006-05-01 |  |
| 128 | 1.2.2.3 | **Metadata** | 1d? | 2006-07-05 | 2006-07-05 |  | 48d |  |  |  |
| 129 | 1.2.2.3.1 | asdf | 1d? | 2006-07-05 | 2006-07-05 |  | 48d |  |  |  |
| 130 | 1.2.2.4 | **Security** | 1d? | 2006-07-05 | 2006-07-05 |  | 48d |  |  |  |
| 131 | 1.2.2.4.1 | asdf | 1d? | 2006-07-05 | 2006-07-05 |  | 48d |  |  |  |
| 132 | 1.2.2.5 | **Infrastructure** | 1d? | 2006-07-05 | 2006-07-05 |  | 48d |  |  |  |
| 133 | 1.2.2.5.1 | asdf | 1d? | 2006-07-05 | 2006-07-05 |  | 48d |  |  |  |
| 134 | 1.3 | **Software Development Prior to 1.0 Release** | 30d? | 2006-07-26 | 2006-09-05 | 111 | 34d |  |  |  |
| 135 | 1.3.1 | **Iteration I** | 15d? | 2006-07-26 | 2006-08-15 |  | 34d | 0d |  |  |
| 136 | 1.3.1.1 | **Data Services** | 5d | 2006-07-26 | 2006-08-01 |  | 44d |  |  | 6.4.4, 6.4.4.1 |
| 137 | 1.3.1.1.1 | asdf | 5d | 2006-07-26 | 2006-08-01 |  | 44d |  | start no earlier than 2006-05-01 |  |
| 138 | 1.3.1.2 | **Introduce** | 15d | 2006-07-26 | 2006-08-15 |  | 34d |  |  | 6.4.2, 6.4.2.1,6.4.2.2,6.4.3 |
| 139 | 1.3.1.2.1 | asdf | 15d | 2006-07-26 | 2006-08-15 |  | 34d |  | start no earlier than 2006-05-01 |  |
| 140 | 1.3.1.3 | **Metadata** | 1d? | 2006-07-26 | 2006-07-26 |  | 48d |  |  |  |
| 141 | 1.3.1.3.1 | asdf | 1d? | 2006-07-26 | 2006-07-26 |  | 48d |  |  |  |
| 142 | 1.3.1.4 | **Security** | 1d? | 2006-07-26 | 2006-07-26 |  | 48d |  |  |  |
| 143 | 1.3.1.4.1 | asdf | 1d? | 2006-07-26 | 2006-07-26 |  | 48d |  |  |  |
| 144 | 1.3.1.5 | **Infrastructure** | 1d? | 2006-07-26 | 2006-07-26 |  | 48d |  |  |  |
| 145 | 1.3.1.5.1 | asdf | 1d? | 2006-07-26 | 2006-07-26 |  | 48d |  |  |  |
| 146 | 1.3.2 | **Iteration II** | 15d? | 2006-08-16 | 2006-09-05 | 135 | 34d |  |  |  |
| 147 | 1.3.2.1 | **Data Services** | 5d | 2006-08-16 | 2006-08-22 |  | 44d |  |  | 6.4.4, 6.4.4.1 |
| 148 | 1.3.2.1.1 | asdf | 5d | 2006-08-16 | 2006-08-22 |  | 44d |  | start no earlier than 2006-05-01 |  |
| 149 | 1.3.2.2 | **Introduce** | 15d | 2006-08-16 | 2006-09-05 |  | 34d |  |  | 6.4.2, 6.4.2.1,6.4.2.2,6.4.3 |
| 150 | 1.3.2.2.1 | asdf | 15d | 2006-08-16 | 2006-09-05 |  | 34d |  | start no earlier than 2006-05-01 |  |

| ID | WBS | Task | Type | Duration | Start | Finish | Predecessors | Total slack | Constraint |
| --- | --- | --- | --- | --- | --- | --- | --- | --- | --- |
| 151 | 1.3.2.3 | **Metadata** |  | 1d? | 2006-08-16 | 2006-08-16 |  | 48d |  |
| 152 | 1.3.2.3.1 | asdf |  | 1d? | 2006-08-16 | 2006-08-16 |  | 48d |  |
| 153 | 1.3.2.4 | **Security** |  | 1d? | 2006-08-16 | 2006-08-16 |  | 48d |  |
| 154 | 1.3.2.4.1 | asdf |  | 1d? | 2006-08-16 | 2006-08-16 |  | 48d |  |
| 155 | 1.3.2.5 | **Infrastructure** |  | 1d? | 2006-08-16 | 2006-08-16 |  | 48d |  |
| 156 | 1.3.2.5.1 | asdf |  | 1d? | 2006-08-16 | 2006-08-16 |  | 48d |  |
| 157 | 1.4 | caGrid Developer's Face to Face (Columbus, OH) |  | 2d | 2006-05-22 | 2006-05-23 |  | 109d | finish no earlier than 2006-05-23 |
| 158 | 1.5 | caGrid 1.0 Beta Freeze | milestone | 0d | 2006-06-30 | 2006-06-30 |  | 0d | must finish on 2006-06-30 |
| 159 | 1.6 | caGrid 1.0 Beta | milestone | 0d | 2006-07-13 | 2006-07-13 | 158 | 0d | must finish on 2006-07-13 |
| 160 | 1.7 | caGrid 1.0 Feature Freeze | milestone | 0d | 2006-08-18 | 2006-08-18 | 159 | 0d | must finish on 2006-08-18 |
| 161 | 1.8 | caGrid 1.0 Release | milestone | 0d | 2006-10-23 | 2006-10-23 | 160 | 0d | must finish on 2006-10-23 |
