# caGrid_Portal-2-1

Schedule from MS Project, 2008-07-31 to 2008-10-20, A marks actual dates.
Personal

## Calendars

- Standard: Mon-Fri 08:00-12:00, 13:00-17:00; Sat-Sun off.

## Resources

| Resource |
| --- |
| Manav Kher |
| Joshua Phillips |
| Carolyln Klinger |
| John Eisenschmidt |
| Quality Assurance |
| Systems |

## Schedule

| ID | WBS | Task | Type | Duration | Start | Finish | Predecessors | Complete | Resources | Work | Actual work |
| --- | --- | --- | --- | --- | --- | --- | --- | --- | --- | --- | --- |
| 1 | 1.0 | **caGrid Portal 2.0.3 (hence forth 2.1)** |  | 57.25d | 2008-07-31 A | 2008-10-20 A |  | 100% |  | 588.4h | 588.4h |
| 2 | 1.1 | Start | milestone | 0d | 2008-07-31 A | 2008-07-31 A |  | 100% |  |  |  |
| 3 | 1.2 | **Bug Fixes** |  | 5d | 2008-07-31 A | 2008-08-06 A | 2 | 100% |  | 108h | 108h |
| 4 | 1.2.1 | Start | milestone | 0d | 2008-07-31 A | 2008-07-31 A |  | 100% |  |  |  |
| 5 | 1.2.2 | RuntimeException thrown in Portal 2.0.2 |  | 5d | 2008-07-31 A | 2008-08-06 A | 4 | 100% | Manav Kher [90%] | 36h | 36h |
| 6 | 1.2.3 | Problem with RFE 12079 implementation for Portal |  | 5d | 2008-07-31 A | 2008-08-06 A | 4 | 100% | Manav Kher [90%] | 36h | 36h |
| 7 | 1.2.4 | Portal is overloading GME service |  | 1d | 2008-07-31 A | 2008-07-31 A | 4 | 100% | Manav Kher [90%] | 7.2h | 7.2h |
| 8 | 1.2.5 | ConceptHierarchyNode.description field length is too short |  | 1d | 2008-08-01 A | 2008-08-01 A | 7 | 100% | Manav Kher [90%] | 7.2h | 7.2h |
| 9 | 1.2.6 | Simple discovery for CDE returns invalid results |  | 1d | 2008-08-04 A | 2008-08-04 A | 8 | 100% | Manav Kher [90%] | 7.2h | 7.2h |
| 10 | 1.2.7 | Service details Portlet caches information |  | 1d | 2008-08-05 A | 2008-08-05 A | 9 | 100% | Manav Kher [90%] | 7.2h | 7.2h |
| 11 | 1.2.8 | DCQL Aggregate query UI is not showing all services as targets |  | 1d | 2008-08-06 A | 2008-08-06 A | 10 | 100% | Manav Kher [90%] | 7.2h | 7.2h |
| 12 | 1.2.9 | Finish | milestone | 0d | 2008-08-06 A | 2008-08-06 A | 5, 6, 11, 7, 8, 9, 10 | 100% |  |  |  |
| 13 | 1.3 | **Enhancements** |  | 36.8d | 2008-07-31 A | 2008-09-19 A | 2 | 100% |  | 280.8h | 280.8h |
| 14 | 1.3.1 | Start | milestone | 0d | 2008-07-31 A | 2008-07-31 A |  | 100% |  |  |  |
| 15 | 1.3.2 | User developed Portlets |  | 12d | 2008-07-31 A | 2008-08-22 A | 14 | 100% | Manav Kher [90%] | 86.4h | 86.4h |
| 16 | 1.3.3 | Discovery Results should show reasearch center information |  | 1d | 2008-07-31 A | 2008-07-31 A | 14 | 100% | Manav Kher [90%] | 7.2h | 7.2h |
| 17 | 1.3.4 | Admin UI for Banning/Unbanning |  | 5d | 2008-07-31 A | 2008-08-06 A | 14 | 100% | Manav Kher [90%] | 36h | 36h |
| 18 | 1.3.5 | Service Diagnostic Portlet |  | 15d | 2008-07-31 A | 2008-09-11 A | 14 | 100% | Manav Kher [90%] | 108h | 108h |
| 19 | 1.3.6 | Aggregation Performance Enhancements Design |  | 2d | 2008-09-11 A | 2008-09-15 A | 18 | 100% | Manav Kher [90%] | 14.4h | 14.4h |
| 20 | 1.3.7 | Service Status should be highlighted for non Active Services in the Portal |  | 1d | 2008-09-15 A | 2008-09-16 A | 19 | 100% | Manav Kher [90%] | 7.2h | 7.2h |
| 21 | 1.3.8 | Better Sorting/Visibility of Active and Inactive Services in the Portal |  | 1d | 2008-09-16 A | 2008-09-17 A | 20 | 100% | Manav Kher [90%] | 7.2h | 7.2h |
| 22 | 1.3.9 | Display Portal Version Number |  | 1d | 2008-09-17 A | 2008-09-18 A | 21 | 100% | Manav Kher [90%] | 7.2h | 7.2h |
| 23 | 1.3.10 | Portal should by default build against the training tier |  | 1d | 2008-09-18 A | 2008-09-19 A | 22 | 100% | Manav Kher [90%] | 7.2h | 7.2h |
| 24 | 1.3.11 | Finish | milestone | 0d | 2008-09-19 A | 2008-09-19 A | 15, 16, 17, 18, 19, 20, 21, 23, 22 | 100% |  |  |  |

| ID | WBS | Task | Type | Duration | Start | Finish | Predecessors | Complete | Constraint | Resources | Work | Actual work |
| --- | --- | --- | --- | --- | --- | --- | --- | --- | --- | --- | --- | --- |
| 25 | 1.4 | **Documentation** |  | 7.6d | 2008-09-22 A | 2008-10-01 A |  | 100% |  |  | 114h | 114h |
| 26 | 1.4.1 | Start | milestone | 0d | 2008-09-22 A | 2008-09-22 A | 12, 24 | 100% | start no earlier than 2008-09-22 |  |  |  |
| 27 | 1.4.2 | Documentation for User-developed Portlets |  | 2d | 2008-09-29 A | 2008-09-30 A | 26 | 100% |  | Manav Kher [90%] | 14.4h | 14.4h |
| 28 | 1.4.3 | Update Admin Guide |  | 4d | 2008-09-22 A | 2008-09-25 A | 26 | 100% |  | Carolyln Klinger | 32h | 32h |
| 29 | 1.4.4 | Update Install Guide |  | 3d | 2008-09-22 A | 2008-09-26 A | 26 | 100% |  | Carolyln Klinger | 24h | 24h |
| 30 | 1.4.5 | Update User Guide |  | 5d | 2008-09-22 A | 2008-10-01 A | 26 | 100% |  | Carolyln Klinger | 40h | 40h |
| 31 | 1.4.6 | Release Notes |  | 0.5d | 2008-09-29 A | 2008-09-29 A | 26 | 100% |  | Manav Kher [90%] | 3.6h | 3.6h |
| 32 | 1.4.7 | Finish | milestone | 0d | 2008-10-01 A | 2008-10-01 A | 28, 29, 30, 31, 27 | 100% |  |  |  |  |
| 33 | 1.5 | **QA** |  | 5d | 2008-09-29 A | 2008-10-03 A | 2 | 100% |  |  | 36h | 36h |
| 34 | 1.5.1 | Start | milestone | 0d | 2008-09-29 A | 2008-09-29 A | 12, 24 | 100% | start no earlier than 2008-09-29 |  |  |  |
| 35 | 1.5.2 | Support QA during testing |  | 5d | 2008-09-29 A | 2008-10-03 A | 34 | 100% |  | Manav Kher [90%] | 36h | 36h |
| 36 | 1.5.3 | Finish | milestone | 0d | 2008-10-03 A | 2008-10-03 A | 35 | 100% |  |  |  |  |
| 37 | 1.6 | **Deployment** |  | 5.25d | 2008-10-13 A | 2008-10-20 A | 2 | 100% |  |  | 49.6h | 49.6h |
| 38 | 1.6.1 | Start | milestone | 0d | 2008-10-13 A | 2008-10-13 A | 36 | 100% | start no earlier than 2008-10-13 |  |  |  |
| 39 | 1.6.2 | Stage |  | 1d | 2008-10-13 A | 2008-10-13 A | 38 | 100% |  | Systems | 8h | 8h |
| 40 | 1.6.3 | App Scan |  | 3d | 2008-10-14 A | 2008-10-16 A | 39 | 100% |  | Systems | 24h | 24h |
| 41 | 1.6.4 | Production |  | 1d | 2008-10-17 A | 2008-10-17 A | 40 | 100% |  | Systems | 8h | 8h |
| 42 | 1.6.5 | Update gforge |  | 0.5d | 2008-10-13 A | 2008-10-13 A | 38 | 100% |  | John Eisenschmidt; Manav Kher [90%] | 7.6h | 7.6h |
| 43 | 1.6.6 | Send Release Announcement |  | 0.25d | 2008-10-20 A | 2008-10-20 A | 41 | 100% |  | John Eisenschmidt | 2h | 2h |
| 44 | 1.6.5 | Finish | milestone | 0d | 2008-10-20 A | 2008-10-20 A | 43 | 100% |  |  |  |  |
| 45 | 1.7 | Finish | milestone | 0d | 2008-10-20 A | 2008-10-20 A | 44 | 100% |  |  |  |  |
